# Cronograma de Actividades SAJU

How a schedule from MS Project changed from version to version. A marks actual dates.

## Version 1 (saved 2017-09-29, file Cronograma SAJU 29.09.17.mpp)

| ID | WBS | Task | Duration | Start | Finish | Predecessors | Complete | Total float | Constraint |
| --- | --- | --- | --- | --- | --- | --- | --- | --- | --- |
| 1 | 1 | **Ejecución de AE SAJU** | 245d? | 2017-03-09 A | 2018-02-27 |  | 64% | 0d |  |
| 2 | 1.1 | **1. ACTIVIDADES DE GESTIÓN** | 228d | 2017-03-09 A | 2018-02-02 |  | 72% | 17d |  |
| 3 | 1.1.1 | **1.1 Planificación** | 7d | 2017-05-22 A | 2017-05-30 A |  | 100% |  |  |
| 4 | 1.1.1.1 | **1.1.1 Gestión del Alcance** | 7d | 2017-05-22 A | 2017-05-30 A |  | 100% |  |  |
| 5 |  | Elaboración del documento | 3d | 2017-05-22 A | 2017-05-24 A |  | 100% |  | start no earlier than 2017-05-22 |
| 6 |  | Revisión del documento | 1d | 2017-05-25 A | 2017-05-25 A | 5 | 100% |  |  |
| 7 |  | Levantamiento de observaciones | 1d | 2017-05-26 A | 2017-05-26 A | 6 | 100% |  |  |
| 8 |  | Validación Final | 1d | 2017-05-29 A | 2017-05-29 A | 7 | 100% |  |  |
| 9 |  | Aprobación del documento | 1d | 2017-05-30 A | 2017-05-30 A | 8 | 100% |  |  |
| 10 | 1.1.2 | **1.2 Ejecución** | 228d | 2017-03-09 A | 2018-02-02 |  | 88% | 17d |  |
| 11 | 1.1.2.1 | **1.2.1 Gestión de las Adquisiciones** | 228d | 2017-03-09 A | 2018-02-02 |  | 88% | 17d |  |
| 12 | 1.1.2.1.1 | **1.2.1.1 Servicios de Terceros** | 228d | 2017-03-09 A | 2018-02-02 |  | 88% | 17d |  |
| 13 | 1.1.2.1.1.1 | **1.2.1.1.1 Contratación** | 158d | 2017-03-09 A | 2017-10-24 |  | 97% | 87d |  |
| 14 | 1.1.2.1.1.1.1 | **A. Persona Natural** | 158d | 2017-03-09 A | 2017-10-24 |  | 80% | 87d |  |
| 15 |  | Rosicarmen Alcazaba (procesos) | 1d | 2017-03-09 A | 2017-03-09 A |  | 100% |  |  |
| 16 |  | Saúl Vásquez (sistemas) | 1d | 2017-03-09 A | 2017-03-09 A |  | 100% |  |  |
| 17 |  | Diego Condezo (sistemas) | 1d | 2017-04-17 A | 2017-04-17 A |  | 100% |  | start no earlier than 2017-04-17 |
| 18 |  | Diego Condezo (sistemas) | 1d | 2017-06-22 A | 2017-06-22 A |  | 100% |  | start no earlier than 2017-06-22 |
| 19 |  | Diego Condezo (sistemas) | 1d | 2017-09-25 | 2017-09-25 |  |  | 108d | start no earlier than 2017-09-25 |
| 20 |  | Emperatriz Rosario (procesos) | 1d | 2017-06-19 A | 2017-06-19 A |  | 100% |  | start no earlier than 2017-06-19 |
| 21 |  | Jose Luis (programador) | 1d | 2017-06-01 A | 2017-06-01 A |  | 100% |  | start no earlier than 2017-06-01 |
| 22 |  | Jose Luis (programador) | 1d | 2017-07-03 A | 2017-07-03 A |  | 100% |  | start no earlier than 2017-07-03 |
| 23 |  | Jose Luis (programador) | 1d | 2017-08-28 A | 2017-08-28 A |  | 100% |  | start no earlier than 2017-08-28 |
| 24 |  | Jose Luis (programador) | 1d | 2017-10-24 | 2017-10-24 |  |  | 87d | start no earlier than 2017-10-24 |
| 25 | 1.1.2.1.1.1.2 | **B. Persona Jurídica** | 58d | 2017-06-05 A | 2017-08-25 A |  | 100% |  |  |
| 26 | 1.1.2.1.1.1.2.1 | **PROCESO DE CONTRATACIÓN (SAJU) 1** | 29d | 2017-06-05 A | 2017-07-14 A |  | 100% |  |  |
| 27 |  | Elaboración de TDR | 3d | 2017-06-05 A | 2017-06-07 A |  | 100% |  | start no earlier than 2017-06-05 |
| 28 |  | Aprobación de los TDR | 1d | 2017-06-07 A | 2017-06-07 A |  | 100% |  | start no earlier than 2017-06-07 |
| 29 |  | Elaboración y Firma de Bases | 1d | 2017-07-03 A | 2017-07-03 A |  | 100% |  | start no earlier than 2017-07-03 |
| 30 |  | Publicación de convocatoria | 1d | 2017-07-03 A | 2017-07-03 A |  | 100% |  | start no earlier than 2017-07-03 |
| 31 |  | Registro de participantes | 9d | 2017-07-03 A | 2017-07-13 A |  | 100% |  | start no earlier than 2017-07-03 |
| 32 |  | Consultas y observaciones | 2d | 2017-07-04 A | 2017-07-05 A |  | 100% |  | start no earlier than 2017-07-04 |
| 33 |  | Absolución de consultas y observaciones | 1d | 2017-07-06 A | 2017-07-06 A |  | 100% |  | start no earlier than 2017-07-06 |
| 34 |  | Integración de Bases | 1d | 2017-07-07 A | 2017-07-07 A |  | 100% |  | start no earlier than 2017-07-07 |
| 35 |  | Presentación de ofertas | 1d | 2017-07-13 A | 2017-07-13 A |  | 100% |  | finish no earlier than 2017-07-13 |
| 36 |  | Evaluación y calificación | 1d | 2017-07-13 A | 2017-07-13 A |  | 100% |  | start no earlier than 2017-07-13 |
| 37 |  | Otorgamiento de la nueva Pro | 1d | 2017-07-14 A | 2017-07-14 A |  | 100% |  | start no earlier than 2017-07-14 |
| 38 | 1.1.2.1.1.1.2.2 | **PROCESO DE CONTRATACIÓN (SAJU) -2da** | 24d | 2017-07-24 A | 2017-08-25 A |  | 100% |  |  |
| 39 |  | Elaboración y Firma de Bases | 2d | 2017-07-24 A | 2017-07-25 A |  | 100% |  | start no earlier than 2017-07-24 |
| 40 |  | Publicación de convocatoria | 1d | 2017-07-26 A | 2017-07-26 A |  | 100% |  | start no earlier than 2017-07-26 |
| 41 |  | Registro de participantes | 10d | 2017-07-31 A | 2017-08-11 A |  | 100% |  | finish no earlier than 2017-08-11 |
| 42 |  | Consultas y observaciones | 2d | 2017-07-31 A | 2017-08-01 A |  | 100% |  | start no earlier than 2017-07-31 |
| 43 |  | Absolución de consultas y observaciones | 1d | 2017-08-02 A | 2017-08-02 A | 42 | 100% |  | start no earlier than 2017-08-02 |
| 44 |  | Integración de Bases | 1d | 2017-08-08 A | 2017-08-08 A |  | 100% |  | start no earlier than 2017-08-08 |
| 45 |  | Presentación de ofertas | 1d | 2017-08-11 A | 2017-08-11 A |  | 100% |  | start no earlier than 2017-08-11 |
| 46 |  | Evaluación y calificación | 1d | 2017-08-14 A | 2017-08-14 A | 45 | 100% |  | start no earlier than 2017-08-14 |
| 47 |  | Otorgamiento de la nueva Pro | 1d | 2017-08-14 A | 2017-08-14 A | 46 | 100% |  | start no earlier than 2017-08-14 |
| 48 |  | Firma de Contrato | 8d | 2017-08-16 A | 2017-08-25 A | 47 | 100% |  | start no earlier than 2017-08-25 |
| 49 | 1.1.2.1.1.2 | **1.2.1.1.2 Inducción** | 2d | 2017-03-09 A | 2017-03-10 A |  | 100% |  |  |
| 50 |  | Presentación de equipos | 1d | 2017-03-09 A | 2017-03-09 A |  | 100% |  |  |
| 51 |  | Capacitación en Procesos | 1d | 2017-03-10 A | 2017-03-10 A |  | 100% |  | start no earlier than 2017-03-10 |
| 52 |  | Capacitación en la nueva arquitectura | 1d | 2017-03-09 A | 2017-03-09 A |  | 100% |  |  |
| 53 |  | Pasantía con el área usuaria | 2d | 2017-03-09 A | 2017-03-10 A |  | 100% |  |  |
| 54 | 1.1.2.1.1.3 | **1.2.1.1.3 Informes** | 211d | 2017-04-03 A | 2018-02-02 |  | 64% | 17d |  |
| 55 | 1.1.2.1.1.3.1 | **A. Persona Natural** | 164d | 2017-04-03 A | 2017-11-27 |  | 71% | 64d |  |
| 56 |  | Rosicarmen Alcazaba (procesos) | 1d | 2017-04-03 A | 2017-04-03 A |  | 100% |  | start no earlier than 2017-04-03 |
| 57 |  | Rosicarmen Alcazaba (procesos) | 1d | 2017-05-03 A | 2017-05-03 A |  | 100% |  | start no earlier than 2017-05-03 |
| 58 |  | Rosicarmen Alcazaba (procesos) | 1d | 2017-06-05 A | 2017-06-05 A |  | 100% |  | start no earlier than 2017-06-05 |
| 59 |  | Saúl Vásquez (sistemas) | 1d | 2017-04-03 A | 2017-04-03 A |  | 100% |  | start no earlier than 2017-04-03 |
| 60 |  | Diego Condezo (sistemas) | 1d | 2017-04-28 A | 2017-04-28 A |  | 100% |  | start no earlier than 2017-04-28 |
| 61 |  | Diego Condezo (sistemas) | 1d | 2017-05-26 A | 2017-05-26 A |  | 100% |  | start no earlier than 2017-05-26 |
| 62 |  | Diego Condezo (sistemas) | 1d | 2017-06-26 A | 2017-06-26 A |  | 100% |  | start no earlier than 2017-06-26 |
| 63 |  | Diego Condezo (sistemas) | 1d | 2017-07-24 A | 2017-07-24 A |  | 100% |  | start no earlier than 2017-07-24 |
| 64 |  | Diego Condezo (sistemas) | 1d | 2017-08-28 A | 2017-08-28 A |  | 100% |  | start no earlier than 2017-08-28 |
| 65 |  | Diego Condezo (sistemas) | 1d | 2017-09-26 | 2017-09-26 |  |  | 107d | start no earlier than 2017-09-26 |
| 66 |  | Diego Condezo (sistemas) | 1d | 2017-10-26 | 2017-10-26 |  |  | 85d | start no earlier than 2017-10-26 |
| 67 |  | Diego Condezo (sistemas) | 1d | 2017-11-27 | 2017-11-27 |  |  | 64d | start no earlier than 2017-11-27 |
| 68 |  | Emperatriz Rosario (procesos) | 1d | 2017-07-14 A | 2017-07-14 A |  | 100% |  | start no earlier than 2017-07-14 |
| 69 |  | Emperatriz Rosario (procesos) | 1d | 2017-08-15 A | 2017-08-15 A |  | 100% |  | start no earlier than 2017-08-15 |
| 70 |  | Emperatriz Rosario (procesos) | 1d | 2017-09-19 A | 2017-09-19 A |  | 100% |  | start no earlier than 2017-09-19 |

| ID | WBS | Task | Duration | Start | Finish | Predecessors | Complete | Total float | Constraint |
| --- | --- | --- | --- | --- | --- | --- | --- | --- | --- |
| 71 |  | Jose Luis (programador) | 1d | 2017-06-27 A | 2017-06-27 A |  | 100% |  | start no earlier than 2017-06-27 |
| 72 |  | Jose Luis (programador) | 1d | 2017-07-24 A | 2017-07-24 A |  | 100% |  | start no earlier than 2017-07-24 |
| 73 |  | Jose Luis (programador) | 1d | 2017-08-28 A | 2017-08-28 A |  | 100% |  | start no earlier than 2017-08-28 |
| 74 |  | Jose Luis (programador) | 1d | 2017-09-25 | 2017-09-25 |  |  | 108d | start no earlier than 2017-09-25 |
| 75 |  | Jose Luis (programador) | 1d | 2017-10-24 | 2017-10-24 |  |  | 87d | start no earlier than 2017-10-24 |
| 76 |  | Jose Luis (programador) | 1d | 2017-11-24 | 2017-11-24 |  |  | 65d | start no earlier than 2017-11-24 |
| 77 | 1.1.2.1.1.3.2 | **B. Persona Jurídica** | 105d | 2017-09-06 A | 2018-02-02 |  | 25% | 17d |  |
| 78 |  | Entregable 1 | 1d | 2017-09-06 A | 2017-09-06 A |  | 100% |  | start no earlier than 2017-09-06 |
| 79 |  | Entregable 2 | 1d | 2017-09-26 | 2017-09-26 |  |  | 107d | start no earlier than 2017-09-26 |
| 80 |  | Entregable 3 | 1d | 2017-11-24 | 2017-11-24 |  |  | 65d | start no earlier than 2017-11-24 |
| 81 |  | Entregable 4 | 1d | 2018-02-02 | 2018-02-02 |  |  | 17d | start no earlier than 2018-02-02 |
| 82 | 1.1.3 | **1.3 Seguiminto y Control** | 105d | 2017-07-31 A | 2017-12-28 |  | 8% | 43d |  |
| 83 | 1.1.3.1 | **1.3.1 Informe mensual** | 105d | 2017-07-31 A | 2017-12-28 |  | 17% | 43d |  |
| 84 |  | Informe mensual 1 | 1d | 2017-07-31 A | 2017-07-31 A |  | 100% |  | start no earlier than 2017-07-28 |
| 85 |  | Informe mensual 2 | 1d | 2017-08-28 | 2017-08-28 |  |  | 127d | start no earlier than 2017-08-28 |
| 86 |  | Informe mensual 3 | 1d | 2017-09-28 | 2017-09-28 |  |  | 105d | start no earlier than 2017-09-28 |
| 87 |  | Informe mensual 4 | 1d | 2017-10-30 | 2017-10-30 |  |  | 83d | start no earlier than 2017-10-30 |
| 88 |  | Informe mensual 5 | 1d | 2017-11-28 | 2017-11-28 |  |  | 63d | start no earlier than 2017-11-28 |
| 89 |  | Informe mensual 6 | 1d | 2017-12-28 | 2017-12-28 |  |  | 43d | start no earlier than 2017-12-28 |
| 90 | 1.1.3.2 | **1.3.2 Reuniones de Seguimiento** | 83d | 2017-08-31 A | 2017-12-28 |  | 6% | 43d |  |
| 91 |  | Reuniones de Seguimiento 1 | 1d | 2017-08-31 | 2017-08-31 |  |  | 125d | start no earlier than 2017-08-31 |
| 92 |  | Reuniones de Seguimiento 2 | 1d | 2017-09-07 A | 2017-09-07 A |  | 100% |  | start no earlier than 2017-09-07 |
| 93 |  | Reuniones de Seguimiento 3 | 1d | 2017-09-14 | 2017-09-14 |  |  | 115d | start no earlier than 2017-09-14 |
| 94 |  | Reuniones de Seguimiento 4 | 1d | 2017-09-21 | 2017-09-21 |  |  | 110d | start no earlier than 2017-09-21 |
| 95 |  | Reuniones de Seguimiento 5 | 1d | 2017-09-28 | 2017-09-28 |  |  | 105d | start no earlier than 2017-09-28 |
| 96 |  | Reuniones de Seguimiento 6 | 1d | 2017-10-05 | 2017-10-05 |  |  | 100d | start no earlier than 2017-10-05 |
| 97 |  | Reuniones de Seguimiento 7 | 1d | 2017-10-12 | 2017-10-12 |  |  | 95d | start no earlier than 2017-10-12 |
| 98 |  | Reuniones de Seguimiento 8 | 1d | 2017-10-19 | 2017-10-19 |  |  | 90d | start no earlier than 2017-10-19 |
| 99 |  | Reuniones de Seguimiento 9 | 1d | 2017-10-26 | 2017-10-26 |  |  | 85d | start no earlier than 2017-10-26 |
| 100 |  | Reuniones de Seguimiento 10 | 1d | 2017-11-02 | 2017-11-02 |  |  | 81d | start no earlier than 2017-11-02 |
| 101 |  | Reuniones de Seguimiento 11 | 1d | 2017-11-09 | 2017-11-09 |  |  | 76d | start no earlier than 2017-11-09 |
| 102 |  | Reuniones de Seguimiento 12 | 1d | 2017-11-16 | 2017-11-16 |  |  | 71d | start no earlier than 2017-11-16 |
| 103 |  | Reuniones de Seguimiento 13 | 1d | 2017-11-23 | 2017-11-23 |  |  | 66d | start no earlier than 2017-11-23 |
| 104 |  | Reuniones de Seguimiento 14 | 1d | 2017-11-30 | 2017-11-30 |  |  | 61d | start no earlier than 2017-11-30 |
| 105 |  | Reuniones de Seguimiento 15 | 1d | 2017-12-07 | 2017-12-07 |  |  | 56d | start no earlier than 2017-12-07 |
| 106 |  | Reuniones de Seguimiento 16 | 1d | 2017-12-14 | 2017-12-14 |  |  | 52d | start no earlier than 2017-12-14 |
| 107 |  | Reuniones de Seguimiento 17 | 1d | 2017-12-21 | 2017-12-21 |  |  | 47d | start no earlier than 2017-12-21 |
| 108 |  | Reuniones de Seguimiento 18 | 1d | 2017-12-28 | 2017-12-28 |  |  | 43d | start no earlier than 2017-12-28 |
| 109 | 1.1.4 | **1.4 Cierre** | 1d | 2017-12-29 | 2017-12-29 |  |  | 42d |  |
| 110 |  | Informe de Cierre | 1d | 2017-12-29 | 2017-12-29 |  |  | 42d | start no earlier than 2017-12-29 |
| 111 | 1.2 | **2. ACTIVIDADES DE INGENIERÍA** | 245d? | 2017-03-09 A | 2018-02-27 |  | 61% | 0d |  |
| 112 | 1.2.1 | **2.1 Planificación** | 56d | 2017-03-09 A | 2017-05-30 A |  | 100% |  |  |
| 113 |  | Reuniones con los involucrados y elaboración de AS IS | 24d | 2017-03-09 A | 2017-04-11 A |  | 100% |  |  |
| 114 |  | Revisión (Usuario - GOP - GPY - GIN) | 7d | 2017-04-11 A | 2017-04-21 A |  | 100% |  | start no earlier than 2017-04-11 |
| 115 |  | Levantamiento de observaciones | 10d | 2017-04-24 A | 2017-05-08 A | 114 | 100% |  |  |
| 116 |  | Validación Final del AS IS | 13d | 2017-05-09 A | 2017-05-25 A | 115 | 100% |  |  |
| 117 |  | Aprobación del Relevamiento de Información | 3d | 2017-05-26 A | 2017-05-30 A | 116 | 100% |  |  |
| 118 | 1.2.2 | **2.2 Modelado de Procesos** | 114d | 2017-04-03 A | 2017-09-15 A |  | 100% |  |  |
| 119 | 1.2.2.1 | **2.2.1 Ficha Técnica del Proceso** | 39d | 2017-04-03 A | 2017-05-30 A |  | 100% |  |  |
| 120 |  | Elaboración del TO BE | 10d | 2017-04-03 A | 2017-04-18 A |  | 100% |  |  |
| 121 |  | Revisión (Usuario - GOP - GPY - GIN) | 2d | 2017-04-19 A | 2017-04-20 A | 120 | 100% |  |  |
| 122 |  | Levantamiento de observaciones | 4d | 2017-04-21 A | 2017-04-26 A | 121 | 100% |  |  |
| 123 |  | Validación Final del TO BE | 1d | 2017-04-27 A | 2017-04-27 A | 122 | 100% |  |  |
| 124 |  | Ficha Técnica del Proceso | 13d | 2017-04-28 A | 2017-05-17 A | 123 | 100% |  |  |
| 125 |  | Revisión de GOP | 3d | 2017-05-18 A | 2017-05-22 A | 124 | 100% |  |  |
| 126 |  | Levantamiento de observaciones | 2d | 2017-05-23 A | 2017-05-24 A | 125 | 100% |  |  |
| 127 |  | Validación Final de la Ficha Técnica de Proceso | 2d | 2017-05-25 A | 2017-05-26 A | 126 | 100% |  |  |
| 128 |  | Aprobación del documento | 2d | 2017-05-29 A | 2017-05-30 A | 127 | 100% |  |  |
| 129 | 1.2.2.2 | **2.2.2 Procedimiento** | 38d | 2017-07-24 A | 2017-09-15 A |  | 100% |  |  |
| 130 |  | Elaboración del procedimiento | 12d | 2017-07-24 A | 2017-08-09 A |  | 100% |  | start no earlier than 2017-07-24 |
| 131 |  | Revisión del procedimiento (Usuario y GOP) | 6d | 2017-08-10 A | 2017-08-17 A | 130 | 100% |  |  |
| 132 |  | Levantamiento de observaciones | 3d | 2017-08-18 A | 2017-08-22 A | 131 | 100% |  |  |
| 133 |  | Validación (GOP, Usuario) | 16d | 2017-08-23 A | 2017-09-14 A | 132 | 100% |  | finish no earlier than 2017-09-14 |
| 134 |  | Aprobación del documento | 1d | 2017-09-15 A | 2017-09-15 A | 133 | 100% |  |  |
| 135 | 1.2.3 | **2.3 Análisis y Diseño del Sistema** | 89d | 2017-05-22 A | 2017-09-26 |  | 90% | 107d |  |
| 136 | 1.2.3.1 | **Definición Funcional SAJU** | 17d | 2017-05-22 A | 2017-06-13 A |  | 100% |  |  |
| 137 |  | Elaboración de la Definición Funcional | 12d | 2017-05-22 A | 2017-06-06 A |  | 100% |  |  |
| 138 |  | Revisión de GIN GOP y Usuario | 1d | 2017-06-07 A | 2017-06-07 A | 137 | 100% |  |  |
| 139 |  | Levantamiento de Observaciones de la DF | 3d | 2017-06-08 A | 2017-06-12 A | 138 | 100% |  |  |
| 140 |  | Validación Final DF (Usuario, GOP y GIN) | 1d | 2017-06-13 A | 2017-06-13 A | 139 | 100% |  | finish no earlier than 2017-06-13 |

| ID | WBS | Task | Duration | Start | Finish | Predecessors | Complete | Total float | Constraint |
| --- | --- | --- | --- | --- | --- | --- | --- | --- | --- |
| 141 | 1.2.3.2 | **Definición Funcional SGD** | 6d | 2017-06-14 A | 2017-06-21 A |  | 100% |  |  |
| 142 |  | Elaboración de la Definición Funcional | 1d | 2017-06-14 A | 2017-06-14 A |  | 100% |  |  |
| 143 |  | Revisión de GOP (reglas de negocio) | 1d | 2017-06-15 A | 2017-06-15 A | 142 | 100% |  |  |
| 144 |  | Revisión de GIN y Usuario | 1d | 2017-06-16 A | 2017-06-16 A | 143 | 100% |  |  |
| 145 |  | Levantamiento de Observaciones de la DF | 1d | 2017-06-19 A | 2017-06-19 A | 144 | 100% |  |  |
| 146 |  | Validación Final DF (Usuario, GOP y GIN) | 1d | 2017-06-20 A | 2017-06-21 A | 145 | 100% |  | finish no earlier than 2017-06-21 |
| 147 | 1.2.3.3 | **Documento Técnico SGD** | 35d | 2017-07-17 A | 2017-09-05 A |  | 100% |  |  |
| 148 |  | Elaboración del DT | 24.88d | 2017-07-17 A | 2017-08-21 A |  | 100% |  | finish no earlier than 2017-08-21 |
| 149 |  | Revisión del documento | 8d | 2017-08-02 A | 2017-08-29 A | 148 | 100% |  | finish no earlier than 2017-08-29 |
| 150 |  | Revisión de GIN (Arquitectura /Modelo de Datos) | 2d | 2017-08-31 A | 2017-09-01 A | 149 | 100% |  |  |
| 151 |  | Levantamiento de observaciones | 1d | 2017-09-04 A | 2017-09-04 A | 150 | 100% |  |  |
| 152 |  | Validación Final | 1d | 2017-09-05 A | 2017-09-05 A | 151 | 100% |  |  |
| 153 | 1.2.3.4 | **Documento Técnico SAJU (proveedor)** | 14d | 2017-09-07 A | 2017-09-26 |  | 46% | 107d |  |
| 154 |  | Elaboración de la DT | 8d | 2017-09-07 A | 2017-09-18 |  | 80% | 107d | start no earlier than 2017-09-07 |
| 155 |  | Revisión de GIN (Arquitectura /Modelo de Datos) | 2d | 2017-09-19 | 2017-09-20 | 154 |  | 107d |  |
| 156 |  | Levantamiento de Observaciones | 2d | 2017-09-21 | 2017-09-22 | 155 |  | 107d |  |
| 157 |  | Revisión 2 de GIN (Arquitectura /Modelo de Datos) | 1d | 2017-09-25 | 2017-09-25 | 156 |  | 107d |  |
| 158 |  | Validación Final | 1d | 2017-09-26 | 2017-09-26 | 157 |  | 107d |  |
| 159 | 1.2.4 | **2.4 Construcción** | 211d? | 2017-03-09 A | 2018-01-10 |  | 23% | 34d |  |
| 160 | 1.2.4.1 | **2.4.1 SGD** | 180d? | 2017-03-09 A | 2017-11-24 |  | 39% | 65d |  |
| 161 | 1.2.4.1.1 | **Iteración 1** | 41d | 2017-07-17 A | 2017-09-13 |  | 83% | 116d |  |
| 162 | 1.2.4.1.1.1 | **A. Desarrollo** | 32d | 2017-07-17 A | 2017-08-31 A |  | 100% |  |  |
| 163 |  | RQ 001: Consulta de Trámites | 3d | 2017-07-17 A | 2017-07-19 A |  | 100% |  | start no earlier than 2017-07-17 |
| 164 |  | RQ 002: Registrar Trámites en forma Masiva | 3d | 2017-07-17 A | 2017-07-20 A |  | 100% |  | start no earlier than 2017-07-17 |
| 165 |  | RQ 002: Registrar Trámites en forma Masiva | 2d | 2017-07-20 A | 2017-07-21 A |  | 100% |  | start no earlier than 2017-07-20 |
| 166 |  | RQ 002: Registrar Tramites en forma Masiva | 3d | 2017-07-24 A | 2017-07-26 A |  | 100% |  |  |
| 167 |  | RQ 001: Gestionar Registro de Expedientes Judiciales (SAJU) | 10d | 2017-07-31 A | 2017-08-12 A |  | 100% |  | finish no earlier than 2017-08-12 |
| 168 |  | Resolucion de obtencion y despliegue de Fuentes SAJU en Desarrollo | 8d | 2017-08-21 A | 2017-08-31 A |  | 100% |  | finish no earlier than 2017-08-31 |
| 169 |  | Revisión integral y modificaciones | 2d | 2017-08-14 A | 2017-08-15 A | 167 | 100% |  |  |
| 170 |  | Revisión en Desarrollo 1 | 1d | 2017-08-24 A | 2017-08-24 A | 169 | 100% |  |  |
| 171 |  | Levantamiento de observaciones | 1d | 2017-08-25 A | 2017-08-25 A | 170 | 100% |  |  |
| 172 |  | Revisión en Desarrollo 2 | 2d | 2017-08-28 A | 2017-08-29 A | 171 | 100% |  |  |
| 173 | 1.2.4.1.1.2 | **B. Pruebas** | 7d | 2017-08-28 A | 2017-09-06 |  | 57% | 4.75d |  |
| 174 |  | Documentación para el pase | 1d | 2017-08-28 A | 2017-08-28 A | 171 | 100% |  | start no earlier than 2017-08-25 |
| 175 |  | Envío y Revisión por AF Calidad (Rev 1) | 3d | 2017-08-29 A | 2017-09-01 A | 174 | 100% |  | start no earlier than 2017-08-28 |
| 176 |  | Pruebas con el equipo AE | 1d | 2017-09-04 | 2017-09-04 | 175 |  | 4.75d | start no earlier than 2017-09-01 |
| 177 |  | Pruebas de Aceptación (usuario) | 2d | 2017-09-05 | 2017-09-06 | 176 |  | 4.75d | start no earlier than 2017-09-01 |
| 178 |  | C. Producción | 1d | 2017-09-07 | 2017-09-07 | 177 |  | 116d |  |
| 179 |  | D. Seguimiento | 4d | 2017-09-08 | 2017-09-13 | 178 |  | 116d |  |
| 180 | 1.2.4.1.2 | **Iteración 2** | 156d? | 2017-03-09 A | 2017-10-20 |  | 13% | 89d |  |
| 181 | 1.2.4.1.2.1 | **A. Desarrollo** | 146d? | 2017-03-09 A | 2017-10-06 |  | 19% | 99d |  |
| 182 |  | RQ 003: Gestionar Registro de Notificaciones - cédulas (importar) | 19d | 2017-09-07 A | 2017-10-03 | 177 | 25% | 65d | start no earlier than 2017-08-09 |
| 183 |  | RQ 003: Gestionar Registro de Notificaciones - cédulas (asignar) | 1d? | 2017-03-09 | 2017-03-09 |  |  | 244d |  |
| 184 |  | RQ 003: Gestionar Registro de Notificaciones - cédulas (recepcionar y atender) | 1d? | 2017-03-09 | 2017-03-09 |  |  | 244d |  |
| 185 |  | RQ 003: Gestionar Registro de Notificaciones - cédulas (escritor) | 1d? | 2017-03-09 | 2017-03-09 |  |  | 244d |  |
| 186 |  | Revisión en Desarrollo | 2d | 2017-10-04 | 2017-10-05 | 182 |  | 65d |  |
| 187 |  | Levantamiento de observaciones | 1d | 2017-10-06 | 2017-10-06 | 186 |  | 65d |  |
| 188 | 1.2.4.1.2.2 | **B. Pruebas** | 5d | 2017-10-09 | 2017-10-13 |  |  | 65d |  |
| 189 |  | Documentación para el pase | 1d | 2017-10-09 | 2017-10-09 | 187 |  | 65d | start no earlier than 2017-08-23 |
| 190 |  | Envío y Revisión por AF Calidad (Rev 1) | 2d | 2017-10-10 | 2017-10-11 | 189 |  | 65d | start no earlier than 2017-08-25 |
| 191 |  | Levantamiento de Observaciones | 1d | 2017-10-12 | 2017-10-12 | 190 |  | 65d | start no earlier than 2017-08-29 |
| 192 |  | Pruebas con el equipo AE | 1d | 2017-10-13 | 2017-10-13 | 191 |  | 94d | start no earlier than 2017-09-01 |
| 193 |  | Pruebas de Aceptación (usuario) | 1d | 2017-10-13 | 2017-10-13 | 191 |  | 65d | start no earlier than 2017-09-01 |
| 194 |  | C. Pase a producción | 1d | 2017-10-16 | 2017-10-16 | 193 |  | 89d |  |
| 195 |  | D. Seguimiento | 4d | 2017-10-17 | 2017-10-20 | 194 |  | 89d |  |
| 196 | 1.2.4.1.3 | **Iteración 3** | 29d | 2017-10-16 | 2017-11-24 |  |  | 65d |  |
| 197 | 1.2.4.1.3.1 | **A. Desarrollo** | 18d | 2017-10-16 | 2017-11-09 |  |  | 65d |  |
| 198 |  | Rq Atención | 15d | 2017-10-16 | 2017-11-06 | 193 |  | 65d |  |
| 199 |  | Revisión en Desarrollo | 2d | 2017-11-07 | 2017-11-08 | 198 |  | 65d |  |
| 200 |  | Levantamiento de observaciones | 1d | 2017-11-09 | 2017-11-09 | 199 |  | 65d |  |
| 201 | 1.2.4.1.3.2 | **B. Pruebas** | 6d | 2017-11-10 | 2017-11-17 |  |  | 65d |  |
| 202 |  | Documentación para el pase | 1d | 2017-11-10 | 2017-11-10 | 200 |  | 65d |  |
| 203 |  | Envío y Revisión por AF Calidad (Rev 1) | 3d | 2017-11-13 | 2017-11-15 | 202 |  | 65d |  |
| 204 |  | Pruebas con el equipo AE | 1d | 2017-11-16 | 2017-11-16 | 203 |  | 71d |  |
| 205 |  | Pruebas de Aceptación (usuario) | 2d | 2017-11-16 | 2017-11-17 | 203 |  | 65d |  |
| 206 |  | C. Pase a producción | 1d | 2017-11-20 | 2017-11-20 | 205 |  | 65d |  |
| 207 |  | D. Seguimiento | 4d | 2017-11-21 | 2017-11-24 | 206 |  | 65d |  |
| 208 | 1.2.4.2 | **2.4.2 SAJU** | 70d | 2017-10-02 | 2018-01-10 |  |  | 34d |  |
| 209 | 1.2.4.2.1 | **Iteración 1** | 39d | 2017-10-02 | 2017-11-24 |  |  | 34d |  |
| 210 | 1.2.4.2.1.1 | **A. Desarrollo** | 26d | 2017-10-02 | 2017-11-07 |  |  | 34d |  |

| ID | WBS | Task | Duration | Start | Finish | Predecessors | Complete | Total float | Constraint |
| --- | --- | --- | --- | --- | --- | --- | --- | --- | --- |
| 211 |  | RQ 001 al 10 | 20d | 2017-10-02 | 2017-10-27 |  |  | 34d | start no earlier than 2017-10-02 |
| 212 |  | Revisión en Desarrollo | 4d | 2017-10-30 | 2017-11-03 | 211 |  | 34d |  |
| 213 |  | Levantamiento de observaciones | 2d | 2017-11-06 | 2017-11-07 | 212 |  | 34d |  |
| 214 | 1.2.4.2.1.2 | **B. Pruebas** | 8d | 2017-11-08 | 2017-11-17 |  |  | 34d |  |
| 215 |  | Documentación para el pase | 1d | 2017-11-08 | 2017-11-08 | 213 |  | 34d |  |
| 216 |  | Envío y Revisión por AF Calidad (Rev 1) | 3d | 2017-11-09 | 2017-11-13 | 215 |  | 34d |  |
| 217 |  | Levantamiento de Observaciones | 2d | 2017-11-14 | 2017-11-15 | 216 |  | 34d |  |
| 218 |  | Pruebas con el equipo AE | 1d | 2017-11-16 | 2017-11-16 | 217 |  | 71d |  |
| 219 |  | Pruebas de Aceptación (usuario) | 2d | 2017-11-16 | 2017-11-17 | 217 |  | 34d |  |
| 220 |  | C. Pase a producción | 1d | 2017-11-20 | 2017-11-20 | 219 |  | 65d |  |
| 221 |  | D. Seguimiento | 4d | 2017-11-21 | 2017-11-24 | 220 |  | 65d |  |
| 222 | 1.2.4.2.2 | **Iteración 2** | 36d | 2017-11-20 | 2018-01-10 |  |  | 34d |  |
| 223 | 1.2.4.2.2.1 | **A. Desarrollo** | 26d | 2017-11-20 | 2017-12-27 |  |  | 34d |  |
| 224 |  | RQ 10 al 20 | 20d | 2017-11-20 | 2017-12-18 | 219 |  | 34d |  |
| 225 |  | Revisión en Desarrollo | 4d | 2017-12-19 | 2017-12-22 | 224 |  | 34d |  |
| 226 |  | Levantamiento de observaciones | 2d | 2017-12-26 | 2017-12-27 | 225 |  | 34d |  |
| 227 | 1.2.4.2.2.2 | **B. Pruebas** | 5d | 2017-12-28 | 2018-01-03 |  |  | 34d |  |
| 228 |  | Documentación para el pase | 1d | 2017-12-28 | 2017-12-28 | 226 |  | 34d |  |
| 229 |  | Envío y Revisión por AF Calidad (Rev 1) | 2d | 2017-12-29 | 2018-01-01 | 228 |  | 34d |  |
| 230 |  | Levantamiento de Observaciones | 1d | 2018-01-02 | 2018-01-02 | 229 |  | 34d |  |
| 231 |  | Pruebas con el equipo AE | 1d | 2018-01-03 | 2018-01-03 | 230 |  | 39d |  |
| 232 |  | Pruebas de Aceptación (usuario) | 1d | 2018-01-03 | 2018-01-03 | 230 |  | 34d |  |
| 233 |  | C. Pase a Producción | 1d | 2018-01-04 | 2018-01-04 | 232 |  | 34d |  |
| 234 |  | D. Seguimiento | 4d | 2018-01-05 | 2018-01-10 | 233 |  | 34d |  |
| 235 | 1.2.5 | **2.5 Actividades complementarias** | 175d | 2017-06-20 A | 2018-02-27 |  | 62% | 0d |  |
| 236 | 1.2.5.1 | **2.5.1 Dimensionamiento** | 61d | 2017-06-20 A | 2017-09-15 A |  | 100% |  |  |
| 237 |  | Levantamiento de información | 20d | 2017-06-20 A | 2017-07-18 A |  | 100% |  | start no earlier than 2017-06-20 |
| 238 |  | Informe final | 4d | 2017-07-19 A | 2017-07-24 A | 237 | 100% |  |  |
| 239 |  | Aprobación con GOP y Usuario | 14d | 2017-08-28 A | 2017-09-15 A |  | 100% |  | finish no earlier than 2017-09-15 |
| 240 | 1.2.5.2 | **2.5.2 Manual de Usuario** | 18d | 2017-12-11 | 2018-01-04 |  |  | 38d |  |
| 241 |  | Elaboración del Manual de Usuario | 16d | 2017-12-11 | 2018-01-02 |  |  | 38d | start no earlier than 2017-12-11 |
| 242 |  | Aprobación del Manual | 2d | 2018-01-03 | 2018-01-04 | 241 |  | 38d |  |
| 243 |  | 2.5.3 Capacitación a Usuarios | 3d | 2018-01-08 | 2018-01-10 |  |  | 34d | start no earlier than 2018-01-08 |
| 244 | 1.2.5.4 | **2.5.4 Transferencia a Informática** | 2d | 2018-02-26 | 2018-02-27 |  |  | 0d |  |
| 245 |  | Elaborar documento de transferencia | 1d | 2018-02-26 | 2018-02-26 |  |  | 0d | start no earlier than 2018-02-26 |
| 246 |  | Envío de documento formal | 1d | 2018-02-27 | 2018-02-27 | 245 |  | 0d |  |

## Version 2 (data date 2018-09-25, saved 2017-10-27, file [AE SAJU] Cronograma SAJU 29.09.17-cavg.mpp)

Last finish stays 2018-02-27. Complete tasks 104 → 112.

Changed:

| ID | Task | Start | Finish | Duration | Complete | Total float | Other |
| --- | --- | --- | --- | --- | --- | --- | --- |
| 1 | **Ejecución de AE SAJU** | 2017-03-09 A → 2017-02-27 (-10d) | 2018-02-27 → 2017-02-27 (-365d) | 245d? → 0d | 64% → 68% | 0d → none |  |
| 5 | Elaboración del documento |  |  |  |  |  | resources América [50%] → América [50%]; Costo por día [12.5%] |
| 6 | Revisión del documento |  |  |  |  |  | resources Luis [45%]; Marjorie [80%]; Usuario [70%] → Luis [45%]; Marjorie [80%]; Usuario [70%]; Costo por día [12.5%] |
| 7 | Levantamiento de observaciones |  |  |  |  |  | resources América [50%] → América [50%]; Costo por día [12.5%] |
| 8 | Validación Final |  |  |  |  |  | resources Luis [45%]; Marjorie [80%]; Usuario [70%] → Luis [45%]; Marjorie [80%]; Usuario [70%]; Costo por día [12.5%] |
| 9 | Aprobación del documento |  |  |  |  |  | resources Todos → Todos; Costo por día [12.5%] |
| 15 | Rosicarmen Alcazaba (procesos) |  |  |  |  |  | resources none → Costo por día [12.5%] |
| 16 | Saúl Vásquez (sistemas) |  |  |  |  |  | resources none → Costo por día [12.5%] |
| 17 | Diego Condezo (sistemas) |  |  |  |  |  | resources none → Costo por día [12.5%] |
| 18 | Diego Condezo (sistemas) |  |  |  |  |  | resources none → Costo por día [12.5%] |
| 19 | Diego Condezo (sistemas) | 2017-09-25 → 2017-10-02 (+7d) | 2017-09-25 → 2017-10-02 (+7d) |  |  | 108d → -149d | constraint start no earlier than 2017-09-25 → start no earlier than 2017-09-30; resources none → Costo por día [12.5%] |
| 20 | Emperatriz Rosario (procesos) |  |  |  |  |  | resources none → Costo por día [12.5%] |
| 21 | Jose Luis (programador) |  |  |  |  |  | resources none → Costo por día [12.5%] |
| 22 | Jose Luis (programador) |  |  |  |  |  | resources none → Costo por día [12.5%] |
| 23 | Jose Luis (programador) |  |  |  |  |  | resources none → Costo por día [12.5%] |
| 24 | Jose Luis (programador) |  |  |  |  | 87d → -165d | resources none → Costo por día [12.5%] |
| 25 | **B. Persona Jurídica** |  | 2017-08-25 A → 2017-09-06 A (+12d) | 58d → 65d |  |  |  |
| 27 | Elaboración de TDR |  |  |  |  |  | resources none → Costo por día [12.5%] |
| 28 | Aprobación de los TDR |  |  |  |  |  | resources none → Costo por día [12.5%] |
| 29 | Elaboración y Firma de Bases |  |  |  |  |  | resources none → Costo por día [12.5%] |
| 30 | Publicación de convocatoria |  |  |  |  |  | resources none → Costo por día [12.5%] |
| 31 | Registro de participantes |  |  |  |  |  | resources none → Costo por día [12.5%] |
| 32 | Consultas y observaciones |  |  |  |  |  | resources none → Costo por día [12.5%] |
| 33 | Absolución de consultas y observaciones |  |  |  |  |  | resources none → Costo por día [12.5%] |
| 34 | Integración de Bases |  |  |  |  |  | resources none → Costo por día [12.5%] |
| 35 | Presentación de ofertas |  |  |  |  |  | resources none → Costo por día [12.5%] |
| 36 | Evaluación y calificación |  |  |  |  |  | resources none → Costo por día [12.5%] |
| 37 | Otorgamiento de la nueva Pro |  |  |  |  |  | resources none → Costo por día [12.5%] |
| 38 | **PROCESO DE CONTRATACIÓN (SAJU) -2da** |  | 2017-08-25 A → 2017-09-06 A (+12d) | 24d → 31d |  |  |  |
| 39 | Elaboración y Firma de Bases |  |  |  |  |  | resources none → Costo por día [12.5%] |
| 40 | Publicación de convocatoria |  |  |  |  |  | resources none → Costo por día [12.5%] |
| 41 | Registro de participantes |  |  |  |  |  | resources none → Costo por día [12.5%] |
| 42 | Consultas y observaciones |  |  |  |  |  | resources none → Costo por día [12.5%] |
| 43 | Absolución de consultas y observaciones |  |  |  |  |  | resources none → Costo por día [12.5%] |
| 44 | Integración de Bases |  |  |  |  |  | resources none → Costo por día [12.5%] |
| 45 | Presentación de ofertas |  |  |  |  |  | resources none → Costo por día [12.5%] |
| 46 | Evaluación y calificación |  |  |  |  |  | resources none → Costo por día [12.5%] |
| 47 | Otorgamiento de la nueva Pro |  |  |  |  |  | resources none → Costo por día [12.5%] |
| 48 | Firma de Contrato | 2017-08-16 A → 2017-08-25 A (+9d) | 2017-08-25 A → 2017-09-06 A (+12d) |  |  |  | resources none → Costo por día [12.5%] |
| 50 | Presentación de equipos |  |  |  |  |  | resources none → Costo por día [12.5%] |
| 51 | Capacitación en Procesos |  |  |  |  |  | resources none → Costo por día [12.5%] |
| 52 | Capacitación en la nueva arquitectura |  |  |  |  |  | resources none → Costo por día [12.5%] |
| 53 | Pasantía con el área usuaria |  |  |  |  |  | resources none → Costo por día [12.5%] |
| 56 | Rosicarmen Alcazaba (procesos) |  |  |  |  |  | resources none → Costo por día [12.5%] |
| 57 | Rosicarmen Alcazaba (procesos) |  |  |  |  |  | resources none → Costo por día [12.5%] |
| 58 | Rosicarmen Alcazaba (procesos) |  |  |  |  |  | resources none → Costo por día [12.5%] |
| 59 | Saúl Vásquez (sistemas) |  |  |  |  |  | resources none → Costo por día [12.5%] |
| 60 | Diego Condezo (sistemas) |  |  |  |  |  | resources none → Costo por día [12.5%] |
| 61 | Diego Condezo (sistemas) |  |  |  |  |  | resources none → Costo por día [12.5%] |
| 62 | Diego Condezo (sistemas) |  |  |  |  |  | resources none → Costo por día [12.5%] |
| 63 | Diego Condezo (sistemas) |  |  |  |  |  | resources none → Costo por día [12.5%] |
| 64 | Diego Condezo (sistemas) |  |  |  |  |  | resources none → Costo por día [12.5%] |
| 65 | Diego Condezo (sistemas) | 2017-09-26 → 2017-10-02 (+6d) | 2017-09-26 → 2017-10-02 (+6d) |  |  | 107d → -149d | constraint start no earlier than 2017-09-26 → start no earlier than 2017-09-30; resources none → Costo por día [12.5%] |
| 66 | Diego Condezo (sistemas) |  |  |  |  | 85d → -167d | resources none → Costo por día [12.5%] |
| 67 | Diego Condezo (sistemas) |  |  |  |  | 64d → -188d | resources none → Costo por día [12.5%] |
| 68 | Emperatriz Rosario (procesos) |  |  |  |  |  | resources none → Costo por día [12.5%] |
| 69 | Emperatriz Rosario (procesos) |  |  |  |  |  | resources none → Costo por día [12.5%] |
| 70 | Emperatriz Rosario (procesos) |  |  |  |  |  | resources none → Costo por día [12.5%] |
| 71 | Jose Luis (programador) |  |  |  |  |  | resources none → Costo por día [12.5%] |
| 72 | Jose Luis (programador) |  |  |  |  |  | resources none → Costo por día [12.5%] |
| 73 | Jose Luis (programador) |  |  |  |  |  | resources none → Costo por día [12.5%] |
| 74 | Jose Luis (programador) | 2017-09-25 → 2017-10-02 (+7d) | 2017-09-25 → 2017-10-02 (+7d) |  |  | 108d → -149d | constraint start no earlier than 2017-09-25 → start no earlier than 2017-09-30; resources none → Costo por día [12.5%] |
| 75 | Jose Luis (programador) |  |  |  |  | 87d → -165d | resources none → Costo por día [12.5%] |
| 76 | Jose Luis (programador) |  |  |  |  | 65d → -187d | resources none → Costo por día [12.5%] |
| 78 | Entregable 1 |  |  |  |  |  | resources none → Costo por día [12.5%] |
| 79 | Entregable 2 | 2017-09-26 → 2017-10-02 (+6d) | 2017-09-26 → 2017-10-02 (+6d) |  |  | 107d → -149d | constraint start no earlier than 2017-09-26 → start no earlier than 2017-09-30; resources none → Costo por día [12.5%] |
| 80 | Entregable 3 |  |  |  |  | 65d → -187d | resources none → Costo por día [12.5%] |
| 81 | Entregable 4 |  |  |  |  | 17d → -235d | resources none → Costo por día [12.5%] |
| 84 | Informe mensual 1 |  |  |  |  |  | resources none → Costo por día [12.5%] |
| 85 | Informe mensual 2 | 2017-08-28 → 2017-10-02 (+35d) | 2017-08-28 → 2017-10-02 (+35d) |  |  | 127d → -149d | constraint start no earlier than 2017-08-28 → start no earlier than 2017-09-30; resources none → Costo por día [12.5%] |

| ID | Task | Start | Finish | Duration | Complete | Total float | Other |
| --- | --- | --- | --- | --- | --- | --- | --- |
| 86 | Informe mensual 3 | 2017-09-28 → 2017-10-02 (+4d) | 2017-09-28 → 2017-10-02 (+4d) |  |  | 105d → -149d | constraint start no earlier than 2017-09-28 → start no earlier than 2017-09-30; resources none → Costo por día [12.5%] |
| 87 | Informe mensual 4 |  |  |  |  | 83d → -169d | resources none → Costo por día [12.5%] |
| 88 | Informe mensual 5 |  |  |  |  | 63d → -189d | resources none → Costo por día [12.5%] |
| 89 | Informe mensual 6 |  |  |  |  | 43d → -209d | resources none → Costo por día [12.5%] |
| 90 | **1.3.2 Reuniones de Seguimiento** | 2017-08-31 A → 2017-09-07 A (+7d) |  | 83d → 78d |  | 43d → -77d |  |
| 91 | Reuniones de Seguimiento 1 | 2017-08-31 → 2017-10-02 (+32d) | 2017-08-31 → 2017-10-02 (+32d) |  |  | 125d → -149d | constraint start no earlier than 2017-08-31 → start no earlier than 2017-09-30; resources none → Costo por día [12.5%] |
| 92 | Reuniones de Seguimiento 2 |  |  |  |  |  | resources none → Costo por día [12.5%] |
| 93 | Reuniones de Seguimiento 3 | 2017-09-14 → 2017-10-02 (+18d) | 2017-09-14 → 2017-10-02 (+18d) |  |  | 115d → -149d | constraint start no earlier than 2017-09-14 → start no earlier than 2017-09-30; resources none → Costo por día [12.5%] |
| 94 | Reuniones de Seguimiento 4 | 2017-09-21 → 2017-10-02 (+11d) | 2017-09-21 → 2017-10-02 (+11d) |  |  | 110d → -149d | constraint start no earlier than 2017-09-21 → start no earlier than 2017-09-30; resources none → Costo por día [12.5%] |
| 95 | Reuniones de Seguimiento 5 | 2017-09-28 → 2017-10-02 (+4d) | 2017-09-28 → 2017-10-02 (+4d) |  |  | 105d → -149d | constraint start no earlier than 2017-09-28 → start no earlier than 2017-09-30; resources none → Costo por día [12.5%] |
| 96 | Reuniones de Seguimiento 6 |  |  |  |  | 100d → -152d | resources none → Costo por día [12.5%] |
| 97 | Reuniones de Seguimiento 7 |  |  |  |  | 95d → -157d | resources none → Costo por día [12.5%] |
| 98 | Reuniones de Seguimiento 8 |  |  |  |  | 90d → -162d | resources none → Costo por día [12.5%] |
| 99 | Reuniones de Seguimiento 9 |  |  |  |  | 85d → -167d | resources none → Costo por día [12.5%] |
| 100 | Reuniones de Seguimiento 10 |  |  |  |  | 81d → -171d | resources none → Costo por día [12.5%] |
| 101 | Reuniones de Seguimiento 11 |  |  |  |  | 76d → -176d | resources none → Costo por día [12.5%] |
| 102 | Reuniones de Seguimiento 12 |  |  |  |  | 71d → -181d | resources none → Costo por día [12.5%] |
| 103 | Reuniones de Seguimiento 13 |  |  |  |  | 66d → -186d | resources none → Costo por día [12.5%] |
| 104 | Reuniones de Seguimiento 14 |  |  |  |  | 61d → -191d | resources none → Costo por día [12.5%] |
| 105 | Reuniones de Seguimiento 15 |  |  |  |  | 56d → -196d | resources none → Costo por día [12.5%] |
| 106 | Reuniones de Seguimiento 16 |  |  |  |  | 52d → -200d | resources none → Costo por día [12.5%] |
| 107 | Reuniones de Seguimiento 17 |  |  |  |  | 47d → -205d | resources none → Costo por día [12.5%] |
| 108 | Reuniones de Seguimiento 18 |  |  |  |  | 43d → -209d | resources none → Costo por día [12.5%] |
| 111 | **2. ACTIVIDADES DE INGENIERÍA** |  |  |  | 61% → 67% | 0d → -100d |  |
| 113 | Reuniones con los involucrados y elaboración de AS IS |  |  |  |  |  | resources América [50%]; Luis [45%]; Marjorie [80%]; Rosicarmen; Usuario [70%] → América [50%]; Luis [45%]; Marjorie [80%]; Rosicarmen; Usuario [70%]; Costo por día [12.5%] |
| 114 | Revisión (Usuario - GOP - GPY - GIN) |  |  |  |  |  | resources América [50%]; Luis [45%]; Marjorie [80%]; Rosicarmen; Usuario [70%] → América [50%]; Luis [45%]; Marjorie [80%]; Rosicarmen; Usuario [70%]; Costo por día [12.5%] |
| 115 | Levantamiento de observaciones |  |  |  |  |  | resources Rosicarmen → Rosicarmen; Costo por día [12.5%] |
| 116 | Validación Final del AS IS |  |  |  |  |  | resources Marjorie [80%] → Marjorie [80%]; Costo por día [12.5%] |
| 117 | Aprobación del Relevamiento de Información |  |  |  |  |  | resources Usuario [70%]; Marjorie [80%]; Rosicarmen → Usuario [70%]; Marjorie [80%]; Rosicarmen; Costo por día [12.5%] |
| 120 | Elaboración del TO BE |  |  |  |  |  | resources Rosicarmen → Rosicarmen; Costo por día [12.5%] |
| 121 | Revisión (Usuario - GOP - GPY - GIN) |  |  |  |  |  | resources América [50%]; Luis [45%]; Marjorie [80%]; Rosicarmen; Usuario [70%] → América [50%]; Luis [45%]; Marjorie [80%]; Rosicarmen; Usuario [70%]; Costo por día [12.5%] |
| 122 | Levantamiento de observaciones |  |  |  |  |  | resources Rosicarmen → Rosicarmen; Costo por día [12.5%] |
| 123 | Validación Final del TO BE |  |  |  |  |  | resources Marjorie [80%] → Marjorie [80%]; Costo por día [12.5%] |
| 124 | Ficha Técnica del Proceso |  |  |  |  |  | resources Rosicarmen → Rosicarmen; Costo por día [12.5%] |
| 125 | Revisión de GOP |  |  |  |  |  | resources Marjorie [80%] → Marjorie [80%]; Costo por día [12.5%] |
| 126 | Levantamiento de observaciones |  |  |  |  |  | resources Rosicarmen → Rosicarmen; Costo por día [12.5%] |
| 127 | Validación Final de la Ficha Técnica de Proceso |  |  |  |  |  | resources Marjorie [80%] → Marjorie [80%]; Costo por día [12.5%] |
| 128 | Aprobación del documento |  |  |  |  |  | resources Todos → Todos; Costo por día [12.5%] |
| 130 | Elaboración del procedimiento |  |  |  |  |  | resources Emperatriz → Emperatriz; Costo por día [12.5%] |
| 131 | Revisión del procedimiento (Usuario y GOP) |  |  |  |  |  | resources Marjorie [80%] → Marjorie [80%]; Costo por día [12.5%] |
| 132 | Levantamiento de observaciones |  |  |  |  |  | resources Emperatriz → Emperatriz; Costo por día [12.5%] |
| 133 | Validación (GOP, Usuario) |  |  |  |  |  | resources Marjorie [80%]; Usuario [70%] → Marjorie [80%]; Usuario [70%]; Costo por día [12.5%] |
| 134 | Aprobación del documento |  |  |  |  |  | resources Marjorie [80%]; Usuario [70%] → Marjorie [80%]; Usuario [70%]; Costo por día [12.5%] |
| 135 | **2.3 Análisis y Diseño del Sistema** |  | 2017-09-26 → 2017-10-04 (+8d) | 89d → 94.5d | 90% → 97% | 107d → -2d |  |
| 137 | Elaboración de la Definición Funcional |  |  |  |  |  | resources Diego; Rosicarmen → Diego; Rosicarmen; Costo por día [12.5%] |
| 138 | Revisión de GIN GOP y Usuario |  |  |  |  |  | resources América [50%]; Diego; Luis [45%]; Marjorie [80%]; Rosicarmen; Usuario [70%] → América [50%]; Diego; Luis [45%]; Marjorie [80%]; Rosicarmen; Usuario [70%]; Costo por día [12.5%] |
| 139 | Levantamiento de Observaciones de la DF |  |  |  |  |  | resources Diego; Rosicarmen → Diego; Rosicarmen; Costo por día [12.5%] |
| 140 | Validación Final DF (Usuario, GOP y GIN) |  |  |  |  |  | resources América [50%]; Luis [45%]; Marjorie [80%]; Usuario [70%] → América [50%]; Luis [45%]; Marjorie [80%]; Usuario [70%]; Costo por día [12.5%] |
| 142 | Elaboración de la Definición Funcional |  |  |  |  |  | resources Diego → Diego; Costo por día [12.5%] |
| 143 | Revisión de GOP (reglas de negocio) |  |  |  |  |  | resources Marjorie [80%] → Marjorie [80%]; Costo por día [12.5%] |
| 144 | Revisión de GIN y Usuario |  |  |  |  |  | resources América [50%]; Luis [45%]; Usuario [70%] → América [50%]; Luis [45%]; Usuario [70%]; Costo por día [12.5%] |
| 145 | Levantamiento de Observaciones de la DF |  |  |  |  |  | resources Diego → Diego; Costo por día [12.5%] |
| 146 | Validación Final DF (Usuario, GOP y GIN) |  |  |  |  |  | resources Todos → Todos; Costo por día [12.5%] |
| 147 | **Documento Técnico SGD** |  | 2017-09-05 A → 2017-09-25 A (+20d) | 35d → 49d |  |  |  |
| 148 | Elaboración del DT |  |  |  |  |  | resources Diego → Diego; Costo por día [12.5%] |
| 149 | Revisión del documento |  | 2017-08-29 A → 2017-09-19 A (+21d) |  |  |  | resources Luis [45%] → Luis [45%]; Costo por día [12.5%] |
| 150 | Revisión de GIN (Arquitectura /Modelo de Datos) |  | 2017-09-01 A → 2017-09-21 A (+20d) |  |  |  | resources Diego → Diego; Costo por día [12.5%] |
| 151 | Levantamiento de observaciones |  | 2017-09-04 A → 2017-09-22 A (+18d) |  |  |  | resources Celis; Edgard Marquez; Luis [45%] → Celis; Edgard Marquez; Luis [45%]; Costo por día [12.5%] |
| 152 | Validación Final |  | 2017-09-05 A → 2017-09-25 A (+20d) |  |  |  | resources Celis; Edgard Marquez; Luis [45%]; Ronald Raico → Celis; Edgard Marquez; Luis [45%]; Ronald Raico; Costo por día [12.5%] |
| 153 | **Documento Técnico SAJU (proveedor)** |  | 2017-09-26 → 2017-10-04 (+8d) | 14d → 19.5d | 46% → 82% | 107d → -2d |  |
| 154 | Elaboración de la DT |  | 2017-09-18 A |  | 80% → 100% | 107d → none | resources Proveedor; Diego; Luis [45%] → Proveedor; Diego; Luis [45%]; Costo por día [12.5%] |
| 155 | Revisión de GIN (Arquitectura /Modelo de Datos) | 2017-09-19 A | 2017-09-20 A |  | 0% → 100% | 107d → none | resources Celis; Edgard Marquez; Luis [45%]; Ronald Raico → Celis; Edgard Marquez; Luis [45%]; Ronald Raico; Costo por día [12.5%] |
| 156 | Levantamiento de Observaciones | 2017-09-21 A | 2017-09-22 → 2017-10-02 (+10d) |  | 0% → 75% | 107d → -150.5d | resources Proveedor → Proveedor; Costo por día [12.5%] |
| 157 | Revisión 2 de GIN (Arquitectura /Modelo de Datos) | 2017-09-25 → 2017-10-02 (+7d) | 2017-09-25 → 2017-10-03 (+8d) |  |  | 107d → -150.5d | constraint none → start no earlier than 2017-09-30; resources Celis; Edgard Marquez; Luis [45%]; Ronald Raico → Celis; Edgard Marquez; Luis [45%]; Ronald Raico; Costo por día [12.5%] |
| 158 | Validación Final | 2017-09-26 → 2017-10-03 (+7d) | 2017-09-26 → 2017-10-04 (+8d) |  |  | 107d → -150.5d | constraint none → start no earlier than 2017-09-30; resources Todos → Todos; Costo por día [12.5%] |
| 159 | **2.4 Construcción** |  |  |  | 23% → 34% | 34d → -66d |  |
| 160 | **2.4.1 SGD** |  |  |  | 39% → 58% | 65d → -35d |  |
| 161 | **Iteración 1** | 2017-07-17 A → 2017-03-09 A (-130d) | 2017-09-13 → 2017-10-06 (+23d) | 41d → 146d | 83% → 89% | 116d → -24d |  |
| 162 | **A. Desarrollo** | 2017-07-17 A → 2017-03-09 A (-130d) |  | 32d → 120d |  |  |  |
| 163 | RQ 001: Consulta de Trámites |  | 2017-07-19 A → 2017-07-20 A (+1d) |  |  |  | resources none → Costo por día [12.5%] |

| ID | Task | Start | Finish | Duration | Complete | Total float | Other |
| --- | --- | --- | --- | --- | --- | --- | --- |
| 164 | RQ 002: Registrar Trámites en forma Masiva |  |  |  |  |  | resources none → Costo por día [12.5%] |
| 165 | RQ 002: Registrar Trámites en forma Masiva |  | 2017-07-21 A → 2017-07-24 A (+3d) |  |  |  | resources none → Costo por día [12.5%] |
| 166 | RQ 002: Registrar Tramites en forma Masiva | 2017-07-24 A → 2017-03-09 A (-137d) | 2017-07-26 A → 2017-03-14 A (-134d) |  |  |  | resources none → Costo por día [12.5%] |
| 167 | RQ 001: Gestionar Registro de Expedientes Judiciales (SAJU) | 2017-07-31 A → 2017-07-27 A (-4d) | 2017-08-12 A → 2017-08-11 A (-1d) |  |  |  | resources none → Costo por día [12.5%] |
| 168 | Resolucion de obtencion y despliegue de Fuentes SAJU en Desarrollo |  |  |  |  |  | resources none → Costo por día [12.5%] |
| 169 | Revisión integral y modificaciones |  |  |  |  |  | resources Diego; Luis [45%] → Diego; Luis [45%]; Costo por día [12.5%] |
| 170 | Revisión en Desarrollo 1 |  |  |  |  |  | resources Edgard Marquez; Ronald Raico → Edgard Marquez; Ronald Raico; Costo por día [12.5%] |
| 171 | Levantamiento de observaciones | 2017-08-25 A → 2017-03-09 A (-169d) | 2017-08-25 A → 2017-03-09 A (-169d) |  |  |  | resources none → Costo por día [12.5%] |
| 172 | Revisión en Desarrollo 2 |  |  |  |  |  | resources Luis [45%] → Luis [45%]; Costo por día [12.5%] |
| 173 | **B. Pruebas** | 2017-08-28 A → 2017-08-25 A (-3d) | 2017-09-06 → 2017-09-04 A (-2d) | 7d → 6d | 57% → 100% | 4.75d → none |  |
| 174 | Documentación para el pase | 2017-08-28 A → 2017-08-25 A (-3d) | 2017-08-28 A → 2017-08-25 A (-3d) |  |  |  | resources none → Costo por día [12.5%] |
| 175 | Envío y Revisión por AF Calidad (Rev 1) | 2017-08-29 A → 2017-08-28 A (-1d) | 2017-09-01 A → 2017-08-31 A (-1d) |  |  |  | resources none → Costo por día [12.5%] |
| 176 | Pruebas con el equipo AE | 2017-09-04 → 2017-09-01 A (-3d) | 2017-09-04 → 2017-09-01 A (-3d) |  | 0% → 100% | 4.75d → none | resources none → Costo por día [12.5%] |
| 177 | Pruebas de Aceptación (usuario) | 2017-09-05 → 2017-09-01 A (-4d) | 2017-09-06 → 2017-09-04 A (-2d) |  | 0% → 100% | 4.75d → none | resources none → Costo por día [12.5%] |
| 178 | C. Producción | 2017-09-07 → 2017-10-02 (+25d) | 2017-09-07 → 2017-10-02 (+25d) |  |  | 116d → -153d | constraint none → start no earlier than 2017-09-30 |
| 179 | D. Seguimiento | 2017-09-08 → 2017-10-03 (+25d) | 2017-09-13 → 2017-10-06 (+23d) |  |  | 116d → -153d | constraint none → start no earlier than 2017-09-30 |
| 180 | **Iteración 2** |  |  |  | 13% → 65% | 89d → -11d |  |
| 181 | **A. Desarrollo** |  |  |  | 19% → 94% | 99d → -1d |  |
| 182 | RQ 003: Gestionar Registro de Notificaciones - cédulas (importar) | 2017-09-07 A → 2017-08-09 A (-29d) | 2017-10-03 → 2017-09-05 A (-28d) |  | 25% → 100% | 65d → none | resources none → Costo por día [12.5%] |
| 183 | RQ 003: Gestionar Registro de Notificaciones - cédulas (asignar) | 2017-03-09 A | 2017-03-09 A |  | 0% → 100% | 244d → none | resources none → Costo por día [12.5%] |
| 184 | RQ 003: Gestionar Registro de Notificaciones - cédulas (recepcionar y atender) | 2017-03-09 A | 2017-03-09 A |  | 0% → 100% | 244d → none | resources none → Costo por día [12.5%] |
| 185 | RQ 003: Gestionar Registro de Notificaciones - cédulas (escritor) | 2017-03-09 A | 2017-03-09 A |  | 0% → 100% | 244d → none | resources none → Costo por día [12.5%] |
| 186 | Revisión en Desarrollo | 2017-10-04 A |  |  | 0% → 70% | 65d → -187d | resources none → Costo por día [12.5%] |
| 187 | Levantamiento de observaciones |  |  |  |  | 65d → -187d | resources none → Costo por día [12.5%] |
| 189 | Documentación para el pase |  |  |  |  | 65d → -187d | resources none → Costo por día [12.5%] |
| 190 | Envío y Revisión por AF Calidad (Rev 1) |  |  |  |  | 65d → -187d | resources none → Costo por día [12.5%] |
| 191 | Levantamiento de Observaciones |  |  |  |  | 65d → -187d | resources none → Costo por día [12.5%] |
| 192 | Pruebas con el equipo AE |  |  |  |  | 94d → -158d | resources none → Costo por día [12.5%] |
| 193 | Pruebas de Aceptación (usuario) |  |  |  |  | 65d → -187d | resources none → Costo por día [12.5%] |
| 198 | Rq Atención |  |  |  |  | 65d → -187d | resources none → Costo por día [12.5%] |
| 199 | Revisión en Desarrollo |  |  |  |  | 65d → -187d | resources none → Costo por día [12.5%] |
| 200 | Levantamiento de observaciones |  |  |  |  | 65d → -187d | resources none → Costo por día [12.5%] |
| 202 | Documentación para el pase |  |  |  |  | 65d → -187d | resources none → Costo por día [12.5%] |
| 203 | Envío y Revisión por AF Calidad (Rev 1) |  |  |  |  | 65d → -187d | resources none → Costo por día [12.5%] |
| 204 | Pruebas con el equipo AE |  |  |  |  | 71d → -181d | resources none → Costo por día [12.5%] |
| 205 | Pruebas de Aceptación (usuario) |  |  |  |  | 65d → -187d | resources none → Costo por día [12.5%] |
| 211 | RQ 001 al 10 |  |  |  |  | 34d → -218d | resources none → Costo por día [12.5%] |
| 212 | Revisión en Desarrollo |  |  |  |  | 34d → -218d | resources none → Costo por día [12.5%] |
| 213 | Levantamiento de observaciones |  |  |  |  | 34d → -218d | resources none → Costo por día [12.5%] |
| 215 | Documentación para el pase |  |  |  |  | 34d → -218d | resources none → Costo por día [12.5%] |
| 216 | Envío y Revisión por AF Calidad (Rev 1) |  |  |  |  | 34d → -218d | resources none → Costo por día [12.5%] |
| 217 | Levantamiento de Observaciones |  |  |  |  | 34d → -218d | resources none → Costo por día [12.5%] |
| 218 | Pruebas con el equipo AE |  |  |  |  | 71d → -181d | resources none → Costo por día [12.5%] |
| 219 | Pruebas de Aceptación (usuario) |  |  |  |  | 34d → -218d | resources none → Costo por día [12.5%] |
| 224 | RQ 10 al 20 |  |  |  |  | 34d → -218d | resources none → Costo por día [12.5%] |
| 225 | Revisión en Desarrollo |  |  |  |  | 34d → -218d | resources none → Costo por día [12.5%] |
| 226 | Levantamiento de observaciones |  |  |  |  | 34d → -218d | resources none → Costo por día [12.5%] |
| 228 | Documentación para el pase |  |  |  |  | 34d → -218d | resources none → Costo por día [12.5%] |
| 229 | Envío y Revisión por AF Calidad (Rev 1) |  |  |  |  | 34d → -218d | resources none → Costo por día [12.5%] |
| 230 | Levantamiento de Observaciones |  |  |  |  | 34d → -218d | resources none → Costo por día [12.5%] |
| 231 | Pruebas con el equipo AE |  |  |  |  | 39d → -213d | resources none → Costo por día [12.5%] |
| 232 | Pruebas de Aceptación (usuario) |  |  |  |  | 34d → -218d | resources none → Costo por día [12.5%] |
| 235 | **2.5 Actividades complementarias** | 2017-06-20 A → 2017-03-09 A (-103d) |  | 175d → 245d |  | 0d → -114d |  |
| 236 | **2.5.1 Dimensionamiento** | 2017-06-20 A → 2017-03-09 A (-103d) |  | 61d → 131d |  |  |  |
| 237 | Levantamiento de información |  |  |  |  |  | resources none → Costo por día [12.5%] |
| 238 | Informe final | 2017-07-19 A → 2017-03-09 A (-132d) | 2017-07-24 A → 2017-03-14 A (-132d) |  |  |  | resources none → Costo por día [12.5%] |
| 239 | Aprobación con GOP y Usuario |  |  |  |  |  | resources none → Costo por día [12.5%] |
| 241 | Elaboración del Manual de Usuario |  |  |  |  | 38d → -214d | resources none → Costo por día [12.5%] |
| 242 | Aprobación del Manual |  |  |  |  | 38d → -214d | resources none → Costo por día [12.5%] |
| 245 | Elaborar documento de transferencia |  |  |  |  | 0d → -252d | resources none → Costo por día [12.5%] |
| 246 | Envío de documento formal |  |  |  |  | 0d → -252d | resources none → Costo por día [12.5%] |

## Version 3 (data date 2017-09-30, saved 2017-10-27, file [AE SAJU] Cronograma SAJU 29.09.17.mpp)

Last finish stays 2018-02-27.

Changed:

| ID | Task | Start | Finish | Duration | Total float | Other |
| --- | --- | --- | --- | --- | --- | --- |
| 1 | **Ejecución de AE SAJU** | 2017-02-27 → 2017-03-09 A (+10d) | 2017-02-27 → 2018-02-27 (+365d) | 0d → 245d? | none → 0d | baseline finish 2018-01-01 → 2018-02-27 |
| 2 | **1. ACTIVIDADES DE GESTIÓN** |  |  |  | -95d → 17d | baseline finish 2018-01-01 → 2018-02-02 |
| 5 | Elaboración del documento |  |  |  |  | resources América [50%]; Costo por día [12.5%] → América [50%] |
| 6 | Revisión del documento |  |  |  |  | resources Luis [45%]; Marjorie [80%]; Usuario [70%]; Costo por día [12.5%] → Luis [45%]; Marjorie [80%]; Usuario [70%] |
| 7 | Levantamiento de observaciones |  |  |  |  | resources América [50%]; Costo por día [12.5%] → América [50%] |
| 8 | Validación Final |  |  |  |  | resources Luis [45%]; Marjorie [80%]; Usuario [70%]; Costo por día [12.5%] → Luis [45%]; Marjorie [80%]; Usuario [70%] |
| 9 | Aprobación del documento |  |  |  |  | resources Todos; Costo por día [12.5%] → Todos |
| 10 | **1.2 Ejecución** |  |  |  | -95d → 17d | baseline finish 2018-01-01 → 2018-02-02 |
| 11 | **1.2.1 Gestión de las Adquisiciones** |  |  |  | -95d → 17d | baseline finish 2018-01-01 → 2018-02-02 |
| 12 | **1.2.1.1 Servicios de Terceros** |  |  |  | -95d → 17d | baseline finish 2018-01-01 → 2018-02-02 |
| 15 | Rosicarmen Alcazaba (procesos) |  |  |  |  | resources Costo por día [12.5%] → none |
| 16 | Saúl Vásquez (sistemas) |  |  |  |  | resources Costo por día [12.5%] → none |
| 17 | Diego Condezo (sistemas) |  |  |  |  | resources Costo por día [12.5%] → none |
| 18 | Diego Condezo (sistemas) |  |  |  |  | resources Costo por día [12.5%] → none |
| 19 | Diego Condezo (sistemas) |  |  |  | -149d → 103d | resources Costo por día [12.5%] → none; baseline start 2017-09-25 → 2017-10-02; baseline finish 2017-09-25 → 2017-10-02 |
| 20 | Emperatriz Rosario (procesos) |  |  |  |  | resources Costo por día [12.5%] → none |
| 21 | Jose Luis (programador) |  |  |  |  | resources Costo por día [12.5%] → none |
| 22 | Jose Luis (programador) |  |  |  |  | resources Costo por día [12.5%] → none |
| 23 | Jose Luis (programador) |  |  |  |  | resources Costo por día [12.5%] → none |
| 24 | Jose Luis (programador) |  |  |  | -165d → 87d | resources Costo por día [12.5%] → none |
| 25 | **B. Persona Jurídica** |  | 2017-09-06 A → 2017-08-25 A (-12d) | 65d → 58d |  |  |
| 27 | Elaboración de TDR |  |  |  |  | resources Costo por día [12.5%] → none |
| 28 | Aprobación de los TDR |  |  |  |  | resources Costo por día [12.5%] → none |
| 29 | Elaboración y Firma de Bases |  |  |  |  | resources Costo por día [12.5%] → none |
| 30 | Publicación de convocatoria |  |  |  |  | resources Costo por día [12.5%] → none |
| 31 | Registro de participantes |  |  |  |  | resources Costo por día [12.5%] → none |
| 32 | Consultas y observaciones |  |  |  |  | resources Costo por día [12.5%] → none |
| 33 | Absolución de consultas y observaciones |  |  |  |  | resources Costo por día [12.5%] → none |
| 34 | Integración de Bases |  |  |  |  | resources Costo por día [12.5%] → none |
| 35 | Presentación de ofertas |  |  |  |  | resources Costo por día [12.5%] → none |
| 36 | Evaluación y calificación |  |  |  |  | resources Costo por día [12.5%] → none |
| 37 | Otorgamiento de la nueva Pro |  |  |  |  | resources Costo por día [12.5%] → none |
| 38 | **PROCESO DE CONTRATACIÓN (SAJU) -2da** |  | 2017-09-06 A → 2017-08-25 A (-12d) | 31d → 24d |  |  |
| 39 | Elaboración y Firma de Bases |  |  |  |  | resources Costo por día [12.5%] → none |
| 40 | Publicación de convocatoria |  |  |  |  | resources Costo por día [12.5%] → none |
| 41 | Registro de participantes |  |  |  |  | resources Costo por día [12.5%] → none |
| 42 | Consultas y observaciones |  |  |  |  | resources Costo por día [12.5%] → none |
| 43 | Absolución de consultas y observaciones |  |  |  |  | resources Costo por día [12.5%] → none |
| 44 | Integración de Bases |  |  |  |  | resources Costo por día [12.5%] → none |
| 45 | Presentación de ofertas |  |  |  |  | resources Costo por día [12.5%] → none |
| 46 | Evaluación y calificación |  |  |  |  | resources Costo por día [12.5%] → none |
| 47 | Otorgamiento de la nueva Pro |  |  |  |  | resources Costo por día [12.5%] → none |
| 48 | Firma de Contrato | 2017-08-25 A → 2017-08-16 A (-9d) | 2017-09-06 A → 2017-08-25 A (-12d) |  |  | resources Costo por día [12.5%] → none |
| 50 | Presentación de equipos |  |  |  |  | resources Costo por día [12.5%] → none |
| 51 | Capacitación en Procesos |  |  |  |  | resources Costo por día [12.5%] → none |
| 52 | Capacitación en la nueva arquitectura |  |  |  |  | resources Costo por día [12.5%] → none |
| 53 | Pasantía con el área usuaria |  |  |  |  | resources Costo por día [12.5%] → none |
| 54 | **1.2.1.1.3 Informes** |  |  |  | -95d → 17d | baseline finish 2018-01-01 → 2018-02-02 |
| 56 | Rosicarmen Alcazaba (procesos) |  |  |  |  | resources Costo por día [12.5%] → none |
| 57 | Rosicarmen Alcazaba (procesos) |  |  |  |  | resources Costo por día [12.5%] → none |
| 58 | Rosicarmen Alcazaba (procesos) |  |  |  |  | resources Costo por día [12.5%] → none |
| 59 | Saúl Vásquez (sistemas) |  |  |  |  | resources Costo por día [12.5%] → none |
| 60 | Diego Condezo (sistemas) |  |  |  |  | resources Costo por día [12.5%] → none |
| 61 | Diego Condezo (sistemas) |  |  |  |  | resources Costo por día [12.5%] → none |
| 62 | Diego Condezo (sistemas) |  |  |  |  | resources Costo por día [12.5%] → none |
| 63 | Diego Condezo (sistemas) |  |  |  |  | resources Costo por día [12.5%] → none |
| 64 | Diego Condezo (sistemas) |  |  |  |  | resources Costo por día [12.5%] → none |
| 65 | Diego Condezo (sistemas) |  |  |  | -149d → 103d | resources Costo por día [12.5%] → none; baseline start 2017-09-26 → 2017-10-02; baseline finish 2017-09-26 → 2017-10-02 |
| 66 | Diego Condezo (sistemas) |  |  |  | -167d → 85d | resources Costo por día [12.5%] → none |
| 67 | Diego Condezo (sistemas) |  |  |  | -188d → 64d | resources Costo por día [12.5%] → none |
| 68 | Emperatriz Rosario (procesos) |  |  |  |  | resources Costo por día [12.5%] → none |
| 69 | Emperatriz Rosario (procesos) |  |  |  |  | resources Costo por día [12.5%] → none |
| 70 | Emperatriz Rosario (procesos) |  |  |  |  | resources Costo por día [12.5%] → none |
| 71 | Jose Luis (programador) |  |  |  |  | resources Costo por día [12.5%] → none |
| 72 | Jose Luis (programador) |  |  |  |  | resources Costo por día [12.5%] → none |
| 73 | Jose Luis (programador) |  |  |  |  | resources Costo por día [12.5%] → none |
| 74 | Jose Luis (programador) |  |  |  | -149d → 103d | resources Costo por día [12.5%] → none; baseline start 2017-09-25 → 2017-10-02; baseline finish 2017-09-25 → 2017-10-02 |
| 75 | Jose Luis (programador) |  |  |  | -165d → 87d | resources Costo por día [12.5%] → none |
| 76 | Jose Luis (programador) |  |  |  | -187d → 65d | resources Costo por día [12.5%] → none |
| 77 | **B. Persona Jurídica** |  |  |  | -104d → 17d | baseline start 2017-09-08 → 2017-09-06; baseline finish 2018-01-01 → 2018-02-02 |

| ID | Task | Finish | Duration | Total float | Other |
| --- | --- | --- | --- | --- | --- |
| 78 | Entregable 1 |  |  |  | resources Costo por día [12.5%] → none; baseline start 2017-09-08 → 2017-09-06; baseline finish 2017-09-08 → 2017-09-06 |
| 79 | Entregable 2 |  |  | -149d → 103d | resources Costo por día [12.5%] → none; baseline start 2017-09-28 → 2017-10-02; baseline finish 2017-09-28 → 2017-10-02 |
| 80 | Entregable 3 |  |  | -187d → 65d | resources Costo por día [12.5%] → none; baseline start 2017-11-08 → 2017-11-24; baseline finish 2017-11-08 → 2017-11-24 |
| 81 | Entregable 4 |  |  | -235d → 17d | resources Costo por día [12.5%] → none; baseline start 2018-01-01 → 2018-02-02; baseline finish 2018-01-01 → 2018-02-02 |
| 84 | Informe mensual 1 |  |  |  | resources Costo por día [12.5%] → none |
| 85 | Informe mensual 2 |  |  | -149d → 103d | resources Costo por día [12.5%] → none; baseline start 2017-08-28 → 2017-10-02; baseline finish 2017-08-28 → 2017-10-02 |
| 86 | Informe mensual 3 |  |  | -149d → 103d | resources Costo por día [12.5%] → none; baseline start 2017-09-28 → 2017-10-02; baseline finish 2017-09-28 → 2017-10-02 |
| 87 | Informe mensual 4 |  |  | -169d → 83d | resources Costo por día [12.5%] → none |
| 88 | Informe mensual 5 |  |  | -189d → 63d | resources Costo por día [12.5%] → none |
| 89 | Informe mensual 6 |  |  | -209d → 43d | resources Costo por día [12.5%] → none |
| 90 | **1.3.2 Reuniones de Seguimiento** |  |  | -77d → 43d | baseline start 2017-08-31 → 2017-09-07 |
| 91 | Reuniones de Seguimiento 1 |  |  | -149d → 103d | resources Costo por día [12.5%] → none; baseline start 2017-08-31 → 2017-10-02; baseline finish 2017-08-31 → 2017-10-02 |
| 92 | Reuniones de Seguimiento 2 |  |  |  | resources Costo por día [12.5%] → none |
| 93 | Reuniones de Seguimiento 3 |  |  | -149d → 103d | resources Costo por día [12.5%] → none; baseline start 2017-09-14 → 2017-10-02; baseline finish 2017-09-14 → 2017-10-02 |
| 94 | Reuniones de Seguimiento 4 |  |  | -149d → 103d | resources Costo por día [12.5%] → none; baseline start 2017-09-21 → 2017-10-02; baseline finish 2017-09-21 → 2017-10-02 |
| 95 | Reuniones de Seguimiento 5 |  |  | -149d → 103d | resources Costo por día [12.5%] → none; baseline start 2017-09-28 → 2017-10-02; baseline finish 2017-09-28 → 2017-10-02 |
| 96 | Reuniones de Seguimiento 6 |  |  | -152d → 100d | resources Costo por día [12.5%] → none |
| 97 | Reuniones de Seguimiento 7 |  |  | -157d → 95d | resources Costo por día [12.5%] → none |
| 98 | Reuniones de Seguimiento 8 |  |  | -162d → 90d | resources Costo por día [12.5%] → none |
| 99 | Reuniones de Seguimiento 9 |  |  | -167d → 85d | resources Costo por día [12.5%] → none |
| 100 | Reuniones de Seguimiento 10 |  |  | -171d → 81d | resources Costo por día [12.5%] → none |
| 101 | Reuniones de Seguimiento 11 |  |  | -176d → 76d | resources Costo por día [12.5%] → none |
| 102 | Reuniones de Seguimiento 12 |  |  | -181d → 71d | resources Costo por día [12.5%] → none |
| 103 | Reuniones de Seguimiento 13 |  |  | -186d → 66d | resources Costo por día [12.5%] → none |
| 104 | Reuniones de Seguimiento 14 |  |  | -191d → 61d | resources Costo por día [12.5%] → none |
| 105 | Reuniones de Seguimiento 15 |  |  | -196d → 56d | resources Costo por día [12.5%] → none |
| 106 | Reuniones de Seguimiento 16 |  |  | -200d → 52d | resources Costo por día [12.5%] → none |
| 107 | Reuniones de Seguimiento 17 |  |  | -205d → 47d | resources Costo por día [12.5%] → none |
| 108 | Reuniones de Seguimiento 18 |  |  | -209d → 43d | resources Costo por día [12.5%] → none |
| 111 | **2. ACTIVIDADES DE INGENIERÍA** |  |  | -100d → 0d | baseline finish 2017-03-09 → 2018-02-27 |
| 113 | Reuniones con los involucrados y elaboración de AS IS |  |  |  | resources América [50%]; Luis [45%]; Marjorie [80%]; Rosicarmen; Usuario [70%]; Costo por día [12.5%] → América [50%]; Luis [45%]; Marjorie [80%]; Rosicarmen; Usuario [70%] |
| 114 | Revisión (Usuario - GOP - GPY - GIN) |  |  |  | resources América [50%]; Luis [45%]; Marjorie [80%]; Rosicarmen; Usuario [70%]; Costo por día [12.5%] → América [50%]; Luis [45%]; Marjorie [80%]; Rosicarmen; Usuario [70%] |
| 115 | Levantamiento de observaciones |  |  |  | resources Rosicarmen; Costo por día [12.5%] → Rosicarmen |
| 116 | Validación Final del AS IS |  |  |  | resources Marjorie [80%]; Costo por día [12.5%] → Marjorie [80%] |
| 117 | Aprobación del Relevamiento de Información |  |  |  | resources Usuario [70%]; Marjorie [80%]; Rosicarmen; Costo por día [12.5%] → Usuario [70%]; Marjorie [80%]; Rosicarmen |
| 118 | **2.2 Modelado de Procesos** |  |  |  | baseline finish 2017-08-28 → 2017-09-15 |
| 120 | Elaboración del TO BE |  |  |  | resources Rosicarmen; Costo por día [12.5%] → Rosicarmen |
| 121 | Revisión (Usuario - GOP - GPY - GIN) |  |  |  | resources América [50%]; Luis [45%]; Marjorie [80%]; Rosicarmen; Usuario [70%]; Costo por día [12.5%] → América [50%]; Luis [45%]; Marjorie [80%]; Rosicarmen; Usuario [70%] |
| 122 | Levantamiento de observaciones |  |  |  | resources Rosicarmen; Costo por día [12.5%] → Rosicarmen |
| 123 | Validación Final del TO BE |  |  |  | resources Marjorie [80%]; Costo por día [12.5%] → Marjorie [80%] |
| 124 | Ficha Técnica del Proceso |  |  |  | resources Rosicarmen; Costo por día [12.5%] → Rosicarmen |
| 125 | Revisión de GOP |  |  |  | resources Marjorie [80%]; Costo por día [12.5%] → Marjorie [80%] |
| 126 | Levantamiento de observaciones |  |  |  | resources Rosicarmen; Costo por día [12.5%] → Rosicarmen |
| 127 | Validación Final de la Ficha Técnica de Proceso |  |  |  | resources Marjorie [80%]; Costo por día [12.5%] → Marjorie [80%] |
| 128 | Aprobación del documento |  |  |  | resources Todos; Costo por día [12.5%] → Todos |
| 129 | **2.2.2 Procedimiento** |  |  |  | baseline finish 2017-08-28 → 2017-09-15 |
| 130 | Elaboración del procedimiento |  |  |  | resources Emperatriz; Costo por día [12.5%] → Emperatriz |
| 131 | Revisión del procedimiento (Usuario y GOP) |  |  |  | resources Marjorie [80%]; Costo por día [12.5%] → Marjorie [80%] |
| 132 | Levantamiento de observaciones |  |  |  | resources Emperatriz; Costo por día [12.5%] → Emperatriz |
| 133 | Validación (GOP, Usuario) |  |  |  | resources Marjorie [80%]; Usuario [70%]; Costo por día [12.5%] → Marjorie [80%]; Usuario [70%]; baseline finish 2017-08-25 → 2017-09-14 |
| 134 | Aprobación del documento |  |  |  | resources Marjorie [80%]; Usuario [70%]; Costo por día [12.5%] → Marjorie [80%]; Usuario [70%]; baseline start 2017-08-28 → 2017-09-15; baseline finish 2017-08-28 → 2017-09-15 |
| 135 | **2.3 Análisis y Diseño del Sistema** |  |  | -2d → 101.5d | baseline finish 2017-08-29 → 2017-10-04 |
| 137 | Elaboración de la Definición Funcional |  |  |  | resources Diego; Rosicarmen; Costo por día [12.5%] → Diego; Rosicarmen |
| 138 | Revisión de GIN GOP y Usuario |  |  |  | resources América [50%]; Diego; Luis [45%]; Marjorie [80%]; Rosicarmen; Usuario [70%]; Costo por día [12.5%] → América [50%]; Diego; Luis [45%]; Marjorie [80%]; Rosicarmen; Usuario [70%] |
| 139 | Levantamiento de Observaciones de la DF |  |  |  | resources Diego; Rosicarmen; Costo por día [12.5%] → Diego; Rosicarmen |
| 140 | Validación Final DF (Usuario, GOP y GIN) |  |  |  | resources América [50%]; Luis [45%]; Marjorie [80%]; Usuario [70%]; Costo por día [12.5%] → América [50%]; Luis [45%]; Marjorie [80%]; Usuario [70%] |
| 142 | Elaboración de la Definición Funcional |  |  |  | resources Diego; Costo por día [12.5%] → Diego |
| 143 | Revisión de GOP (reglas de negocio) |  |  |  | resources Marjorie [80%]; Costo por día [12.5%] → Marjorie [80%] |
| 144 | Revisión de GIN y Usuario |  |  |  | resources América [50%]; Luis [45%]; Usuario [70%]; Costo por día [12.5%] → América [50%]; Luis [45%]; Usuario [70%] |
| 145 | Levantamiento de Observaciones de la DF |  |  |  | resources Diego; Costo por día [12.5%] → Diego |
| 146 | Validación Final DF (Usuario, GOP y GIN) |  |  |  | resources Todos; Costo por día [12.5%] → Todos |
| 147 | **Documento Técnico SGD** | 2017-09-25 A → 2017-09-05 A (-20d) | 49d → 35d |  | baseline finish 2017-08-07 → 2017-09-05 |
| 148 | Elaboración del DT |  |  |  | resources Diego; Costo por día [12.5%] → Diego; baseline finish 2017-07-26 → 2017-08-21 |
| 149 | Revisión del documento | 2017-09-19 A → 2017-08-29 A (-21d) |  |  | resources Luis [45%]; Costo por día [12.5%] → Luis [45%]; baseline start 2017-07-26 → 2017-08-02; baseline finish 2017-07-31 → 2017-08-29 |
| 150 | Revisión de GIN (Arquitectura /Modelo de Datos) | 2017-09-21 A → 2017-09-01 A (-20d) |  |  | resources Diego; Costo por día [12.5%] → Diego; baseline start 2017-07-31 → 2017-08-31; baseline finish 2017-08-02 → 2017-09-01 |
| 151 | Levantamiento de observaciones | 2017-09-22 A → 2017-09-04 A (-18d) |  |  | resources Celis; Edgard Marquez; Luis [45%]; Costo por día [12.5%] → Celis; Edgard Marquez; Luis [45%]; baseline start 2017-08-02 → 2017-09-04; baseline finish 2017-08-04 → 2017-09-04 |
| 152 | Validación Final | 2017-09-25 A → 2017-09-05 A (-20d) |  |  | resources Celis; Edgard Marquez; Luis [45%]; Ronald Raico; Costo por día [12.5%] → Celis; Edgard Marquez; Luis [45%]; Ronald Raico; baseline start 2017-08-04 → 2017-09-05; baseline finish 2017-08-07 → 2017-09-05 |
| 153 | **Documento Técnico SAJU (proveedor)** |  |  | -2d → 101.5d | baseline start 2017-07-26 → 2017-09-07; baseline finish 2017-08-29 → 2017-10-04 |
| 154 | Elaboración de la DT |  |  |  | resources Proveedor; Diego; Luis [45%]; Costo por día [12.5%] → Proveedor; Diego; Luis [45%]; baseline start 2017-07-26 → 2017-09-07; baseline finish 2017-08-18 → 2017-09-18 |
| 155 | Revisión de GIN (Arquitectura /Modelo de Datos) |  |  |  | resources Celis; Edgard Marquez; Luis [45%]; Ronald Raico; Costo por día [12.5%] → Celis; Edgard Marquez; Luis [45%]; Ronald Raico; baseline start 2017-08-18 → 2017-09-19; baseline finish 2017-08-23 → 2017-09-20 |

| ID | Task | Start | Finish | Duration | Total float | Other |
| --- | --- | --- | --- | --- | --- | --- |
| 156 | Levantamiento de Observaciones |  |  |  | -150.5d → 101.5d | resources Proveedor; Costo por día [12.5%] → Proveedor; baseline start 2017-08-23 → 2017-09-21; baseline finish 2017-08-25 → 2017-10-02 |
| 157 | Revisión 2 de GIN (Arquitectura /Modelo de Datos) |  |  |  | -150.5d → 101.5d | resources Celis; Edgard Marquez; Luis [45%]; Ronald Raico; Costo por día [12.5%] → Celis; Edgard Marquez; Luis [45%]; Ronald Raico; baseline start 2017-08-25 → 2017-10-02; baseline finish 2017-08-28 → 2017-10-03 |
| 158 | Validación Final |  |  |  | -150.5d → 101.5d | resources Todos; Costo por día [12.5%] → Todos; baseline start 2017-08-28 → 2017-10-03; baseline finish 2017-08-29 → 2017-10-04 |
| 159 | **2.4 Construcción** |  |  |  | -66d → 34d | baseline start 2017-07-17 → 2017-03-09 |
| 160 | **2.4.1 SGD** |  |  |  | -35d → 65d | baseline start 2017-07-17 → 2017-03-09; baseline finish 2017-11-17 → 2017-11-24 |
| 161 | **Iteración 1** | 2017-03-09 A → 2017-07-17 A (+130d) |  | 146d → 58d | -24d → 99d | baseline finish 2017-09-13 → 2017-10-06 |
| 162 | **A. Desarrollo** | 2017-03-09 A → 2017-07-17 A (+130d) |  | 120d → 32d |  | baseline finish 2017-08-25 → 2017-08-31 |
| 163 | RQ 001: Consulta de Trámites |  | 2017-07-20 A → 2017-07-19 A (-1d) |  |  | resources Costo por día [12.5%] → none |
| 164 | RQ 002: Registrar Trámites en forma Masiva |  |  |  |  | resources Costo por día [12.5%] → none |
| 165 | RQ 002: Registrar Trámites en forma Masiva |  | 2017-07-24 A → 2017-07-21 A (-3d) |  |  | resources Costo por día [12.5%] → none |
| 166 | RQ 002: Registrar Tramites en forma Masiva | 2017-03-09 A → 2017-07-24 A (+137d) | 2017-03-14 A → 2017-07-26 A (+134d) |  |  | resources Costo por día [12.5%] → none |
| 167 | RQ 001: Gestionar Registro de Expedientes Judiciales (SAJU) | 2017-07-27 A → 2017-07-31 A (+4d) | 2017-08-11 A → 2017-08-12 A (+1d) |  |  | resources Costo por día [12.5%] → none |
| 168 | Resolucion de obtencion y despliegue de Fuentes SAJU en Desarrollo |  |  |  |  | resources Costo por día [12.5%] → none; baseline start none → 2017-08-21; baseline finish none → 2017-08-31 |
| 169 | Revisión integral y modificaciones |  |  |  |  | resources Diego; Luis [45%]; Costo por día [12.5%] → Diego; Luis [45%] |
| 170 | Revisión en Desarrollo 1 |  |  |  |  | resources Edgard Marquez; Ronald Raico; Costo por día [12.5%] → Edgard Marquez; Ronald Raico |
| 171 | Levantamiento de observaciones | 2017-03-09 A → 2017-08-25 A (+169d) | 2017-03-09 A → 2017-08-25 A (+169d) |  |  | resources Costo por día [12.5%] → none |
| 172 | Revisión en Desarrollo 2 |  |  |  |  | resources Luis [45%]; Costo por día [12.5%] → Luis [45%]; baseline start none → 2017-08-28; baseline finish none → 2017-08-29 |
| 173 | **B. Pruebas** | 2017-08-25 A → 2017-08-28 A (+3d) | 2017-09-04 A → 2017-09-06 A (+2d) | 6d → 7d |  |  |
| 174 | Documentación para el pase | 2017-08-25 A → 2017-08-28 A (+3d) | 2017-08-25 A → 2017-08-28 A (+3d) |  |  | resources Costo por día [12.5%] → none |
| 175 | Envío y Revisión por AF Calidad (Rev 1) | 2017-08-28 A → 2017-08-29 A (+1d) | 2017-08-31 A → 2017-09-01 A (+1d) |  |  | resources Costo por día [12.5%] → none |
| 176 | Pruebas con el equipo AE | 2017-09-01 A → 2017-09-04 A (+3d) | 2017-09-01 A → 2017-09-04 A (+3d) |  |  | resources Costo por día [12.5%] → none |
| 177 | Pruebas de Aceptación (usuario) | 2017-09-01 A → 2017-09-05 A (+4d) | 2017-09-04 A → 2017-09-06 A (+2d) |  |  | resources Costo por día [12.5%] → none |
| 178 | C. Producción |  |  |  | -153d → 99d | baseline start 2017-09-07 → 2017-10-02; baseline finish 2017-09-07 → 2017-10-02 |
| 179 | D. Seguimiento |  |  |  | -153d → 99d | baseline start 2017-09-08 → 2017-10-03; baseline finish 2017-09-13 → 2017-10-06 |
| 180 | **Iteración 2** |  |  |  | -11d → 89d | baseline start 2017-09-07 → 2017-03-09 |
| 181 | **A. Desarrollo** |  |  |  | -1d → 65d | baseline start 2017-09-07 → 2017-03-09 |
| 182 | RQ 003: Gestionar Registro de Notificaciones - cédulas (importar) | 2017-08-09 A → 2017-09-07 A (+29d) | 2017-09-05 A → 2017-10-03 A (+28d) |  |  | resources Costo por día [12.5%] → none |
| 183 | RQ 003: Gestionar Registro de Notificaciones - cédulas (asignar) |  |  |  |  | resources Costo por día [12.5%] → none; baseline start none → 2017-03-09; baseline finish none → 2017-03-09 |
| 184 | RQ 003: Gestionar Registro de Notificaciones - cédulas (recepcionar y atender) |  |  |  |  | resources Costo por día [12.5%] → none; baseline start none → 2017-03-09; baseline finish none → 2017-03-09 |
| 185 | RQ 003: Gestionar Registro de Notificaciones - cédulas (escritor) |  |  |  |  | resources Costo por día [12.5%] → none; baseline start none → 2017-03-09; baseline finish none → 2017-03-09 |
| 186 | Revisión en Desarrollo |  |  |  | -187d → 65d | resources Costo por día [12.5%] → none |
| 187 | Levantamiento de observaciones |  |  |  | -187d → 65d | resources Costo por día [12.5%] → none |
| 189 | Documentación para el pase |  |  |  | -187d → 65d | resources Costo por día [12.5%] → none |
| 190 | Envío y Revisión por AF Calidad (Rev 1) |  |  |  | -187d → 65d | resources Costo por día [12.5%] → none |
| 191 | Levantamiento de Observaciones |  |  |  | -187d → 65d | resources Costo por día [12.5%] → none |
| 192 | Pruebas con el equipo AE |  |  |  | -158d → 94d | resources Costo por día [12.5%] → none |
| 193 | Pruebas de Aceptación (usuario) |  |  |  | -187d → 65d | resources Costo por día [12.5%] → none |
| 196 | **Iteración 3** |  |  |  | -187d → 65d | baseline finish 2017-11-17 → 2017-11-24 |
| 197 | **A. Desarrollo** |  |  |  | -187d → 65d | baseline finish 2017-11-02 → 2017-11-09 |
| 198 | Rq Atención |  |  |  | -187d → 65d | resources Costo por día [12.5%] → none; baseline finish 2017-10-27 → 2017-11-06 |
| 199 | Revisión en Desarrollo |  |  |  | -187d → 65d | resources Costo por día [12.5%] → none; baseline start 2017-10-30 → 2017-11-07; baseline finish 2017-10-31 → 2017-11-08 |
| 200 | Levantamiento de observaciones |  |  |  | -187d → 65d | resources Costo por día [12.5%] → none; baseline start 2017-11-02 → 2017-11-09; baseline finish 2017-11-02 → 2017-11-09 |
| 201 | **B. Pruebas** |  |  |  | -187d → 65d | baseline start 2017-11-03 → 2017-11-10; baseline finish 2017-11-10 → 2017-11-17 |
| 202 | Documentación para el pase |  |  |  | -187d → 65d | resources Costo por día [12.5%] → none; baseline start 2017-11-03 → 2017-11-10; baseline finish 2017-11-03 → 2017-11-10 |
| 203 | Envío y Revisión por AF Calidad (Rev 1) |  |  |  | -187d → 65d | resources Costo por día [12.5%] → none; baseline start 2017-11-06 → 2017-11-13; baseline finish 2017-11-08 → 2017-11-15 |
| 204 | Pruebas con el equipo AE |  |  |  | -181d → 71d | resources Costo por día [12.5%] → none; baseline start 2017-11-09 → 2017-11-16; baseline finish 2017-11-09 → 2017-11-16 |
| 205 | Pruebas de Aceptación (usuario) |  |  |  | -187d → 65d | resources Costo por día [12.5%] → none; baseline start 2017-11-09 → 2017-11-16; baseline finish 2017-11-10 → 2017-11-17 |
| 206 | C. Pase a producción |  |  |  | -187d → 65d | baseline start 2017-11-13 → 2017-11-20; baseline finish 2017-11-13 → 2017-11-20 |
| 207 | D. Seguimiento |  |  |  | -187d → 65d | baseline start 2017-11-14 → 2017-11-21; baseline finish 2017-11-17 → 2017-11-24 |
| 211 | RQ 001 al 10 |  |  |  | -218d → 34d | resources Costo por día [12.5%] → none |
| 212 | Revisión en Desarrollo |  |  |  | -218d → 34d | resources Costo por día [12.5%] → none |
| 213 | Levantamiento de observaciones |  |  |  | -218d → 34d | resources Costo por día [12.5%] → none |
| 215 | Documentación para el pase |  |  |  | -218d → 34d | resources Costo por día [12.5%] → none |
| 216 | Envío y Revisión por AF Calidad (Rev 1) |  |  |  | -218d → 34d | resources Costo por día [12.5%] → none |
| 217 | Levantamiento de Observaciones |  |  |  | -218d → 34d | resources Costo por día [12.5%] → none |
| 218 | Pruebas con el equipo AE |  |  |  | -181d → 71d | resources Costo por día [12.5%] → none |
| 219 | Pruebas de Aceptación (usuario) |  |  |  | -218d → 34d | resources Costo por día [12.5%] → none |
| 224 | RQ 10 al 20 |  |  |  | -218d → 34d | resources Costo por día [12.5%] → none |
| 225 | Revisión en Desarrollo |  |  |  | -218d → 34d | resources Costo por día [12.5%] → none |
| 226 | Levantamiento de observaciones |  |  |  | -218d → 34d | resources Costo por día [12.5%] → none |
| 228 | Documentación para el pase |  |  |  | -218d → 34d | resources Costo por día [12.5%] → none |
| 229 | Envío y Revisión por AF Calidad (Rev 1) |  |  |  | -218d → 34d | resources Costo por día [12.5%] → none |
| 230 | Levantamiento de Observaciones |  |  |  | -218d → 34d | resources Costo por día [12.5%] → none |
| 231 | Pruebas con el equipo AE |  |  |  | -213d → 39d | resources Costo por día [12.5%] → none |
| 232 | Pruebas de Aceptación (usuario) |  |  |  | -218d → 34d | resources Costo por día [12.5%] → none |
| 235 | **2.5 Actividades complementarias** | 2017-03-09 A → 2017-06-20 A (+103d) |  | 245d → 175d | -114d → 0d |  |
| 236 | **2.5.1 Dimensionamiento** | 2017-03-09 A → 2017-06-20 A (+103d) |  | 131d → 61d |  | baseline finish 2017-08-28 → 2017-09-15 |
| 237 | Levantamiento de información |  |  |  |  | resources Costo por día [12.5%] → none |
| 238 | Informe final | 2017-03-09 A → 2017-07-19 A (+132d) | 2017-03-14 A → 2017-07-24 A (+132d) |  |  | resources Costo por día [12.5%] → none |
| 239 | Aprobación con GOP y Usuario |  |  |  |  | resources Costo por día [12.5%] → none; baseline finish 2017-08-28 → 2017-09-15 |

| ID | Task | Total float | Other |
| --- | --- | --- | --- |
| 241 | Elaboración del Manual de Usuario | -214d → 38d | resources Costo por día [12.5%] → none |
| 242 | Aprobación del Manual | -214d → 38d | resources Costo por día [12.5%] → none |
| 245 | Elaborar documento de transferencia | -252d → 0d | resources Costo por día [12.5%] → none |
| 246 | Envío de documento formal | -252d → 0d | resources Costo por día [12.5%] → none |
