# [AE Trazabilidad] Cronograma de Actividades 2.0

How a schedule from MS Project changed from version to version. A marks actual dates.

## Version 1 (data date 2017-09-25, saved 2017-09-25)

| ID | WBS | Task | Duration | Start | Finish | Predecessors | Complete | Total float | Constraint |
| --- | --- | --- | --- | --- | --- | --- | --- | --- | --- |
| 1 | 1 | **AE 2017:** | 201d | 2017-03-06 A | 2017-12-22 |  | 69% | 0d |  |
| 2 | 1.1 | **Actividades de Gestión** | 201d | 2017-03-06 A | 2017-12-22 |  | 73% | 0d |  |
| 3 | 1.1.1 | **Planificación** | 7.75d | 2017-04-25 A | 2017-05-05 A |  | 100% |  |  |
| 4 | 1.1.1.1 | **Gestión del Alcance** | 7.75d | 2017-04-25 A | 2017-05-05 A |  | 100% |  |  |
| 5 |  | Elaborar Documento de Alcance | 7d | 2017-04-25 A | 2017-05-04 A | 114 | 100% |  |  |
| 6 |  | Reunión de revisión de Alcance | 2h | 2017-05-05 A | 2017-05-05 A | 5 | 100% |  |  |
| 7 |  | Firma de Documento de Alcance | 4h | 2017-05-05 A | 2017-05-05 A | 6 | 100% |  |  |
| 8 |  | Declaración de Alcance | 0d | 2017-05-05 A | 2017-05-05 A | 7 | 100% |  |  |
| 9 | 1.1.2 | **Ejecución** | 189d | 2017-03-06 A | 2017-12-05 |  | 79% | 12d |  |
| 10 | 1.1.2.1 | **Gestión de las Adquisiciones** | 189d | 2017-03-06 A | 2017-12-05 |  | 79% | 12d |  |
| 11 | 1.1.2.1.1 | **Servicio de Terceros - Especialista de Procesos** | 132d | 2017-03-06 A | 2017-09-14 A |  | 100% |  |  |
| 12 |  | Contratación EP: MRAM | 2d | 2017-03-06 A | 2017-03-07 A |  | 100% |  |  |
| 13 |  | Inducción | 5d | 2017-03-08 A | 2017-03-14 A | 12 | 100% |  |  |
| 14 |  | Informe Mensual N°1 - Marzo | 3d | 2017-04-05 A | 2017-04-07 A | 13SS+20d | 100% |  |  |
| 15 |  | Informe Mensual N°2 - Abril | 3d | 2017-05-08 A | 2017-05-10 A | 13SS+40d | 100% |  |  |
| 16 |  | Informe Mensual N°3 - Mayo | 3d | 2017-06-05 A | 2017-06-07 A | 13SS+60d | 100% |  |  |
| 17 |  | Informe Mensual N°4 - Junio | 3d | 2017-07-05 A | 2017-07-07 A | 13SS+80d | 100% |  |  |
| 18 |  | Contratación EP: JJVÑ | 4d | 2017-07-10 A | 2017-07-13 A | 17 | 100% |  |  |
| 19 |  | Inducción | 3d | 2017-07-14 A | 2017-07-18 A | 18 | 100% |  |  |
| 20 |  | Informe Mensual N°1 - Julio/Agosto | 3d | 2017-08-14 A | 2017-08-16 A | 19SS+20d | 100% |  |  |
| 21 |  | Informe Mensual N°2 - Agosto/Setiembre | 3d | 2017-09-12 A | 2017-09-14 A | 19SS+40d | 100% |  |  |
| 22 | 1.1.2.1.2 | **Servicio de Terceros - Analista de Sistemas** | 174d | 2017-03-27 A | 2017-12-05 |  | 74% | 12d |  |
| 23 |  | Contratación AS: GAAC | 5d | 2017-03-27 A | 2017-03-31 A |  | 100% |  | start no earlier than 2017-03-27 |
| 24 |  | Inducción | 5d | 2017-04-03 A | 2017-04-07 A | 23 | 100% |  |  |
| 25 |  | Informe Mensual N°1 - Abril | 3d | 2017-05-02 A | 2017-05-04 A | 24SS+18d | 100% |  |  |
| 26 |  | Informe Mensual N°2 - Mayo | 4d | 2017-05-30 A | 2017-06-02 A | 24SS+38d | 100% |  |  |
| 27 |  | Informe Mensual N°3 - Junio | 3d | 2017-06-27 A | 2017-07-03 A | 24SS+58d | 100% |  |  |
| 28 |  | Informe Mensual N°4 - Julio | 3d | 2017-08-01 A | 2017-08-03 A | 24SS+80d | 100% |  |  |
| 29 |  | Informe Mensual N°5 - Agosto | 3d | 2017-09-01 A | 2017-09-05 A | 24SS+102d | 100% |  |  |
| 30 |  | Informe Mensual N°6 - Setiembre | 3d | 2017-09-29 | 2017-10-03 | 24SS+122d |  | 44d |  |
| 31 |  | Informe Mensual N°5 - Octubre | 3d | 2017-10-31 | 2017-11-03 | 24SS+144d |  | 22d |  |
| 32 |  | Informe Mensual N°5 - Noviembre | 3d | 2017-12-01 | 2017-12-05 | 24SS+166d |  | 12d |  |
| 33 | 1.1.2.1.3 | **Servicio de terceros - Analista Programador 1** | 133d | 2017-05-25 A | 2017-12-04 |  | 75% | 13d |  |
| 34 |  | Contratación AP1: JVDD I | 5d | 2017-05-25 A | 2017-05-31 A |  | 100% |  | start no earlier than 2017-05-25 |
| 35 |  | Inducción | 5d | 2017-06-01 A | 2017-06-07 A | 34 | 100% |  |  |
| 36 |  | Informe Mensual N°1 - Junio | 3d | 2017-06-27 A | 2017-07-03 A | 35SS+18d | 100% |  |  |
| 37 |  | Contratación AP1: JVDD II | 3d | 2017-06-27 A | 2017-07-03 A | 36SS | 100% |  |  |
| 38 |  | Informe Mensual N°1 - Julio | 3d | 2017-08-01 A | 2017-08-03 A | 35SS+40d | 100% |  |  |
| 39 |  | Informe Mensual N°2 - Agosto | 3d | 2017-08-31 A | 2017-09-04 A | 35SS+61d | 100% |  |  |
| 40 |  | Contratación AP1: MAFG | 3d | 2017-08-29 A | 2017-09-01 A |  | 100% |  | start no earlier than 2017-08-29 |
| 41 |  | Inducción | 2d | 2017-09-04 A | 2017-09-05 A | 40 | 100% |  |  |
| 42 |  | Informe Mensual N°1 - Setiembre | 3d | 2017-10-02 | 2017-10-04 | 41SS+20d |  | 55d |  |
| 43 |  | Informe Mensual N°2 - Octubre | 3d | 2017-10-30 | 2017-11-02 | 41SS+40d |  | 35d |  |
| 44 |  | Informe Mensual N°3 - Noviembre | 3d | 2017-11-30 | 2017-12-04 | 41SS+62d |  | 13d |  |
| 45 | 1.1.2.1.4 | **Servicio de terceros - Analista Programador 2** | 133d | 2017-05-25 A | 2017-12-04 |  | 75% | 13d |  |
| 46 |  | Contratación AP1: JCML I | 5d | 2017-05-25 A | 2017-05-31 A | 34SS | 100% |  |  |
| 47 |  | Inducción | 5d | 2017-06-01 A | 2017-06-07 A | 46 | 100% |  |  |
| 48 |  | Informe Mensual N°1 - Junio | 3d | 2017-06-27 A | 2017-07-03 A | 47SS+18d | 100% |  |  |
| 49 |  | Contratación AP2: JCML II | 3d | 2017-06-27 A | 2017-07-03 A | 48SS | 100% |  |  |
| 50 |  | Informe Mensual N°1 - Julio | 3d | 2017-08-01 A | 2017-08-03 A | 47SS+40d | 100% |  |  |
| 51 |  | Informe Mensual N°2 - Agosto | 3d | 2017-08-31 A | 2017-09-04 A | 47SS+61d | 100% |  |  |
| 52 |  | Contratación AP2: WJTL | 3d | 2017-08-29 A | 2017-09-01 A | 40SS | 100% |  |  |
| 53 |  | Inducción | 2d | 2017-09-04 A | 2017-09-05 A | 52 | 100% |  |  |
| 54 |  | Informe Mensual N°1 - Setiembre | 3d | 2017-10-02 | 2017-10-04 | 53SS+20d |  | 55d |  |
| 55 |  | Informe Mensual N°2 - Octubre | 3d | 2017-10-30 | 2017-11-02 | 53SS+40d |  | 35d |  |
| 56 |  | Informe Mensual N°3 - Noviembre | 3d | 2017-11-30 | 2017-12-04 | 53SS+62d |  | 13d |  |
| 57 | 1.1.2.1.5 | **Servicio de terceros - Analista Programador 3** | 110d | 2017-06-26 A | 2017-12-01 |  | 69% | 14d |  |
| 58 |  | Contratación AP1: EAPC I | 3d | 2017-06-26 A | 2017-06-28 A |  | 100% |  | start no earlier than 2017-06-26 |
| 59 |  | Inducción | 5d | 2017-07-03 A | 2017-07-07 A | 58 | 100% |  |  |
| 60 |  | Informe Mensual N°1 - Julio | 3d | 2017-08-01 A | 2017-08-03 A | 59SS+20d | 100% |  |  |
| 61 |  | Contratación AP2: EAPC II | 3d | 2017-08-01 A | 2017-08-03 A | 59SS+20d | 100% |  |  |
| 62 |  | Informe Mensual N°1 - Agosto | 3d | 2017-08-31 A | 2017-09-04 A | 61FS+18d | 100% |  |  |
| 63 |  | Contratación AP2: EAPC III | 3d | 2017-08-31 A | 2017-09-04 A | 61FS+18d | 100% |  |  |
| 64 |  | Informe Mensual N°1 - Setiembre | 3d | 2017-09-29 | 2017-10-03 | 63FS+18d |  | 56d |  |
| 65 |  | Informe Mensual N°2 - Octubre | 3d | 2017-10-31 | 2017-11-03 | 63FS+40d |  | 34d |  |
| 66 |  | Informe Mensual N°3 - Noviembre | 3d | 2017-11-29 | 2017-12-01 | 63FS+60d |  | 14d |  |
| 67 | 1.1.3 | **Seguimiento y Control** | 145.19d | 2017-05-05 A | 2017-12-01 |  | 53% | 14.81d |  |
| 68 | 1.1.3.1 | **Informe mensual** | 109d | 2017-06-26 A | 2017-11-30 |  | 50% | 15d |  |
| 69 |  | Informe mensual - junio | 5d | 2017-06-26 A | 2017-07-04 A |  | 100% |  | start no earlier than 2017-06-26 |
| 70 |  | Informe mensual - julio | 5d | 2017-07-26 A | 2017-08-02 A |  | 100% |  | start no earlier than 2017-07-26 |

| ID | WBS | Task | Duration | Start | Finish | Predecessors | Complete | Total float | Constraint |
| --- | --- | --- | --- | --- | --- | --- | --- | --- | --- |
| 71 |  | Informe mensual - agosto | 5d | 2017-08-25 A | 2017-09-01 A |  | 100% |  | start no earlier than 2017-08-25 |
| 72 |  | Informe mensual - setiembre | 5d | 2017-09-26 | 2017-10-02 |  |  | 45d | start no earlier than 2017-09-26 |
| 73 |  | Informe mensual - octubre | 5d | 2017-10-26 | 2017-11-02 |  |  | 23d | start no earlier than 2017-10-26 |
| 74 |  | Informe mensual - noviembre | 5d | 2017-11-24 | 2017-11-30 |  |  | 3d | start no earlier than 2017-11-24 |
| 75 | 1.1.3.2 | **Reunión de Estado Semanal** | 145.19d | 2017-05-05 A | 2017-12-01 |  | 68% | 14.81d |  |
| 76 |  | Reunión de Estado - Semana 1 | 1.5h | 2017-05-05 A | 2017-05-05 A |  | 100% |  | start no earlier than 2017-05-05 |
| 77 |  | Reunión de Estado - Semana 2 | 1.5h | 2017-05-12 A | 2017-05-12 A |  | 100% |  | start no earlier than 2017-05-12 |
| 78 |  | Reunión de Estado - Semana 3 | 1.5h | 2017-05-19 A | 2017-05-19 A |  | 100% |  | start no earlier than 2017-05-19 |
| 79 |  | Reunión de Estado - Semana 4 | 1.5h | 2017-05-26 A | 2017-05-26 A |  | 100% |  | start no earlier than 2017-05-26 |
| 80 |  | Reunión de Estado - Semana 5 | 1.5h | 2017-06-02 A | 2017-06-02 A |  | 100% |  | start no earlier than 2017-06-02 |
| 81 |  | Reunión de Estado - Semana 6 | 1.5h | 2017-06-09 A | 2017-06-09 A |  | 100% |  | start no earlier than 2017-06-09 |
| 82 |  | Reunión de Estado - Semana 7 | 1.5h | 2017-06-16 A | 2017-06-16 A |  | 100% |  | start no earlier than 2017-06-16 |
| 83 |  | Reunión de Estado - Semana 8 | 1.5h | 2017-06-23 A | 2017-06-23 A |  | 100% |  | start no earlier than 2017-06-23 |
| 84 |  | Reunión de Estado - Semana 9 | 1.5h | 2017-06-28 A | 2017-06-28 A |  | 100% |  | start no earlier than 2017-06-28 |
| 85 |  | Reunión de Estado - Semana 10 | 1.5h | 2017-07-07 A | 2017-07-07 A |  | 100% |  | start no earlier than 2017-07-07 |
| 86 |  | Reunión de Estado - Semana 11 | 1.5h | 2017-07-13 A | 2017-07-13 A |  | 100% |  | start no earlier than 2017-07-13 |
| 87 |  | Reunión de Estado - Semana 12 | 1.5h | 2017-07-21 A | 2017-07-21 A |  | 100% |  | start no earlier than 2017-07-21 |
| 88 |  | Reunión de Estado - Semana 13 | 1.5h | 2017-07-31 A | 2017-07-31 A |  | 100% |  | start no earlier than 2017-07-31 |
| 89 |  | Reunión de Estado - Semana 14 | 1.5h | 2017-08-04 A | 2017-08-04 A |  | 100% |  | start no earlier than 2017-08-04 |
| 90 |  | Reunión de Estado - Semana 15 | 1.5h | 2017-08-11 A | 2017-08-11 A |  | 100% |  | start no earlier than 2017-08-11 |
| 91 |  | Reunión de Estado - Semana 16 | 1.5h | 2017-08-18 A | 2017-08-18 A |  | 100% |  | start no earlier than 2017-08-18 |
| 92 |  | Reunión de Estado - Semana 17 | 1.5h | 2017-08-25 A | 2017-08-25 A |  | 100% |  | start no earlier than 2017-08-25 |
| 93 |  | Reunión de Estado - Semana 18 | 1.5h | 2017-09-01 A | 2017-09-01 A |  | 100% |  | start no earlier than 2017-09-01 |
| 94 |  | Reunión de Estado - Semana 19 | 1.5h | 2017-09-08 A | 2017-09-08 A |  | 100% |  | start no earlier than 2017-09-08 |
| 95 |  | Reunión de Estado - Semana 20 | 1.5h | 2017-09-15 A | 2017-09-15 A |  | 100% |  | start no earlier than 2017-09-15 |
| 96 |  | Reunión de Estado - Semana 21 | 1.5h | 2017-09-22 A | 2017-09-22 A |  | 100% |  | start no earlier than 2017-09-22 |
| 97 |  | Reunión de Estado - Semana 22 | 1.5h | 2017-09-29 | 2017-09-29 |  |  | 46.81d | start no earlier than 2017-09-29 |
| 98 |  | Reunión de Estado - Semana 23 | 1.5h | 2017-10-06 | 2017-10-06 |  |  | 41.81d | start no earlier than 2017-10-06 |
| 99 |  | Reunión de Estado - Semana 24 | 1.5h | 2017-10-13 | 2017-10-13 |  |  | 36.81d | start no earlier than 2017-10-13 |
| 100 |  | Reunión de Estado - Semana 25 | 1.5h | 2017-10-20 | 2017-10-20 |  |  | 31.81d | start no earlier than 2017-10-20 |
| 101 |  | Reunión de Estado - Semana 26 | 1.5h | 2017-10-27 | 2017-10-27 |  |  | 26.81d | start no earlier than 2017-10-27 |
| 102 |  | Reunión de Estado - Semana 27 | 1.5h | 2017-11-03 | 2017-11-03 |  |  | 22.81d | start no earlier than 2017-11-03 |
| 103 |  | Reunión de Estado - Semana 28 | 1.5h | 2017-11-10 | 2017-11-10 |  |  | 17.81d | start no earlier than 2017-11-10 |
| 104 |  | Reunión de Estado - Semana 29 | 1.5h | 2017-11-17 | 2017-11-17 |  |  | 12.81d | start no earlier than 2017-11-17 |
| 105 |  | Reunión de Estado - Semana 30 | 1.5h | 2017-11-24 | 2017-11-24 |  |  | 7.81d | start no earlier than 2017-11-24 |
| 106 |  | Reunión de Estado - Semana 31 | 1.5h | 2017-12-01 | 2017-12-01 |  |  | 2.81d | start no earlier than 2017-12-01 |
| 107 | 1.1.4 | **Cierre** | 5d | 2017-12-18 | 2017-12-22 |  |  | 0d |  |
| 108 |  | Elaboración de informe de Cierre | 5d | 2017-12-18 | 2017-12-22 | 222 |  | 0d |  |
| 109 |  | Informe de Cierre | 0d | 2017-12-22 | 2017-12-22 | 108 |  | 0d |  |
| 110 | 1.2 | **Actividades de Ingeniería** | 196d | 2017-03-06 A | 2017-12-15 |  | 66% | 5d |  |
| 111 | 1.2.1 | **Planificación** | 27.5d | 2017-03-15 A | 2017-04-25 A |  | 100% |  |  |
| 112 |  | Elaboración de Ficha de Relevamiento v1.0 | 15d | 2017-03-15 A | 2017-04-04 A | 13 | 100% |  |  |
| 113 |  | Revisión Ficha de Relevamiento v 1.0 | 1d | 2017-04-05 A | 2017-04-05 A | 112 | 100% |  |  |
| 114 |  | Actualización Ficha de Relevamiento v1.0 | 11d | 2017-04-06 A | 2017-04-24 A | 113 | 100% |  |  |
| 115 |  | Revisión final y firma | 4h | 2017-04-25 A | 2017-04-25 A | 114 | 100% |  |  |
| 116 |  | Ficha de Relevamiento | 0d | 2017-04-25 A | 2017-04-25 A | 115 | 100% |  |  |
| 117 | 1.2.2 | **Modelado de Procesos** | 13.88d | 2017-04-06 A | 2017-04-27 A |  | 100% |  |  |
| 118 | 1.2.2.1 | **Ficha Técnica del Proceso** | 13.88d | 2017-04-06 A | 2017-04-27 A |  | 100% |  |  |
| 119 |  | Elaborar FTP Registro y Derivación de Trámite (ATD) | 2d | 2017-04-06 A | 2017-04-07 A |  | 100% |  | start no earlier than 2017-04-06 |
| 120 |  | Elaborar FTP Asignación, Respuesta y Notificación de Trámite (GSA) | 1.5d | 2017-04-10 A | 2017-04-11 A | 119 | 100% |  |  |
| 121 |  | Elaborar FTP Asignación, Respuesta y Notificación de Trámite (ARM) | 1.5d | 2017-04-11 A | 2017-04-12 A | 120 | 100% |  |  |
| 122 |  | Elaborar FTP Asignación, Respuesta y Notificación de Trámite (ATS) | 1.5d | 2017-04-17 A | 2017-04-18 A | 121 | 100% |  |  |
| 123 |  | Revisión y Firma FTP GSA | 2h | 2017-04-27 A | 2017-04-27 A | 129 | 100% |  |  |
| 124 |  | Elaborar FTP Registro y Derivación de Trámite (AJD) | 1.5d | 2017-04-18 A | 2017-04-19 A | 122 | 100% |  |  |
| 125 |  | Elaborar FTP Asignación, Respuesta y Notificación de Trámite (GCN) | 1.5d | 2017-04-20 A | 2017-04-21 A | 124 | 100% |  |  |
| 126 |  | Revisión y Firma FTP GCN | 2h | 2017-04-27 A | 2017-04-27 A | 123 | 100% |  |  |
| 127 |  | Elaborar FTP Asignación, Respuesta y Notificación de Trámite (AEC) | 1.5d | 2017-04-21 A | 2017-04-24 A | 125 | 100% |  |  |
| 128 |  | Revisión y Firma FTP AEC | 1.5h | 2017-04-27 A | 2017-04-27 A | 126 | 100% |  |  |
| 129 |  | Elaborar FTP Registro y Derivación de Trámite (GIM) | 2d | 2017-04-25 A | 2017-04-26 A | 127 | 100% |  |  |
| 130 |  | Revisión y Firma FTP GIM | 1.5h | 2017-04-27 A | 2017-04-27 A | 128 | 100% |  |  |
| 131 |  | Ficha Técnica del Proceso | 0d | 2017-04-27 A | 2017-04-27 A | 130 | 100% |  |  |
| 132 | 1.2.3 | **Análisis y Diseño de Sistemas** | 117.12d | 2017-04-27 A | 2017-10-16 |  | 85% | 47d |  |
| 133 | 1.2.3.1 | **Análisis Funcional** | 42.5d | 2017-04-27 A | 2017-06-28 A |  | 100% |  |  |
| 134 |  | Elaborar Documento Funcional de Atención | 6d | 2017-04-27 A | 2017-05-08 A | 130 | 100% |  |  |
| 135 |  | Revisión y firma DF Atención | 1d | 2017-06-01 A | 2017-06-02 A | 140 | 100% |  |  |
| 136 |  | Elaborar Documento Funcional de Registro | 6d | 2017-05-08 A | 2017-05-16 A | 134 | 100% |  |  |
| 137 |  | Revisión y firma DF Registro | 1d | 2017-06-02 A | 2017-06-05 A | 135 | 100% |  |  |
| 138 |  | Elaborar Documento Funcional de Derivación | 6d | 2017-05-16 A | 2017-05-24 A | 136 | 100% |  |  |
| 139 |  | Revisión y firma DF Derivación | 0.5d | 2017-06-05 A | 2017-06-06 A | 137 | 100% |  |  |
| 140 |  | Elaborar Documento Funcional de Notificación | 6d | 2017-05-24 A | 2017-06-01 A | 138 | 100% |  |  |

| ID | WBS | Task | Duration | Start | Finish | Predecessors | Complete | Total float | Constraint |
| --- | --- | --- | --- | --- | --- | --- | --- | --- | --- |
| 141 |  | Revisión y firma DF Notificación | 1d | 2017-06-06 A | 2017-06-07 A | 139 | 100% |  |  |
| 142 |  | Elaborar Documento Funcional de Configuración | 8d | 2017-06-07 A | 2017-06-19 A | 141 | 100% |  |  |
| 143 |  | Revisión y firma DF Configuración | 7d | 2017-06-19 A | 2017-06-28 A | 142 | 100% |  |  |
| 144 |  | Documento de Definición Funcional | 0d | 2017-06-28 A | 2017-06-28 A | 143 | 100% |  |  |
| 145 | 1.2.3.2 | **Análisis Técnico** | 86d | 2017-06-13 A | 2017-10-16 |  | 74% | 47d |  |
| 146 |  | Elaboración de Documento Técnico de Notificación | 7d | 2017-06-13 A | 2017-06-21 A |  | 100% |  | start no earlier than 2017-06-13 |
| 147 |  | Revisión de DT Notificación | 2d | 2017-06-22 A | 2017-06-23 A | 146 | 100% |  |  |
| 148 |  | Levantamiento de observaciones DT Notificación | 3d | 2017-07-04 A | 2017-07-06 A | 149 | 100% |  |  |
| 149 |  | Elaboración de Documento Técnico de Configuración | 4d | 2017-06-26 A | 2017-07-03 A | 147 | 100% |  |  |
| 150 |  | Revisión de DT Configuración | 3d | 2017-07-07 A | 2017-07-11 A | 148 | 100% |  |  |
| 151 |  | Levantamiento de observaciones DT Configuración | 3d | 2017-07-12 A | 2017-07-14 A | 150 | 100% |  |  |
| 152 |  | Segunda revisión DT Configuración | 3d | 2017-08-09 A | 2017-08-11 A | 151FS+16d | 100% |  |  |
| 153 |  | Elaboración Documento Técnico Derivación | 5d | 2017-08-09 A | 2017-08-15 A | 152SS | 100% |  |  |
| 154 |  | Revisión interna DT Derivación | 1d | 2017-08-16 A | 2017-08-16 A | 153 | 100% |  |  |
| 155 |  | Levantamiento de observaciones DT Derivación | 1d | 2017-08-17 A | 2017-08-17 A | 154 | 100% |  |  |
| 156 |  | Revisión de DT Derivación | 3d | 2017-08-18 A | 2017-08-22 A | 155 | 100% |  |  |
| 157 |  | Levantamiento de observaciones DT Derivación | 2d | 2017-08-23 A | 2017-08-24 A | 156 | 100% |  |  |
| 158 |  | Revisión interna DT Derivación | 1d | 2017-08-25 A | 2017-08-25 A | 157 | 100% |  |  |
| 159 |  | Segunda revisión de DT Derivación | 2d | 2017-08-28 A | 2017-08-29 A | 158 | 100% |  |  |
| 160 |  | Elaboración de acta de conformidad y firmas | 1d | 2017-08-31 A | 2017-08-31 A | 159 | 100% |  |  |
| 161 |  | Elaboración Documento Técnico Registro - Atención | 6d | 2017-09-22 A | 2017-09-29 | 192 | 33% | 47d | finish no earlier than 2017-09-29 |
| 162 |  | Revisión interna DT Registro - Atención | 1d | 2017-10-02 | 2017-10-02 | 161 |  | 47d |  |
| 163 |  | Levantamiento de observaciones DT Registro - Atención | 2d | 2017-10-03 | 2017-10-04 | 162 |  | 47d |  |
| 164 |  | Revisión de DT Registro - Atención | 2d | 2017-10-05 | 2017-10-06 | 163 |  | 47d |  |
| 165 |  | Levantamiento de observaciones DT Registro - Atención | 3d | 2017-10-09 | 2017-10-11 | 164 |  | 47d |  |
| 166 |  | Segunda revisión de DT Registro - Atención | 2d | 2017-10-12 | 2017-10-13 | 165 |  | 47d |  |
| 167 |  | Elaboración de acta de conformidad y firmas | 1d | 2017-10-16 | 2017-10-16 | 166 |  | 47d |  |
| 168 |  | Documento Técnico de Sistemas | 0d | 2017-10-16 | 2017-10-16 | 167 |  | 47d |  |
| 169 | 1.2.4 | **Construcción** | 196d | 2017-03-06 A | 2017-12-15 |  | 53% | 5d |  |
| 170 | 1.2.4.1 | **Requerimiento 1 (####)** | 151d | 2017-03-06 A | 2017-10-11 |  | 87% | 50d |  |
| 171 | 1.2.4.1.1 | **Desarrollo** | 58.62d | 2017-06-28 A | 2017-09-22 A |  | 100% |  |  |
| 172 |  | Elaboración de casos de prueba | 3d | 2017-08-01 A | 2017-08-03 A |  | 100% |  | start no earlier than 2017-08-01 |
| 173 |  | Preparación del ambiente | 1d | 2017-06-28 A | 2017-07-03 A | 143 | 100% |  |  |
| 174 |  | Inducción al desarrollador DT Notificación | 1d | 2017-07-03 A | 2017-07-04 A | 173 | 100% |  |  |
| 175 |  | Inducción al desarrollador DT Configuración | 1d | 2017-07-14 A | 2017-07-14 A | 151FF | 100% |  |  |
| 176 |  | Codificación de formularios Notificación | 17d | 2017-07-04 A | 2017-07-27 A | 174 | 100% |  |  |
| 177 |  | Codificación de formularios Configuración | 15d | 2017-07-17 A | 2017-08-07 A | 175 | 100% |  |  |
| 178 |  | Ejecución de pruebas unitarias de los formularios Notificación | 10d | 2017-08-04 A | 2017-08-17 A | 172 | 100% |  |  |
| 179 |  | Ejecución de pruebas unitarias de los formularios Configuración | 10d | 2017-08-08 A | 2017-08-21 A | 177 | 100% |  |  |
| 180 |  | Codificación de PQT DTS | 15d | 2017-08-22 A | 2017-09-12 A | 179 | 100% |  |  |
| 181 |  | Ejecución de pruebas unitarias de PQT DTS | 5d | 2017-09-13 A | 2017-09-19 A | 180 | 100% |  |  |
| 182 |  | Elaboración de documentación de pase | 3d | 2017-09-15 A | 2017-09-19 A | 181FF | 100% |  |  |
| 183 |  | Validación del Arquitecto y Líder Funcional | 3d | 2017-09-20 A | 2017-09-22 A | 181 | 100% |  |  |
| 184 | 1.2.4.1.2 | **Pruebas** | 6d | 2017-09-25 | 2017-10-02 |  |  | 50d |  |
| 185 |  | Revisión del pase por parte del A.F.C.C.T.I. | 3d | 2017-09-25 | 2017-09-27 |  |  | 50d | start no earlier than 2017-09-25 |
| 186 |  | Ejecución de pruebas de aceptación | 3d | 2017-09-28 | 2017-10-02 | 185 |  | 50d |  |
| 187 |  | Solicitud de Pase a Producción | 2d | 2017-10-03 | 2017-10-04 | 186 |  | 50d |  |
| 188 |  | Seguimiento | 5d | 2017-10-05 | 2017-10-11 | 187 |  | 50d |  |
| 189 |  | Pase a Producción 1 | 0d | 2017-03-06 A | 2017-03-06 A |  | 100% |  |  |
| 190 | 1.2.4.2 | **Requerimiento 2 (####)** | 179d | 2017-03-06 A | 2017-11-21 |  | 43% | 15d |  |
| 191 | 1.2.4.2.1 | **Desarrollo** | 47d | 2017-08-21 A | 2017-10-25 |  | 58% | 15d |  |
| 192 |  | Elaboración de casos de prueba | 2d | 2017-09-01 A | 2017-09-04 A | 160 | 100% |  |  |
| 193 |  | Inducción al desarrollador DT Derivación | 1d | 2017-08-21 A | 2017-08-21 A |  | 100% |  | start no earlier than 2017-08-21 |
| 194 |  | Derivación | 8d | 2017-08-22 A | 2017-09-01 A | 193 | 100% |  |  |
| 195 |  | Recepción | 8d | 2017-08-22 A | 2017-09-01 A | 194SS | 100% |  |  |
| 196 |  | Retirar la opción de inventario (automatizar) | 5d | 2017-09-28 | 2017-10-04 | 197 |  | 0d |  |
| 197 |  | Asignación | 13d | 2017-09-11 A | 2017-09-27 |  | 85% | 0d | start no earlier than 2017-09-11 |
| 198 |  | Codificación de derivación y devolución | 5d | 2017-10-05 | 2017-10-11 | 196 |  | 0d |  |
| 199 |  | Ejecución de pruebas integrales del proceso | 5d | 2017-10-12 | 2017-10-18 | 198 |  | 0d |  |
| 200 |  | Elaboración de documentación de pase | 2d | 2017-10-19 | 2017-10-20 | 199 |  | 15d |  |
| 201 |  | Validación del Arquitecto y el Líder Funcional | 3d | 2017-10-23 | 2017-10-25 | 200 |  | 15d |  |
| 202 | 1.2.4.2.2 | **Pruebas** | 11d | 2017-10-26 | 2017-11-10 |  |  | 15d |  |
| 203 |  | Revisión del pase por parte del A.F.C.C.T.I. | 3d | 2017-10-26 | 2017-10-30 | 201 |  | 15d |  |
| 204 |  | Ejecución de pruebas de aceptación | 8d | 2017-10-31 | 2017-11-10 | 203 |  | 15d |  |
| 205 |  | Pase a producción | 2d | 2017-11-13 | 2017-11-14 | 204 |  | 15d |  |
| 206 |  | Seguimiento | 5d | 2017-11-15 | 2017-11-21 | 205 |  | 15d |  |
| 207 |  | Pase a Producción 2 | 0d | 2017-03-06 A | 2017-03-06 A |  | 100% |  |  |
| 208 | 1.2.4.3 | **Requerimiento 3 (####)** | 45d | 2017-10-12 | 2017-12-15 |  |  | 5d |  |
| 209 | 1.2.4.3.1 | **Desarrollo** | 27d | 2017-10-12 | 2017-11-20 |  |  | 5d |  |
| 210 |  | Elaboración de casos de prueba | 3d | 2017-10-12 | 2017-10-16 | 165 |  | 47d |  |

| ID | WBS | Task | Duration | Start | Finish | Predecessors | Complete | Total float | Constraint |
| --- | --- | --- | --- | --- | --- | --- | --- | --- | --- |
| 211 |  | Inducción al desarrollador DT Registro - Atención | 1d | 2017-10-19 | 2017-10-19 | 199 |  | 0d |  |
| 212 |  | Codificación de procedimientos almacenados | 2d | 2017-10-20 | 2017-10-23 | 211 |  | 0d |  |
| 213 |  | Codificación de PQT DTS | 3d | 2017-10-24 | 2017-10-26 | 212 |  | 0d |  |
| 214 |  | Codificación de Formularios | 8d | 2017-10-27 | 2017-11-08 | 213 |  | 0d |  |
| 215 |  | Ejecución de pruebas integrales | 4d | 2017-11-09 | 2017-11-14 | 214 |  | 27d |  |
| 216 |  | Elaboración de documentación de pase | 5d | 2017-11-09 | 2017-11-15 | 214 |  | 0d |  |
| 217 |  | Validación del Arquitecto y el Líder Funcional | 3d | 2017-11-16 | 2017-11-20 | 216 |  | 0d |  |
| 218 | 1.2.4.3.2 | **Pruebas** | 10d | 2017-11-21 | 2017-12-04 |  |  | 0d |  |
| 219 |  | Revisión del pase por parte del A.F.C.C.T.I. | 3d | 2017-11-21 | 2017-11-23 | 217 |  | 0d |  |
| 220 |  | Ejecución de pruebas de aceptación | 7d | 2017-11-24 | 2017-12-04 | 219 |  | 0d |  |
| 221 |  | Pase a Producción | 2d | 2017-12-05 | 2017-12-06 | 220 |  | 0d |  |
| 222 |  | Seguimiento | 6d | 2017-12-07 | 2017-12-15 | 221 |  | 0d |  |
| 223 |  | Pase a producción 3 | 0d | 2017-12-06 | 2017-12-06 | 221 |  | 11d |  |
| 224 | 1.2.5 | **Actividades Complementarias** | 128d | 2017-05-30 A | 2017-11-30 |  | 63% | 15d |  |
| 225 |  | Formularios de criterios de configuración | 10d | 2017-08-28 A | 2017-09-11 A |  | 100% |  | start no earlier than 2017-08-28 |
| 226 | 1.2.5.2 | **Propuesta de Categorización** | 16.5d | 2017-05-30 A | 2017-06-21 A |  | 100% |  |  |
| 227 |  | Elaboración | 14d | 2017-05-30 A | 2017-06-16 A |  | 100% |  | start no earlier than 2017-05-30 |
| 228 |  | Revisión y aprobación | 2.5d | 2017-06-19 A | 2017-06-21 A | 227 | 100% |  |  |
| 229 | 1.2.5.3 | **Sección "Trámites" - Página Web** | 124d | 2017-06-05 A | 2017-11-30 |  | 26% | 15d |  |
| 230 |  | Elaboración | 15d | 2017-06-05 A | 2017-06-23 A |  | 100% |  | start no earlier than 2017-06-05 |
| 231 |  | Revisión y aprobación | 3d | 2017-06-26 A | 2017-06-28 A | 230 | 100% |  |  |
| 232 |  | Elaboración de guías de llenado de formatos | 30d | 2017-08-02 | 2017-09-13 |  |  | 55d | start no earlier than 2017-08-02 |
| 233 |  | Diseño página web | 15d | 2017-09-14 | 2017-10-04 | 232 |  | 55d |  |
| 234 |  | Implementación | 7d | 2017-11-22 | 2017-11-30 | 206 |  | 15d |  |
| 235 | 1.2.5.4 | **Dimensionamiento** | 52d | 2017-06-26 A | 2017-09-11 A |  | 100% |  |  |
| 236 |  | Elaboración de informe de Dimensionamiento I | 8d | 2017-06-26 A | 2017-07-07 A | 231SS | 100% |  |  |
| 237 |  | Elaboración de Informe de Dimensionamiento II | 30d | 2017-07-19 A | 2017-08-31 A | 19 | 100% |  |  |
| 238 |  | Revisión y Aprobación | 7d | 2017-09-01 A | 2017-09-11 A | 237 | 100% |  |  |

## Version 2 (data date 2017-09-25, saved 2017-10-19)

Last finish stays 2017-12-22. Complete tasks 137 → 135.

Changed:

| ID | Task | Start | Finish | Duration | Complete | Total float | Predecessors | Other |
| --- | --- | --- | --- | --- | --- | --- | --- | --- |
| 1 | **AE 2017:** |  |  |  | 69% → 68% |  |  |  |
| 110 | **Actividades de Ingeniería** | 2017-03-06 A → 2017-03-15 A (+9d) |  | 196d → 189d |  |  |  |  |
| 169 | **Construcción** | 2017-03-06 A → 2017-06-28 A (+114d) |  | 196d → 116.62d |  |  |  |  |
| 170 | **Requerimiento 1 - Notificación y Configuracion (149120)** | 2017-03-06 A → 2017-06-28 A (+114d) |  | 151d → 71.62d |  |  |  | was named Requerimiento 1 (####) |
| 189 | Pase a Producción 1 | 2017-03-06 A → 2017-10-11 (+219d) | 2017-03-06 A → 2017-10-11 (+219d) |  | 100% → 0% | none → 50d | none → 188 |  |
| 190 | **Requerimiento 2 - Derivación y Asignación (####)** | 2017-03-06 A → 2017-08-21 A (+168d) |  | 179d → 65d |  | 15d → 22d |  | was named Requerimiento 2 (####) |
| 207 | Pase a Producción 2 | 2017-03-06 A → 2017-11-21 (+260d) | 2017-03-06 A → 2017-11-21 (+260d) |  | 100% → 0% | none → 22d | none → 206 |  |
| 208 | **Requerimiento 3 - Registro y Atención (####)** |  |  |  |  |  |  | was named Requerimiento 3 (####) |
| 224 | **Actividades Complementarias** |  | 2017-11-30 → 2017-12-12 (+12d) | 128d → 135d | 63% → 60% | 15d → 8d |  |  |
| 229 | **Sección "Trámites" - Página Web del SAT** |  | 2017-11-30 → 2017-12-12 (+12d) | 124d → 131d | 26% → 23% | 15d → 8d |  | was named Sección "Trámites" - Página Web |
| 234 | Implementación |  | 2017-11-30 → 2017-12-12 (+12d) | 7d → 14d |  | 15d → 8d |  |  |

## Version 3 (data date 2017-09-30, saved 2017-10-27)

Last finish stays 2017-12-22. Complete tasks 135 → 140.

Changed:

| ID | Task | Start | Finish | Complete | Total float |
| --- | --- | --- | --- | --- | --- |
| 1 | **AE 2017:** |  |  | 68% → 76% |  |
| 2 | **Actividades de Gestión** |  |  | 73% → 76% |  |
| 9 | **Ejecución** |  |  | 79% → 80% |  |
| 10 | **Gestión de las Adquisiciones** |  |  | 79% → 80% |  |
| 22 | **Servicio de Terceros - Analista de Sistemas** |  |  | 74% → 77% |  |
| 30 | Informe Mensual N°6 - Setiembre | 2017-09-29 A |  | 0% → 33% | 44d → 56d |
| 57 | **Servicio de terceros - Analista Programador 3** |  |  | 69% → 72% |  |
| 64 | Informe Mensual N°1 - Setiembre | 2017-09-29 A |  | 0% → 33% |  |
| 67 | **Seguimiento y Control** |  |  | 53% → 65% |  |
| 68 | **Informe mensual** |  |  | 50% → 63% |  |
| 72 | Informe mensual - setiembre | 2017-09-26 A |  | 0% → 80% | 45d → 57d |
| 75 | **Reunión de Estado Semanal** |  |  | 68% → 71% |  |
| 97 | Reunión de Estado - Semana 22 | 2017-09-29 A | 2017-09-29 A | 0% → 100% | 46.81d → none |
| 110 | **Actividades de Ingeniería** |  |  | 66% → 76% |  |
| 132 | **Análisis y Diseño de Sistemas** |  |  | 85% → 89% |  |
| 145 | **Análisis Técnico** |  |  | 74% → 81% |  |
| 161 | Elaboración Documento Técnico Registro - Atención |  | 2017-09-29 A | 33% → 100% | 47d → none |
| 169 | **Construcción** |  |  | 53% → 57% |  |
| 170 | **Requerimiento 1 - Notificación y Configuracion (149120)** |  |  | 87% → 92% |  |
| 184 | **Pruebas** | 2017-09-25 A |  | 0% → 83% |  |
| 185 | Revisión del pase por parte del A.F.C.C.T.I. | 2017-09-25 A | 2017-09-27 A | 0% → 100% | 50d → none |
| 186 | Ejecución de pruebas de aceptación | 2017-09-28 A |  | 0% → 67% |  |
| 190 | **Requerimiento 2 - Derivación y Asignación (####)** |  |  | 43% → 49% |  |
| 191 | **Desarrollo** |  |  | 58% → 65% |  |
| 196 | Retirar la opción de inventario (automatizar) | 2017-09-28 A |  | 0% → 40% |  |
| 197 | Asignación |  | 2017-09-27 A | 85% → 100% | 0d → none |
| 224 | **Actividades Complementarias** |  |  | 60% → 89% |  |
| 229 | **Sección "Trámites" - Página Web del SAT** |  |  | 23% → 78% |  |
| 232 | Elaboración de guías de llenado de formatos | 2017-08-02 A | 2017-09-13 A | 0% → 100% | 55d → none |
| 233 | Diseño página web | 2017-09-14 A |  | 0% → 80% |  |
