# [AE Trazabilidad] Cronograma de Actividades 1.0

How a schedule from MS Project changed from version to version. A marks actual dates.

## Version 1 (data date 2017-09-25, saved 2017-09-26)

| ID | WBS | Task | Duration | Start | Finish | Predecessors | Complete | Total float | Constraint |
| --- | --- | --- | --- | --- | --- | --- | --- | --- | --- |
| 1 | 1 | **AE 2017:** | 196d | 2017-03-06 A | 2017-12-15 |  | 73% | 0d |  |
| 2 | 1.1 | **Actividades de Gestión** | 196d | 2017-03-06 A | 2017-12-15 |  | 75% | 0d |  |
| 3 | 1.1.1 | **Planificación** | 18d | 2017-04-24 A | 2017-05-18 A |  | 100% |  |  |
| 4 | 1.1.1.1 | **Gestión del Alcance** | 18d | 2017-04-24 A | 2017-05-18 A |  | 100% |  |  |
| 5 |  | Elaborar Documento de Alcance | 16d | 2017-04-24 A | 2017-05-16 A |  | 100% |  | start no earlier than 2017-04-24 |
| 6 |  | Reunión de revisión de Alcance | 1d | 2017-05-17 A | 2017-05-17 A | 5 | 100% |  |  |
| 7 |  | Firma de Documento de Alcance | 1d | 2017-05-18 A | 2017-05-18 A | 6 | 100% |  |  |
| 8 |  | Declaración de Alcance | 0d | 2017-05-18 A | 2017-05-18 A | 7 | 100% |  |  |
| 9 | 1.1.2 | **Ejecución** | 196d | 2017-03-06 A | 2017-12-15 |  | 79% | 0d |  |
| 10 | 1.1.2.1 | **Gestión de las Adquisiciones** | 196d | 2017-03-06 A | 2017-12-15 |  | 79% | 0d |  |
| 11 | 1.1.2.1.1 | **Servicio de Terceros - Especialista de Procesos** | 188d | 2017-03-06 A | 2017-12-04 |  | 76% | 8d |  |
| 12 |  | Contratación EP: DOAA | 2d | 2017-03-06 A | 2017-03-07 A |  | 100% |  |  |
| 13 |  | Inducción | 5d | 2017-03-08 A | 2017-03-14 A | 12 | 100% |  |  |
| 14 |  | Informe Mensual N°1 - Marzo | 3d | 2017-04-05 A | 2017-04-07 A | 13SS+20d | 100% |  |  |
| 15 |  | Informe Mensual N°2 - Abril | 3d | 2017-05-04 A | 2017-05-08 A | 13SS+38d | 100% |  |  |
| 16 |  | Contratación EP: ARDLCM | 2d | 2017-05-09 A | 2017-05-10 A | 15 | 100% |  |  |
| 17 |  | Inducción | 2d | 2017-05-11 A | 2017-05-12 A | 16 | 100% |  |  |
| 18 |  | Informe Mensual N°1 - Mayo/Junio | 3d | 2017-06-08 A | 2017-06-12 A | 17SS+20d | 100% |  |  |
| 19 |  | Informe Mensual N°2 - Junio/Julio | 3d | 2017-07-10 A | 2017-07-12 A | 17SS+40d | 100% |  |  |
| 20 |  | Informe Mensual N°3 - Julio/Agosto | 3d | 2017-08-08 A | 2017-08-10 A | 17SS+60d | 100% |  |  |
| 21 |  | Informe Mensual N°4 - Agosto/Setiembre | 3d | 2017-09-08 A | 2017-09-12 A | 17SS+82d | 100% |  |  |
| 22 |  | Informe Mensual N°5 - Setiembre/Octubre | 3d | 2017-10-10 | 2017-10-12 | 17SS+104d |  | 44d |  |
| 23 |  | Informe Mensual N°6 - Octubre/Noviembre | 3d | 2017-11-08 | 2017-11-10 | 17SS+124d |  | 24d |  |
| 24 |  | Informe Mensual N°7 - Noviembre | 3d | 2017-11-30 | 2017-12-04 | 17SS+140d |  | 8d |  |
| 25 | 1.1.2.1.2 | **Servicio de Terceros - Analista de Sistemas** | 186d | 2017-03-06 A | 2017-11-30 |  | 79% | 10d |  |
| 26 |  | Contratación AS: CNV | 2d | 2017-03-06 A | 2017-03-07 A |  | 100% |  |  |
| 27 |  | Inducción | 5d | 2017-03-08 A | 2017-03-14 A | 26 | 100% |  |  |
| 28 |  | Informe Mensual N°1 - Marzo | 3d | 2017-04-05 A | 2017-04-07 A | 27SS+20d | 100% |  |  |
| 29 |  | Informe Mensual N°2 - Abril | 3d | 2017-05-04 A | 2017-05-08 A | 27SS+38d | 100% |  |  |
| 30 |  | Informe Mensual N°3 - Mayo | 3d | 2017-06-05 A | 2017-06-07 A | 27SS+60d | 100% |  |  |
| 31 |  | Contratación AS: GMHA | 6d | 2017-06-08 A | 2017-06-15 A | 30 | 100% |  |  |
| 32 |  | Inducción | 3d | 2017-06-16 A | 2017-06-20 A | 31 | 100% |  |  |
| 33 |  | Informe Mensual N°1 - Junio/Julio | 3d | 2017-07-13 A | 2017-07-17 A | 32SS+17d | 100% |  |  |
| 34 |  | Informe Mensual N°2 - Julio | 3d | 2017-07-26 A | 2017-07-31 A | 32SS+26d | 100% |  |  |
| 35 |  | Informe Mensual N°3 - Agosto | 3d | 2017-08-28 A | 2017-08-31 A | 34SS+22d | 100% |  |  |
| 36 |  | Informe Mensual N°4 - Setiembre | 3d | 2017-09-26 | 2017-09-28 | 34SS+42d |  | 54d |  |
| 37 |  | Informe Mensual N°5 - Octubre | 3d | 2017-10-26 | 2017-10-30 | 34SS+64d |  | 32d |  |
| 38 |  | Informe Mensual N°6 - Noviembre | 3d | 2017-11-28 | 2017-11-30 | 34SS+86d |  | 10d |  |
| 39 | 1.1.2.1.3 | **Servicio de terceros - Analista Programador 1** | 79d | 2017-04-05 A | 2017-08-01 A |  | 100% |  |  |
| 40 |  | Contratación AP1: CDCC | 2d | 2017-04-05 A | 2017-04-06 A |  | 100% |  | start no earlier than 2017-04-05 |
| 41 |  | Inducción | 10d | 2017-04-07 A | 2017-04-24 A | 40 | 100% |  |  |
| 42 |  | Informe Mensual N°1 - Abril | 3d | 2017-05-04 A | 2017-05-08 A | 41SS+16d | 100% |  |  |
| 43 |  | Informe Mensual N°2 - Mayo | 3d | 2017-05-30 A | 2017-06-01 A | 41SS+34d | 100% |  |  |
| 44 |  | Informe Mensual N°3 - Junio | 3d | 2017-06-27 A | 2017-07-03 A | 41SS+54d | 100% |  |  |
| 45 |  | Informe Mensual N°4 - Julio | 3d | 2017-07-27 A | 2017-08-01 A | 41SS+74d | 100% |  |  |
| 46 | 1.1.2.1.4 | **Servicio de terceros - Analista Programador 2** | 127d | 2017-06-14 A | 2017-12-15 |  | 67% | 0d |  |
| 47 |  | Contratación AP2: JBLM | 2d | 2017-06-14 A | 2017-06-15 A |  | 100% |  | start no earlier than 2017-06-14 |
| 48 |  | Inducción | 7d | 2017-06-16 A | 2017-06-26 A | 47 | 100% |  |  |
| 49 |  | Informe Mensual N°1 - Junio/Julio | 3d | 2017-07-13 A | 2017-07-17 A | 48SS+17d | 100% |  |  |
| 50 |  | Informe Mensual N°2 - Julio/Agosto | 3d | 2017-08-14 A | 2017-08-16 A | 48SS+38d | 100% |  |  |
| 51 |  | Informe Mensual N°3 - Agosto/Setiembre | 3d | 2017-09-14 A | 2017-09-18 A | 48SS+60d | 100% |  |  |
| 52 |  | Informe Mensual N°4 - Setiembre/Octubre | 3d | 2017-10-12 | 2017-10-16 | 48SS+80d |  | 42d |  |
| 53 |  | Informe Mensual N°5 - Octubre/Noviembre | 3d | 2017-11-14 | 2017-11-16 | 48SS+102d |  | 20d |  |
| 54 |  | Informe Mensual N°6 - Noviembre/Diciembre | 3d | 2017-12-13 | 2017-12-15 | 48SS+122d |  | 0d |  |
| 55 | 1.1.2.1.5 | **Servicio de terceros - Analista Programador 3** | 53d | 2017-06-14 A | 2017-08-31 A |  | 100% |  |  |
| 56 |  | Contratación AP3: WJTL | 2d | 2017-06-14 A | 2017-06-15 A | 47SS | 100% |  |  |
| 57 |  | Informe Mensual N°1 - Junio/Julio | 3d | 2017-07-13 A | 2017-07-17 A | 48SS+17d | 100% |  |  |
| 58 |  | Informe Mensual N°2 - Julio/Agosto | 3d | 2017-08-14 A | 2017-08-16 A | 48SS+38d | 100% |  |  |
| 59 |  | Informe Mensual N°3 - Agosto | 3d | 2017-08-28 A | 2017-08-31 A | 48SS+48d | 100% |  |  |
| 60 | 1.1.2.1.6 | **Servicio de terceros - Analista Programador 4** | 53d | 2017-06-14 A | 2017-08-31 A |  | 100% |  |  |
| 61 |  | Contratación AP4: MAFG | 2d | 2017-06-14 A | 2017-06-15 A | 47SS | 100% |  |  |
| 62 |  | Informe Mensual N°1 - Junio/Julio | 3d | 2017-07-13 A | 2017-07-17 A | 48SS+17d | 100% |  |  |
| 63 |  | Informe Mensual N°2 - Julio/Agosto | 3d | 2017-08-14 A | 2017-08-16 A | 48SS+38d | 100% |  |  |
| 64 |  | Informe Mensual N°3 - Agosto | 3d | 2017-08-28 A | 2017-08-31 A | 48SS+48d | 100% |  |  |
| 65 | 1.1.2.1.7 | **Servicio de terceros - Analista Programador 5** | 109d | 2017-07-03 A | 2017-12-05 |  | 57% | 7d |  |
| 66 |  | Contratación AP5: EPLC | 2d | 2017-07-03 A | 2017-07-04 A |  | 100% |  | start no earlier than 2017-07-03 |
| 67 |  | Inducción | 4d | 2017-07-05 A | 2017-07-10 A | 66 | 100% |  |  |
| 68 |  | Informe Mensual N°1 - Julio | 3d | 2017-08-01 A | 2017-08-03 A | 67SS+18d | 100% |  |  |
| 69 |  | Informe Mensual N°1 - Agosto | 3d | 2017-08-29 A | 2017-09-01 A | 67SS+38d | 100% |  |  |
| 70 |  | Informe Mensual N°1 - Setiembre | 3d | 2017-09-29 | 2017-10-03 | 67SS+60d |  | 51d |  |

| ID | WBS | Task | Duration | Start | Finish | Predecessors | Complete | Total float | Constraint |
| --- | --- | --- | --- | --- | --- | --- | --- | --- | --- |
| 71 |  | Informe Mensual N°2 - Octubre | 3d | 2017-10-31 | 2017-11-03 | 67SS+82d |  | 29d |  |
| 72 |  | Informe Mensual N°3 - Noviembre | 3d | 2017-12-01 | 2017-12-05 | 67SS+104d |  | 7d |  |
| 73 | 1.1.3 | **Seguimiento y Control** | 146d | 2017-05-05 A | 2017-12-01 |  | 53% | 9d |  |
| 74 | 1.1.3.1 | **Informe Mensual** | 110d | 2017-06-26 A | 2017-12-01 |  | 50% | 9d |  |
| 75 |  | Informe Mensual - junio | 5d | 2017-06-26 A | 2017-07-04 A |  | 100% |  | start no earlier than 2017-06-26 |
| 76 |  | Informe Mensual - julio | 5d | 2017-07-26 A | 2017-08-02 A |  | 100% |  | start no earlier than 2017-07-26 |
| 77 |  | Informe Mensual - agosto | 5d | 2017-08-28 A | 2017-09-04 A |  | 100% |  | start no earlier than 2017-08-26 |
| 78 |  | Informe Mensual - setiembre | 5d | 2017-09-26 | 2017-10-02 |  |  | 52d | start no earlier than 2017-09-26 |
| 79 |  | Informe Mensual - octubre | 5d | 2017-10-26 | 2017-11-02 |  |  | 30d | start no earlier than 2017-10-26 |
| 80 |  | Informe Mensual - noviembre | 5d | 2017-11-27 | 2017-12-01 |  |  | 9d | start no earlier than 2017-11-26 |
| 81 | 1.1.3.2 | **Reunión de Estado Semanal** | 145.19d | 2017-05-05 A | 2017-12-01 |  | 68% | 9.81d |  |
| 82 |  | Reunión de Estado - Semana 1 | 1.5h | 2017-05-05 A | 2017-05-05 A |  | 100% |  | start no earlier than 2017-05-05 |
| 83 |  | Reunión de Estado - Semana 2 | 1.5h | 2017-05-12 A | 2017-05-12 A |  | 100% |  | start no earlier than 2017-05-12 |
| 84 |  | Reunión de Estado - Semana 3 | 1.5h | 2017-05-19 A | 2017-05-19 A |  | 100% |  | start no earlier than 2017-05-19 |
| 85 |  | Reunión de Estado - Semana 4 | 1.5h | 2017-05-26 A | 2017-05-26 A |  | 100% |  | start no earlier than 2017-05-26 |
| 86 |  | Reunión de Estado - Semana 5 | 1.5h | 2017-06-02 A | 2017-06-02 A |  | 100% |  | start no earlier than 2017-06-02 |
| 87 |  | Reunión de Estado - Semana 6 | 1.5h | 2017-06-09 A | 2017-06-09 A |  | 100% |  | start no earlier than 2017-06-09 |
| 88 |  | Reunión de Estado - Semana 7 | 1.5h | 2017-06-16 A | 2017-06-16 A |  | 100% |  | start no earlier than 2017-06-16 |
| 89 |  | Reunión de Estado - Semana 8 | 1.5h | 2017-06-23 A | 2017-06-23 A |  | 100% |  | start no earlier than 2017-06-23 |
| 90 |  | Reunión de Estado - Semana 9 | 1.5h | 2017-07-03 A | 2017-07-03 A |  | 100% |  | start no earlier than 2017-06-30 |
| 91 |  | Reunión de Estado - Semana 10 | 1.5h | 2017-07-07 A | 2017-07-07 A |  | 100% |  | start no earlier than 2017-07-07 |
| 92 |  | Reunión de Estado - Semana 11 | 1.5h | 2017-07-14 A | 2017-07-14 A |  | 100% |  | start no earlier than 2017-07-14 |
| 93 |  | Reunión de Estado - Semana 12 | 1.5h | 2017-07-21 A | 2017-07-21 A |  | 100% |  | start no earlier than 2017-07-21 |
| 94 |  | Reunión de Estado - Semana 13 | 1.5h | 2017-07-31 A | 2017-07-31 A |  | 100% |  | start no earlier than 2017-07-28 |
| 95 |  | Reunión de Estado - Semana 14 | 1.5h | 2017-08-04 A | 2017-08-04 A |  | 100% |  | start no earlier than 2017-08-04 |
| 96 |  | Reunión de Estado - Semana 15 | 1.5h | 2017-08-11 A | 2017-08-11 A |  | 100% |  | start no earlier than 2017-08-11 |
| 97 |  | Reunión de Estado - Semana 16 | 1.5h | 2017-08-18 A | 2017-08-18 A |  | 100% |  | start no earlier than 2017-08-18 |
| 98 |  | Reunión de Estado - Semana 17 | 1.5h | 2017-08-25 A | 2017-08-25 A |  | 100% |  | start no earlier than 2017-08-25 |
| 99 |  | Reunión de Estado - Semana 18 | 1.5h | 2017-09-01 A | 2017-09-01 A |  | 100% |  | start no earlier than 2017-09-01 |
| 100 |  | Reunión de Estado - Semana 19 | 1.5h | 2017-09-08 A | 2017-09-08 A |  | 100% |  | start no earlier than 2017-09-08 |
| 101 |  | Reunión de Estado - Semana 20 | 1.5h | 2017-09-15 A | 2017-09-15 A |  | 100% |  | start no earlier than 2017-09-15 |
| 102 |  | Reunión de Estado - Semana 21 | 1.5h | 2017-09-22 A | 2017-09-22 A |  | 100% |  | start no earlier than 2017-09-22 |
| 103 |  | Reunión de Estado - Semana 22 | 1.5h | 2017-09-29 | 2017-09-29 |  |  | 53.81d | start no earlier than 2017-09-29 |
| 104 |  | Reunión de Estado - Semana 23 | 1.5h | 2017-10-06 | 2017-10-06 |  |  | 48.81d | start no earlier than 2017-10-06 |
| 105 |  | Reunión de Estado - Semana 24 | 1.5h | 2017-10-13 | 2017-10-13 |  |  | 43.81d | start no earlier than 2017-10-13 |
| 106 |  | Reunión de Estado - Semana 25 | 1.5h | 2017-10-20 | 2017-10-20 |  |  | 38.81d | start no earlier than 2017-10-20 |
| 107 |  | Reunión de Estado - Semana 26 | 1.5h | 2017-10-27 | 2017-10-27 |  |  | 33.81d | start no earlier than 2017-10-27 |
| 108 |  | Reunión de Estado - Semana 27 | 1.5h | 2017-11-03 | 2017-11-03 |  |  | 29.81d | start no earlier than 2017-11-03 |
| 109 |  | Reunión de Estado - Semana 28 | 1.5h | 2017-11-10 | 2017-11-10 |  |  | 24.81d | start no earlier than 2017-11-10 |
| 110 |  | Reunión de Estado - Semana 29 | 1.5h | 2017-11-17 | 2017-11-17 |  |  | 19.81d | start no earlier than 2017-11-17 |
| 111 |  | Reunión de Estado - Semana 30 | 1.5h | 2017-11-24 | 2017-11-24 |  |  | 14.81d | start no earlier than 2017-11-24 |
| 112 |  | Reunión de Estado - Semana 31 | 1.5h | 2017-12-01 | 2017-12-01 |  |  | 9.81d | start no earlier than 2017-12-01 |
| 113 | 1.1.4 | **Cierre** | 5d | 2017-11-30 | 2017-12-07 |  |  | 5.5d |  |
| 114 |  | Elaboración de informe de Cierre | 5d | 2017-11-30 | 2017-12-07 | 269 |  | 5.5d |  |
| 115 |  | Informe de Cierre | 0d | 2017-12-07 | 2017-12-07 | 114 |  | 5.5d |  |
| 116 | 1.2 | **Actividades de Ingeniería** | 179d | 2017-03-15 A | 2017-11-30 |  | 72% | 10d |  |
| 117 | 1.2.1 | **Planificación** | 43.38d | 2017-03-15 A | 2017-05-18 A |  | 100% |  |  |
| 118 |  | Elaboración de Ficha de Relevamiento v1.0 | 22d | 2017-03-15 A | 2017-04-17 A | 13 | 100% |  |  |
| 119 |  | Revisión Ficha de Relevamiento v 1.0 | 6d | 2017-04-18 A | 2017-04-25 A | 118 | 100% |  |  |
| 120 |  | Elaboración de Ficha de Relevamiento v2.0 | 5d | 2017-05-09 A | 2017-05-15 A | 15 | 100% |  |  |
| 121 |  | Revisión Ficha de Relevamiento v 2.0 | 2d | 2017-05-16 A | 2017-05-17 A | 120 | 100% |  |  |
| 122 |  | Firma Ficha de Relevamiento v2.0 | 3h | 2017-05-18 A | 2017-05-18 A | 121 | 100% |  |  |
| 123 |  | Ficha de Relevamiento | 0d | 2017-05-18 A | 2017-05-18 A | 122 | 100% |  |  |
| 124 | 1.2.2 | **Modelado de Procesos** | 50.38d | 2017-04-18 A | 2017-06-28 A |  | 100% |  |  |
| 125 | 1.2.2.1 | **Ficha Técnica del Proceso** | 50.38d | 2017-04-18 A | 2017-06-28 A |  | 100% |  |  |
| 126 |  | Elaborar FTP Gestión de Afiliación v1.0 | 8d | 2017-04-18 A | 2017-04-27 A | 118 | 100% |  |  |
| 127 |  | Revisión FTP Gestión de Afiliación v1.0 | 2d | 2017-04-28 A | 2017-05-02 A | 126 | 100% |  |  |
| 128 |  | Elaborar FTP Gestión de Afiliación v2.0 | 11d | 2017-05-15 A | 2017-05-29 A | 17 | 100% |  |  |
| 129 |  | Revisión FTP Gestión de Afiliación v2.0 | 2d | 2017-05-30 A | 2017-05-31 A | 128 | 100% |  |  |
| 130 |  | Firma FTP Gestión de Afiliación v2.0 | 3h | 2017-06-01 A | 2017-06-01 A | 129 | 100% |  |  |
| 131 |  | Elaborar FTP Registro de Ciudadano v1.0 | 8d | 2017-04-18 A | 2017-04-27 A | 126SS | 100% |  |  |
| 132 |  | Revisión FTP Registro de Ciudadano v1.0 | 2d | 2017-04-28 A | 2017-05-02 A | 131 | 100% |  |  |
| 133 |  | Elaborar FTP Registro de Ciudadano v2.0 | 11d | 2017-05-15 A | 2017-05-29 A | 17 | 100% |  |  |
| 134 |  | Revisión FTP Registro de Ciudadano v2.0 | 2d | 2017-05-30 A | 2017-05-31 A | 133 | 100% |  |  |
| 135 |  | Firma FTP Registro de Ciudadano v2.0 | 3h | 2017-06-01 A | 2017-06-01 A | 134 | 100% |  |  |
| 136 |  | Elaborar FTP Registro de DDJJ Vehicular v1.0 | 5d | 2017-04-28 A | 2017-05-05 A | 131 | 100% |  |  |
| 137 |  | Revisión FTP Registro de DDJJ Vehicular v1.0 | 1d | 2017-05-08 A | 2017-05-08 A | 136 | 100% |  |  |
| 138 |  | Elaborar FTP Registro de DDJJ Vehicular v2.0 | 3.5d | 2017-05-30 A | 2017-06-02 A | 133 | 100% |  |  |
| 139 |  | Revisión FTP Registro de DDJJ Vehicular v2.0 | 1d | 2017-06-02 A | 2017-06-05 A | 138 | 100% |  |  |
| 140 |  | Firma FTP Registro de DDJJ Vehicular v2.0 | 3h | 2017-06-05 A | 2017-06-05 A | 139 | 100% |  |  |

| ID | WBS | Task | Duration | Start | Finish | Predecessors | Complete | Total float | Constraint |
| --- | --- | --- | --- | --- | --- | --- | --- | --- | --- |
| 141 |  | Elaborar FTP Registro de Liquidación de Alcabala v2.0 | 5d | 2017-06-19 A | 2017-06-23 A |  | 100% |  | start no earlier than 2017-06-19 |
| 142 |  | Revisión FTP Registro de Liquidación de Alcabala v2.0 | 2d | 2017-06-26 A | 2017-06-27 A | 141 | 100% |  |  |
| 143 |  | Firma FTP Registro de Liquidación de Alcabala v2.0 | 3h | 2017-06-28 A | 2017-06-28 A | 142 | 100% |  |  |
| 144 |  | Ficha Técnica del Proceso | 0d | 2017-06-28 A | 2017-06-28 A | 143 | 100% |  |  |
| 145 | 1.2.3 | **Análisis y Diseño de Sistemas** | 94.25d | 2017-04-18 A | 2017-09-04 A |  | 100% |  |  |
| 146 | 1.2.3.1 | **Análisis Funcional** | 38d | 2017-04-18 A | 2017-06-09 A |  | 100% |  |  |
| 147 |  | Elaborar Documento Funcional Gestión de Afiliación | 13d | 2017-04-18 A | 2017-05-05 A | 118 | 100% |  |  |
| 148 |  | Revisión y firma DF Gestión de Afiliación | 5d | 2017-05-26 A | 2017-06-01 A | 149 | 100% |  |  |
| 149 |  | Elaborar Documento Funcional Registro de Ciudadano | 14d | 2017-05-08 A | 2017-05-25 A | 147 | 100% |  |  |
| 150 |  | Revisión y firma DF Registro de Ciudadano | 5d | 2017-05-26 A | 2017-06-01 A | 148SS | 100% |  |  |
| 151 |  | Elaborar Documento Funcional Registro DDJJ Vehicular | 8d | 2017-05-26 A | 2017-06-06 A | 149 | 100% |  |  |
| 152 |  | Revisión y firma DF Registro DDJJ Vehicular | 3d | 2017-06-07 A | 2017-06-09 A | 151 | 100% |  |  |
| 153 |  | Documento de Definición Funcional | 0d | 2017-06-09 A | 2017-06-09 A | 152 | 100% |  |  |
| 154 | 1.2.3.2 | **Análisis Técnico** | 59.25d | 2017-06-07 A | 2017-09-04 A |  | 100% |  |  |
| 155 |  | Elaborar Documento Técnico de Gestión de Afiliación I | 8d | 2017-06-07 A | 2017-06-16 A | 151 | 100% |  |  |
| 156 |  | Elaborar Documento Técnico de Gestión de Afiliación II | 2d | 2017-06-19 A | 2017-06-20 A | 155 | 100% |  |  |
| 157 |  | Revisión DT Gestión de Afiliación | 2d | 2017-06-21 A | 2017-06-22 A | 156 | 100% |  |  |
| 158 |  | Firma DT Gestión de Afiliación | 2h | 2017-06-23 A | 2017-06-23 A | 157 | 100% |  |  |
| 159 |  | Elaborar Documento Técnico de Registro de Ciudadano | 16d | 2017-06-23 A | 2017-07-18 A | 157 | 100% |  |  |
| 160 |  | Revisión DT Registro de Ciudadano | 5d | 2017-07-19 A | 2017-07-25 A | 159 | 100% |  |  |
| 161 |  | Firma DT Registro de Ciudadano | 2h | 2017-07-26 A | 2017-07-26 A | 160 | 100% |  |  |
| 162 |  | Elaborar Documento Técnico de Registro de DDJJ Vehicular | 23d | 2017-07-26 A | 2017-08-28 A | 160 | 100% |  |  |
| 163 |  | Revisión DT Registro de DDJJ Vehicular | 3d | 2017-08-29 A | 2017-09-01 A | 162 | 100% |  |  |
| 164 |  | Firma DT Registro de DDJJ Vehicular | 2h | 2017-09-04 A | 2017-09-04 A | 163 | 100% |  |  |
| 165 |  | Documento Técnico de Sistemas | 0d | 2017-09-04 A | 2017-09-04 A | 164 | 100% |  |  |
| 166 | 1.2.4 | **Construcción** | 107.5d | 2017-06-27 A | 2017-11-30 |  | 62% | 10.5d |  |
| 167 | 1.2.4.1 | **Prototipos e Interfaces** | 25.5d | 2017-06-27 A | 2017-08-04 A |  | 100% |  |  |
| 168 |  | Elaboración de interfaces | 22d | 2017-06-27 A | 2017-07-31 A | 48 | 100% |  |  |
| 169 |  | Estandarización de Interfaces según diseño propuesto | 16h | 2017-08-01 A | 2017-08-02 A | 168 | 100% |  |  |
| 170 |  | Análisis de interfaces según asignación de trabajo | 8h | 2017-08-03 A | 2017-08-03 A | 169 | 100% |  |  |
| 171 |  | Habilitación de Fuentes en Visual SourceSafe | 4h | 2017-08-04 A | 2017-08-04 A | 170 | 100% |  |  |
| 172 | 1.2.4.2 | **Componente 1: Gestión de Afiliación** | 44.75d | 2017-08-04 A | 2017-10-09 |  | 86% | 47.75d |  |
| 173 | 1.2.4.2.1 | **Creación de BD** | 14.5d | 2017-08-04 A | 2017-08-24 A |  | 100% |  |  |
| 174 |  | Análisis del modelo de datos | 12h | 2017-08-04 A | 2017-08-07 A | 171 | 100% |  |  |
| 175 |  | Modificación y ajustes del Modelo de datos | 16h | 2017-08-08 A | 2017-08-09 A | 174 | 100% |  |  |
| 176 |  | Elaboración de scripts para la creación de BD | 12h | 2017-08-10 A | 2017-08-11 A | 175 | 100% |  |  |
| 177 |  | Validación de scripts y estándares | 4h | 2017-08-11 A | 2017-08-11 A | 176 | 100% |  |  |
| 178 |  | Validación de accesos | 2h | 2017-08-14 A | 2017-08-14 A | 177 | 100% |  |  |
| 179 |  | Ejecución de scripts de creación de BD | 8h | 2017-08-14 A | 2017-08-15 A | 178 | 100% |  |  |
| 180 |  | Levantamiento de Observaciones | 8h | 2017-08-24 A | 2017-08-24 A |  | 100% |  |  |
| 181 | 1.2.4.2.2 | **Implementación de Registro de Afiliación** | 13d | 2017-08-14 A | 2017-08-31 A |  | 100% |  |  |
| 182 |  | Implementación de procedimientos | 16h | 2017-08-15 A | 2017-08-17 A | 179 | 100% |  |  |
| 183 |  | Validaciones y reglas de negocio | 16h | 2017-08-17 A | 2017-08-21 A | 182 | 100% |  |  |
| 184 |  | Implementación de Capcha | 4h | 2017-08-21 A | 2017-08-21 A | 183 | 100% |  |  |
| 185 |  | Implementación de envío de correo | 52h | 2017-08-21 A | 2017-08-31 A | 184 | 100% |  |  |
| 186 |  | Registro de Datos | 12h | 2017-08-23 A | 2017-08-24 A | 185 | 100% |  |  |
| 187 |  | Adecuación del diseño según observaciones del usuario | 8h | 2017-08-22 A | 2017-08-22 A |  | 100% |  | start no earlier than 2017-08-22 |
| 188 |  | Implementación de Términos y condiciones | 2h | 2017-08-14 A | 2017-08-14 A | 177 | 100% |  |  |
| 189 |  | Consulta de datos al SIAT | 8h | 2017-08-16 A | 2017-08-16 A | 188SS+2d | 100% |  |  |
| 190 |  | Implementación de formato de DJ Afiliación | 24h | 2017-08-17 A | 2017-08-21 A | 189 | 100% |  |  |
| 191 |  | Validaciones de cliente (Campos y mensajes) | 12h | 2017-08-29 A | 2017-08-31 A |  | 100% |  | start no earlier than 2017-08-29 |
| 192 |  | Implementación de canales externos | 4h | 2017-08-31 A | 2017-08-31 A | 191 | 100% |  |  |
| 193 | 1.2.4.2.3 | **Implementación Habilitar Usuario** | 30.75d | 2017-08-15 A | 2017-09-27 |  | 93% | 47.75d |  |
| 194 |  | Implementación de procedimientos | 8h | 2017-08-15 A | 2017-08-16 A | 179 | 100% |  |  |
| 195 |  | Validaciones y reglas de negocio | 8h | 2017-08-16 A | 2017-08-17 A | 194 | 100% |  |  |
| 196 |  | Funcionalidad de Vista Preliminar e Imprimir | 12h | 2017-08-17 A | 2017-08-18 A | 195 | 100% |  |  |
| 197 |  | Funcionalidades Modificar e Imprimir | 8h | 2017-08-18 A | 2017-08-21 A | 196 | 100% |  |  |
| 198 |  | Recuperación de datos (servicio PIDE) | 8h | 2017-08-21 A | 2017-08-22 A | 197 | 100% |  |  |
| 199 |  | Consulta de Datos desde SIAT | 16h | 2017-08-21 A | 2017-08-22 A |  | 100% |  | start no earlier than 2017-08-21 |
| 200 |  | Adecuación del diseño según observaciones del usuario | 8h | 2017-08-22 A | 2017-08-23 A | 198 | 100% |  |  |
| 201 |  | Validaciones de cliente (Campos y mensajes) | 48h | 2017-08-28 A | 2017-09-05 A |  | 100% |  | start no earlier than 2017-08-28 |
| 202 |  | Implementar habilitación desde canales externos | 12h | 2017-09-06 A | 2017-09-07 A | 201 | 100% |  |  |
| 203 |  | Implementación de validación de domicilio | 16h | 2017-09-07 A | 2017-09-11 A | 202 | 100% |  |  |
| 204 |  | Corrección de observaciones de código | 24h | 2017-09-11 A | 2017-09-14 A | 203 | 100% |  |  |
| 205 |  | Validación del desarrollo | 60h | 2017-09-14 A | 2017-09-25 A | 204 | 100% |  |  |
| 206 |  | Ajustes al desarrollo | 16h | 2017-09-26 | 2017-09-27 | 205 |  | 47.75d |  |
| 207 | 1.2.4.2.4 | **Pruebas** | 5.25d | 2017-09-28 | 2017-10-05 |  |  | 47.75d |  |
| 208 |  | Definición de Casos de pruebas | 2h | 2017-09-28 | 2017-09-28 | 206 |  | 47.75d |  |
| 209 |  | Validación de data de Prueba | 1h | 2017-09-28 | 2017-09-28 | 208 |  | 47.75d |  |
| 210 |  | Pruebas Unitarias | 4h | 2017-09-28 | 2017-09-28 | 209 |  | 47.75d |  |

| ID | WBS | Task | Duration | Start | Finish | Predecessors | Complete | Total float | Constraint |
| --- | --- | --- | --- | --- | --- | --- | --- | --- | --- |
| 211 |  | Ajustes | 1h | 2017-09-28 | 2017-09-28 | 210 |  | 47.75d |  |
| 212 |  | Validación Final | 2h | 2017-09-29 | 2017-09-29 | 211 |  | 47.75d |  |
| 213 |  | Revisión del pase por parte del A.F.C.C.T.I. | 8h | 2017-09-29 | 2017-10-02 | 212 |  | 47.75d |  |
| 214 |  | Pruebas de Aceptación | 24h | 2017-10-02 | 2017-10-05 | 213 |  | 47.75d |  |
| 215 |  | Solicitud de Pase a Producción | 16h | 2017-10-05 | 2017-10-09 | 214 |  | 47.75d |  |
| 216 | 1.2.4.3 | **Componente 2: Registro del Ciudadano** | 51.5d | 2017-08-04 A | 2017-10-17 |  | 66% | 41d |  |
| 217 | 1.2.4.3.1 | **Creación de BD** | 9d | 2017-08-04 A | 2017-08-17 A |  | 100% |  |  |
| 218 |  | Análisis del modelo de datos | 24h | 2017-08-04 A | 2017-08-09 A | 171 | 100% |  |  |
| 219 |  | Modificación y ajustes del Modelo de datos actual | 16h | 2017-08-09 A | 2017-08-11 A | 218 | 100% |  |  |
| 220 |  | Elaboración de scripts para la creación de BD | 16h | 2017-08-11 A | 2017-08-15 A | 219 | 100% |  |  |
| 221 |  | Validación de scripts y estándares | 8h | 2017-08-15 A | 2017-08-16 A | 220 | 100% |  |  |
| 222 |  | Ejecución de scripts de creación de BD | 8h | 2017-08-16 A | 2017-08-17 A | 221 | 100% |  |  |
| 223 | 1.2.4.3.2 | **Implementación de Registro del Ciudadano** | 29d | 2017-08-17 A | 2017-09-28 |  | 91% | 41d |  |
| 224 |  | Implementación de procedimientos | 24h | 2017-08-17 A | 2017-08-22 A | 222 | 100% |  |  |
| 225 |  | Validaciones y reglas de negocio | 24h | 2017-08-22 A | 2017-08-25 A | 224 | 100% |  |  |
| 226 |  | Registro de Dirección | 40h | 2017-08-25 A | 2017-09-04 A | 225 | 100% |  |  |
| 227 |  | Corrección de observaciones de código | 8h | 2017-09-04 A | 2017-09-05 A | 226 | 100% |  |  |
| 228 |  | Implementación de funcionalidad de correlativos y parámetros | 12h | 2017-09-05 A | 2017-09-06 A | 227 | 100% |  |  |
| 229 |  | Implementación de validación de domicilio | 24h | 2017-09-07 A | 2017-09-11 A | 228 | 100% |  |  |
| 230 |  | Datos de Contacto | 12h | 2017-09-12 A | 2017-09-13 A | 229 | 100% |  |  |
| 231 |  | Datos del Relacionado | 24h | 2017-09-13 A | 2017-09-18 A | 230 | 100% |  |  |
| 232 |  | Datos de Delegado | 8h | 2017-09-26 | 2017-09-27 | 272 |  | 41d |  |
| 233 |  | Registro de Datos | 8h | 2017-09-27 | 2017-09-28 | 232 |  | 41d |  |
| 234 | 1.2.4.3.3 | **Pruebas** | 11.5d | 2017-09-28 | 2017-10-13 |  |  | 41d |  |
| 235 |  | Definición de Casos de pruebas | 6h | 2017-09-28 | 2017-09-29 | 233 |  | 41d |  |
| 236 |  | Validación de data de Prueba | 6h | 2017-09-29 | 2017-09-29 | 235 |  | 41d |  |
| 237 |  | Pruebas Unitarias | 16h | 2017-10-02 | 2017-10-03 | 236 |  | 41d |  |
| 238 |  | Ajustes | 8h | 2017-10-04 | 2017-10-04 | 237 |  | 41d |  |
| 239 |  | Validación Final | 8h | 2017-10-05 | 2017-10-05 | 238 |  | 41d |  |
| 240 |  | Revisión del pase por parte del A.F.C.C.T.I. | 8h | 2017-10-06 | 2017-10-06 | 239 |  | 41d |  |
| 241 |  | Pruebas de Aceptación | 40h | 2017-10-09 | 2017-10-13 | 240 |  | 41d |  |
| 242 |  | Solicitud de Pase a Producción | 16h | 2017-10-16 | 2017-10-17 | 241 |  | 41d |  |
| 243 | 1.2.4.4 | **Componente 3: Registro Vehicular** | 42.5d | 2017-10-02 | 2017-11-30 |  |  | 5.5d |  |
| 244 | 1.2.4.4.1 | **Creación de BD** | 9d | 2017-10-02 | 2017-10-12 |  |  | 5.5d |  |
| 245 |  | Análisis del modelo de datos | 24h | 2017-10-02 | 2017-10-04 |  |  | 5.5d | start no earlier than 2017-10-02 |
| 246 |  | Modificación y ajustes del Modelo de datos actual | 16h | 2017-10-05 | 2017-10-06 | 245 |  | 5.5d |  |
| 247 |  | Elaboración de scripts para la creación de BD | 16h | 2017-10-09 | 2017-10-10 | 246 |  | 5.5d |  |
| 248 |  | Validación de scripts y estándares | 8h | 2017-10-11 | 2017-10-11 | 247 |  | 5.5d |  |
| 249 |  | Ejecución de scripts de creación de BD | 8h | 2017-10-12 | 2017-10-12 | 248 |  | 5.5d |  |
| 250 | 1.2.4.4.2 | **Implementación de Registro Vehicular** | 19.5d | 2017-10-13 | 2017-11-10 |  |  | 5.5d |  |
| 251 |  | Validaciones y reglas de negocio | 24h | 2017-10-13 | 2017-10-17 | 249 |  | 5.5d |  |
| 252 |  | Consulta de DJ Vehicular | 24h | 2017-10-18 | 2017-10-20 | 251 |  | 5.5d |  |
| 253 |  | Validación de Declaración Juarada | 12h | 2017-10-23 | 2017-10-24 | 252 |  | 5.5d |  |
| 254 |  | Registro del Vehículo | 24h | 2017-10-24 | 2017-10-27 | 253 |  | 5.5d |  |
| 255 |  | Registro de Datos de Adquisición | 16h | 2017-10-27 | 2017-10-31 | 254 |  | 5.5d |  |
| 256 |  | Registro de Transferente | 8h | 2017-10-31 | 2017-11-02 | 255 |  | 5.5d |  |
| 257 |  | Funcionalidad de Vista Preliminar e Imprimir | 16h | 2017-11-02 | 2017-11-06 | 256 |  | 5.5d |  |
| 258 |  | Implementación de envío de correo | 16h | 2017-11-06 | 2017-11-08 | 257 |  | 5.5d |  |
| 259 |  | Registro de Datos | 16h | 2017-11-08 | 2017-11-10 | 258 |  | 5.5d |  |
| 260 | 1.2.4.4.3 | **Pruebas** | 13d | 2017-11-10 | 2017-11-29 |  |  | 5.5d |  |
| 261 |  | Definición de Casos de pruebas | 8h | 2017-11-10 | 2017-11-13 | 259 |  | 5.5d |  |
| 262 |  | Validación de data de Prueba | 8h | 2017-11-13 | 2017-11-14 | 261 |  | 5.5d |  |
| 263 |  | Pruebas Unitarias | 24h | 2017-11-14 | 2017-11-17 | 262 |  | 5.5d |  |
| 264 |  | Ajustes | 8h | 2017-11-17 | 2017-11-20 | 263 |  | 5.5d |  |
| 265 |  | Validación Final | 8h | 2017-11-20 | 2017-11-21 | 264 |  | 5.5d |  |
| 266 |  | Revisión del pase por parte del A.F.C.C.T.I. | 16h | 2017-11-21 | 2017-11-23 | 265 |  | 5.5d |  |
| 267 |  | Pruebas de Aceptación | 32h | 2017-11-23 | 2017-11-29 | 266 |  | 5.5d |  |
| 268 |  | Solicitud de Pase a Producción | 8h | 2017-11-29 | 2017-11-30 | 267 |  | 5.5d |  |
| 269 |  | Pase a Producción | 0d | 2017-11-30 | 2017-11-30 | 268 |  | 5.5d |  |
| 270 | 1.2.5 | **Apoyo al módulo de seguridad** | 3d | 2017-09-21 A | 2017-09-26 |  | 83% | 41d |  |
| 271 |  | Desarrollo de procedimientos de consulta ciudadano | 16h | 2017-09-21 A | 2017-09-25 A | 231 | 100% |  |  |
| 272 |  | Preparación de data de prueba | 8h | 2017-09-25 A | 2017-09-26 | 271 | 50% | 41d |  |
| 273 | 1.2.6 | **Actividades Complementarias** | 79d | 2017-08-10 A | 2017-11-30 |  | 52% | 10d |  |
| 274 | 1.2.6.1 | **Elaboración de procedimientos** | 43d | 2017-08-10 A | 2017-10-10 |  | 72% | 46d |  |
| 275 |  | Elaboración de Procedimiento de Control de Calidad de Registro por Entidades Externas | 16d | 2017-08-10 A | 2017-09-01 A |  | 100% |  | start no earlier than 2017-08-10 |
| 276 |  | Elaboración de procedimiento de registro de ciudadano en Agencia Virtual | 14d | 2017-08-28 A | 2017-09-15 A | 280 | 100% |  |  |
| 277 |  | Elaboración de Procedimiento de Atención de Consultas del uso de la Agencia Virtual | 15d | 2017-09-13 A | 2017-10-03 |  | 60% | 51d | start no earlier than 2017-09-13 |
| 278 |  | Elaboración de procedimiento de Control de Calidad de Registro en Agencia Virtual | 15d | 2017-09-20 A | 2017-10-10 | 277SS+5d | 27% | 10d |  |
| 279 | 1.2.6.2 | **Actualización de Formatos** | 16d | 2017-08-10 A | 2017-09-01 |  | 99% | 0d |  |
| 280 |  | Declaración Jurada de Impuesto vehicular para Agencia Virtual | 12d | 2017-08-10 A | 2017-08-25 A | 275SS | 100% |  |  |

| ID | WBS | Task | Duration | Start | Finish | Predecessors | Complete | Total float | Constraint |
| --- | --- | --- | --- | --- | --- | --- | --- | --- | --- |
| 281 |  | Declaración Jurada de Acceso a la Agencia Virtual (Digital) | 14d | 2017-08-14 A | 2017-09-01 | 275SS+2d | 99% | 0d |  |
| 282 |  | Declaración Jurada de Acceso a la Agencia Virtual (Manual) | 14d | 2017-08-14 A | 2017-09-01 | 275SS+2d | 99% | 0d |  |
| 283 | 1.2.6.3 | **Dimensionamiento** | 36d | 2017-10-11 | 2017-11-30 |  |  | 10d |  |
| 284 |  | Elaboración de informe de Dimensionamiento I | 31d | 2017-10-11 | 2017-11-23 | 278 |  | 10d |  |
| 285 |  | Revisión y Aprobación | 5d | 2017-11-24 | 2017-11-30 | 284 |  | 10d |  |
| 286 |  | Elaboración de Matriz de Trazabilidad de Requisitos | 5d | 2017-08-18 A | 2017-08-24 A |  | 100% |  | start no earlier than 2017-08-18 |
| 287 |  | Actualización de Documentación Técnica | 68d | 2017-08-24 A | 2017-11-30 | 269FF | 32% | 10.5d |  |

## Version 2 (data date 2017-09-30, saved 2017-10-27)

Last finish stays 2017-12-15.

Changed:

| ID | Task | Start | Finish | Duration | Total float | Other |
| --- | --- | --- | --- | --- | --- | --- |
| 36 | Informe Mensual N°4 - Setiembre | 2017-09-26 → 2017-10-02 (+6d) | 2017-09-28 → 2017-10-04 (+6d) |  | 54d → 50d | constraint none → start no earlier than 2017-09-30 |
| 70 | Informe Mensual N°1 - Setiembre | 2017-09-29 → 2017-10-02 (+3d) | 2017-10-03 → 2017-10-04 (+1d) |  | 51d → 50d | constraint none → start no earlier than 2017-09-30 |
| 78 | Informe Mensual - setiembre | 2017-09-26 → 2017-10-02 (+6d) | 2017-10-02 → 2017-10-06 (+4d) |  | 52d → 48d | constraint start no earlier than 2017-09-26 → start no earlier than 2017-09-30 |
| 103 | Reunión de Estado - Semana 22 | 2017-09-29 → 2017-10-02 (+3d) | 2017-09-29 → 2017-10-02 (+3d) |  | 53.81d → 52.81d | constraint start no earlier than 2017-09-29 → start no earlier than 2017-09-30 |
| 116 | **Actividades de Ingeniería** |  | 2017-11-30 → 2017-12-06 (+6d) | 179d → 183d | 10d → 6d |  |
| 172 | **Componente 1: Gestión de Afiliación** |  | 2017-10-09 → 2017-10-13 (+4d) | 44.75d → 48.75d | 47.75d → 43.75d |  |
| 193 | **Implementación Habilitar Usuario** |  | 2017-09-27 → 2017-10-03 (+6d) | 30.75d → 34.75d | 47.75d → 43.75d |  |
| 206 | Ajustes al desarrollo | 2017-09-26 → 2017-10-02 (+6d) | 2017-09-27 → 2017-10-03 (+6d) |  | 47.75d → 43.75d | constraint none → start no earlier than 2017-09-30 |
| 207 | **Pruebas** | 2017-09-28 → 2017-10-04 (+6d) | 2017-10-05 → 2017-10-11 (+6d) |  | 47.75d → 43.75d |  |
| 208 | Definición de Casos de pruebas | 2017-09-28 → 2017-10-04 (+6d) | 2017-09-28 → 2017-10-04 (+6d) |  | 47.75d → 43.75d | constraint none → start no earlier than 2017-09-30 |
| 209 | Validación de data de Prueba | 2017-09-28 → 2017-10-04 (+6d) | 2017-09-28 → 2017-10-04 (+6d) |  | 47.75d → 43.75d | constraint none → start no earlier than 2017-09-30 |
| 210 | Pruebas Unitarias | 2017-09-28 → 2017-10-04 (+6d) | 2017-09-28 → 2017-10-04 (+6d) |  | 47.75d → 43.75d | constraint none → start no earlier than 2017-09-30 |
| 211 | Ajustes | 2017-09-28 → 2017-10-04 (+6d) | 2017-09-28 → 2017-10-04 (+6d) |  | 47.75d → 43.75d | constraint none → start no earlier than 2017-09-30 |
| 212 | Validación Final | 2017-09-29 → 2017-10-05 (+6d) | 2017-09-29 → 2017-10-05 (+6d) |  | 47.75d → 43.75d | constraint none → start no earlier than 2017-09-30 |
| 213 | Revisión del pase por parte del A.F.C.C.T.I. | 2017-09-29 → 2017-10-05 (+6d) | 2017-10-02 → 2017-10-06 (+4d) |  | 47.75d → 43.75d | constraint none → start no earlier than 2017-09-30 |
| 214 | Pruebas de Aceptación | 2017-10-02 → 2017-10-06 (+4d) | 2017-10-05 → 2017-10-11 (+6d) |  | 47.75d → 43.75d |  |
| 215 | Solicitud de Pase a Producción | 2017-10-05 → 2017-10-11 (+6d) | 2017-10-09 → 2017-10-13 (+4d) |  | 47.75d → 43.75d |  |
| 216 | **Componente 2: Registro del Ciudadano** |  | 2017-10-17 → 2017-10-23 (+6d) | 51.5d → 55.5d | 41d → 37d |  |
| 223 | **Implementación de Registro del Ciudadano** |  | 2017-09-28 → 2017-10-04 (+6d) | 29d → 33d | 41d → 37d |  |
| 232 | Datos de Delegado | 2017-09-26 → 2017-10-02 (+6d) | 2017-09-27 → 2017-10-03 (+6d) |  | 41d → 37d | constraint none → start no earlier than 2017-09-30 |
| 233 | Registro de Datos | 2017-09-27 → 2017-10-03 (+6d) | 2017-09-28 → 2017-10-04 (+6d) |  | 41d → 37d | constraint none → start no earlier than 2017-09-30 |
| 234 | **Pruebas** | 2017-09-28 → 2017-10-04 (+6d) | 2017-10-13 → 2017-10-19 (+6d) |  | 41d → 37d |  |
| 235 | Definición de Casos de pruebas | 2017-09-28 → 2017-10-04 (+6d) | 2017-09-29 → 2017-10-05 (+6d) |  | 41d → 37d | constraint none → start no earlier than 2017-09-30 |
| 236 | Validación de data de Prueba | 2017-09-29 → 2017-10-05 (+6d) | 2017-09-29 → 2017-10-05 (+6d) |  | 41d → 37d | constraint none → start no earlier than 2017-09-30 |
| 237 | Pruebas Unitarias | 2017-10-02 → 2017-10-06 (+4d) | 2017-10-03 → 2017-10-09 (+6d) |  | 41d → 37d |  |
| 238 | Ajustes | 2017-10-04 → 2017-10-10 (+6d) | 2017-10-04 → 2017-10-10 (+6d) |  | 41d → 37d |  |
| 239 | Validación Final | 2017-10-05 → 2017-10-11 (+6d) | 2017-10-05 → 2017-10-11 (+6d) |  | 41d → 37d |  |
| 240 | Revisión del pase por parte del A.F.C.C.T.I. | 2017-10-06 → 2017-10-12 (+6d) | 2017-10-06 → 2017-10-12 (+6d) |  | 41d → 37d |  |
| 241 | Pruebas de Aceptación | 2017-10-09 → 2017-10-13 (+4d) | 2017-10-13 → 2017-10-19 (+6d) |  | 41d → 37d |  |
| 242 | Solicitud de Pase a Producción | 2017-10-16 → 2017-10-20 (+4d) | 2017-10-17 → 2017-10-23 (+6d) |  | 41d → 37d |  |
| 270 | **Apoyo al módulo de seguridad** |  | 2017-09-26 → 2017-10-02 (+6d) | 3d → 7d | 41d → 37d |  |
| 272 | Preparación de data de prueba |  | 2017-09-26 → 2017-10-02 (+6d) |  | 41d → 37d |  |
| 273 | **Actividades Complementarias** |  | 2017-11-30 → 2017-12-06 (+6d) | 79d → 83d | 10d → 6d |  |
| 274 | **Elaboración de procedimientos** |  | 2017-10-10 → 2017-10-16 (+6d) | 43d → 47d | 46d → 42d |  |
| 277 | Elaboración de Procedimiento de Atención de Consultas del uso de la Agencia Virtual |  | 2017-10-03 → 2017-10-09 (+6d) |  | 51d → 47d |  |
| 278 | Elaboración de procedimiento de Control de Calidad de Registro en Agencia Virtual |  | 2017-10-10 → 2017-10-16 (+6d) |  | 10d → 6d |  |
| 283 | **Dimensionamiento** | 2017-10-11 → 2017-10-17 (+6d) | 2017-11-30 → 2017-12-06 (+6d) |  | 10d → 6d |  |
| 284 | Elaboración de informe de Dimensionamiento I | 2017-10-11 → 2017-10-17 (+6d) | 2017-11-23 → 2017-11-29 (+6d) |  | 10d → 6d |  |
| 285 | Revisión y Aprobación | 2017-11-24 → 2017-11-30 (+6d) | 2017-11-30 → 2017-12-06 (+6d) |  | 10d → 6d |  |
| 287 | Actualización de Documentación Técnica |  | 2017-11-30 → 2017-12-06 (+6d) |  | 10.5d → 6.5d |  |
