# Cronograma de Actividades SAJU

How a schedule from MS Project changed from version to version. A marks actual dates.

## Version 1 (saved 2017-09-01, file Cronograma digitalización 28.08.17.mpp)

| ID | WBS | Task | Duration | Start | Finish | Predecessors | Complete | Total float | Constraint |
| --- | --- | --- | --- | --- | --- | --- | --- | --- | --- |
| 1 | 1 | **Ejecución de la AE Digitalización de Expedientes Coactivos** | 204d | 2017-03-09 A | 2018-01-01 |  | 52% | 0d |  |
| 2 | 1.1 | **1. ACTIVIDADES DE GESTIÓN** | 204d | 2017-03-09 A | 2018-01-01 |  | 31% | 0d |  |
| 3 | 1.1.1 | **1.1 Planificación** | 12d | 2017-05-22 A | 2017-06-06 A |  | 100% |  |  |
| 4 | 1.1.1.1 | **1.1.1 Gestión del Alcance** | 12d | 2017-05-22 A | 2017-06-06 A |  | 100% |  |  |
| 5 |  | Elaboración del documento | 3d | 2017-05-22 A | 2017-05-24 A |  | 100% |  | start no earlier than 2017-05-22 |
| 6 |  | Revisión del documento | 1d | 2017-05-25 A | 2017-05-25 A | 5 | 100% |  | start no earlier than 2017-05-25 |
| 7 |  | Levantamiento de observaciones | 1d | 2017-05-26 A | 2017-05-26 A | 6 | 100% |  | start no earlier than 2017-05-26 |
| 8 |  | Validación Final | 5d | 2017-05-29 A | 2017-06-02 A | 7 | 100% |  | start no earlier than 2017-05-29 |
| 9 |  | Aprobación del documento | 2d | 2017-06-05 A | 2017-06-06 A | 8 | 100% |  | finish no earlier than 2017-06-06 |
| 10 | 1.1.2 | **1.2 Ejecución** | 203d | 2017-03-09 A | 2017-12-29 |  | 28% | 1d |  |
| 11 | 1.1.2.1 | **1.2.1 Gestión de las adquisiciones** | 203d | 2017-03-09 A | 2017-12-29 |  | 28% | 1d |  |
| 12 | 1.1.2.1.1 | **1.2.1.1 Servicio de Terceros** | 203d | 2017-03-09 A | 2017-12-29 |  | 28% | 1d |  |
| 13 | 1.1.2.1.1.1 | **1.2.1.1.1 Contratación** | 168d | 2017-03-09 A | 2017-11-08 |  | 15% | 36d |  |
| 14 | 1.1.2.1.1.1.1 | **Persona Natural** | 168d | 2017-03-09 A | 2017-11-08 |  | 54% | 36d |  |
| 15 |  | Luis Leiva (Procesos) | 1d | 2017-03-09 A | 2017-03-09 A |  | 100% |  |  |
| 16 |  | Luis Leiva (Sistemas) | 1d | 2017-05-08 A | 2017-05-08 A |  | 100% |  | start no earlier than 2017-05-08 |
| 17 |  | Luis Leiva (Sistemas) | 1d | 2017-08-08 A | 2017-08-08 A |  | 100% |  | start no earlier than 2017-08-08 |
| 18 |  | Luis Leiva (Sistemas) | 1d | 2017-09-08 | 2017-09-08 |  |  | 78d | start no earlier than 2017-09-08 |
| 19 |  | Luis Leiva (Sistemas) | 1d | 2017-11-08 | 2017-11-08 |  |  | 36d | start no earlier than 2017-11-08 |
| 20 |  | Fernando Bustamante (Programador) | 1d | 2017-06-01 A | 2017-06-01 A |  | 100% |  | start no earlier than 2017-06-01 |
| 21 |  | Fernando Bustamante (Programador) | 1d | 2017-06-30 A | 2017-06-30 A |  | 100% |  | start no earlier than 2017-06-30 |
| 22 |  | Fernando Bustamante (Programador) | 1d | 2017-08-29 | 2017-08-29 |  |  | 85d | start no earlier than 2017-08-29 |
| 23 |  | Fernando Bustamante (Programador) | 1d | 2017-10-25 | 2017-10-25 |  |  | 45d | start no earlier than 2017-10-25 |
| 24 |  | César Atalaya (Programador) | 1d | 2017-06-01 A | 2017-06-01 A |  | 100% |  | start no earlier than 2017-06-01 |
| 25 |  | César Atalaya (Programador) | 1d | 2017-06-30 A | 2017-06-30 A |  | 100% |  | start no earlier than 2017-06-30 |
| 26 |  | César Atalaya (Programador) | 1d | 2017-08-29 | 2017-08-29 |  |  | 85d | start no earlier than 2017-08-29 |
| 27 |  | César Atalaya (Programador) | 1d | 2017-10-25 | 2017-10-25 |  |  | 45d | start no earlier than 2017-10-25 |
| 28 | 1.1.2.1.1.1.2 | **Persona Jurídica** | 27d | 2017-09-19 | 2017-10-25 |  |  | 45d |  |
| 29 |  | Elaboración de TDR | 9d | 2017-09-19 | 2017-09-29 |  |  | 51d | start no earlier than 2017-09-19 |
| 30 |  | Elaboración y Firma de Bases | 2d | 2017-10-02 | 2017-10-03 | 29 |  | 51d |  |
| 31 |  | Publicación de convocatoria | 1d | 2017-10-04 | 2017-10-04 | 30 |  | 51d |  |
| 32 |  | Registro de participantes | 9d | 2017-10-05 | 2017-10-17 | 31 |  | 51d |  |
| 33 |  | Consultas y observaciones | 2d | 2017-10-10 | 2017-10-11 |  |  | 45d | start no earlier than 2017-10-10 |
| 34 |  | Absolución de consultas y observaciones | 1d | 2017-10-12 | 2017-10-12 | 33 |  | 45d |  |
| 35 |  | Integración de Bases | 1d | 2017-10-13 | 2017-10-13 | 34 |  | 45d |  |
| 36 |  | Presentación de ofertas | 1d | 2017-10-16 | 2017-10-16 | 35 |  | 45d |  |
| 37 |  | Evaluación y calificación | 1d | 2017-10-17 | 2017-10-17 | 36 |  | 45d |  |
| 38 |  | Otorgamiento de la nueva Pro | 1d | 2017-10-18 | 2017-10-18 | 37 |  | 45d |  |
| 39 |  | Firma de Contrato | 5d | 2017-10-19 | 2017-10-25 | 38 |  | 45d |  |
| 40 | 1.1.2.1.1.2 | **1.2.1.1.2 Inducción** | 2d | 2017-03-09 A | 2017-03-10 A |  | 100% |  |  |
| 41 |  | Presentación de equipos | 1d | 2017-03-09 A | 2017-03-09 A |  | 100% |  |  |
| 42 |  | Capacitación en Procesos | 1d | 2017-03-10 A | 2017-03-10 A | 41 | 100% |  |  |
| 43 |  | Capacitación en la nueva arquitectura | 1d | 2017-03-09 A | 2017-03-09 A |  | 100% |  |  |
| 44 |  | Pasantía con el área usuaria | 2d | 2017-03-09 A | 2017-03-10 A |  | 100% |  |  |
| 45 | 1.1.2.1.1.3 | **1.2.1.1.3 Informes** | 203d | 2017-03-09 A | 2017-12-29 |  | 36% | 1d |  |
| 46 | 1.1.2.1.1.3.1 | **A. Persona Natural** | 200d | 2017-03-09 A | 2017-12-26 |  | 39% | 4d |  |
| 47 |  | Informe de Pago - Luis Leiva (procesos) | 1d | 2017-04-03 A | 2017-04-03 A |  | 100% |  | start no earlier than 2017-04-03 |
| 48 |  | Informe de Pago - Luis Leiva (sistemas) | 1d | 2017-05-02 A | 2017-05-02 A |  | 100% |  | start no earlier than 2017-05-02 |
| 49 |  | Informe de Pago - Luis Leiva (sistemas) | 1d | 2017-06-02 A | 2017-06-02 A |  | 100% |  | start no earlier than 2017-06-02 |
| 50 |  | Informe de Pago - Luis Leiva (sistemas) | 1d | 2017-07-03 A | 2017-07-03 A |  | 100% |  | start no earlier than 2017-07-03 |
| 51 |  | Informe de Pago - Luis Leiva (sistemas) | 1d | 2017-08-01 A | 2017-08-01 A |  | 100% |  | start no earlier than 2017-08-01 |
| 52 |  | Informe de Pago - Luis Leiva (sistemas) | 1d | 2017-09-01 | 2017-09-01 |  |  | 83d | start no earlier than 2017-09-01 |
| 53 |  | Informe de Pago - Luis Leiva (sistemas) | 1d | 2017-10-02 | 2017-10-02 |  |  | 62d | start no earlier than 2017-10-02 |
| 54 |  | Informe de Pago - Luis Leiva (sistemas) | 1d | 2017-11-02 | 2017-11-02 |  |  | 40d | start no earlier than 2017-11-02 |
| 55 |  | Informe de Pago - Luis Leiva (sistemas) | 1d | 2017-12-01 | 2017-12-01 |  |  | 19d | start no earlier than 2017-12-01 |
| 56 |  | Informe de Pago - Luis Leiva (sistemas) | 1d | 2017-03-09 | 2017-03-09 |  |  | 203d |  |
| 57 |  | Informe de Pago - Fernando (programador) | 1d | 2017-06-27 A | 2017-06-27 A |  | 100% |  | start no earlier than 2017-06-27 |
| 58 |  | Informe de Pago - Fernando (programador) | 1d | 2017-07-24 A | 2017-07-24 A |  | 100% |  | start no earlier than 2017-07-24 |
| 59 |  | Informe de Pago - Fernando (programador) | 1d | 2017-08-28 | 2017-08-28 |  |  | 86d | start no earlier than 2017-08-28 |
| 60 |  | Informe de Pago - Fernando (programador) | 1d | 2017-09-26 | 2017-09-26 |  |  | 66d | start no earlier than 2017-09-26 |
| 61 |  | Informe de Pago - Fernando (programador) | 1d | 2017-10-25 | 2017-10-25 |  |  | 45d | start no earlier than 2017-10-25 |
| 62 |  | Informe de Pago - Fernando (programador) | 1d | 2017-11-24 | 2017-11-24 |  |  | 24d | start no earlier than 2017-11-24 |
| 63 |  | Informe de Pago - Fernando (programador) | 1d | 2017-12-26 | 2017-12-26 |  |  | 4d | start no earlier than 2017-12-26 |
| 64 |  | Informe de Pago - César (programador) | 1d | 2017-06-27 A | 2017-06-27 A |  | 100% |  | start no earlier than 2017-06-27 |
| 65 |  | Informe de Pago - César (programador) | 1d | 2017-07-24 A | 2017-07-24 A |  | 100% |  | start no earlier than 2017-07-24 |
| 66 |  | Informe de Pago - César (programador) | 1d | 2017-08-28 | 2017-08-28 |  |  | 86d | start no earlier than 2017-08-28 |
| 67 |  | Informe de Pago - César (programador) | 1d | 2017-09-26 | 2017-09-26 |  |  | 66d | start no earlier than 2017-09-26 |
| 68 |  | Informe de Pago - César (programador) | 1d | 2017-10-25 | 2017-10-25 |  |  | 45d | start no earlier than 2017-10-25 |
| 69 |  | Informe de Pago - César (programador) | 1d | 2017-11-24 | 2017-11-24 |  |  | 24d | start no earlier than 2017-11-24 |
| 70 | 1.1.2.1.1.3.2 | **B. Persona Jurídica** | 20d | 2017-11-30 | 2017-12-29 |  |  | 1d |  |

| ID | WBS | Task | Duration | Start | Finish | Predecessors | Complete | Total float | Constraint |
| --- | --- | --- | --- | --- | --- | --- | --- | --- | --- |
| 71 |  | Entregable 1 | 1d | 2017-11-30 | 2017-11-30 |  |  | 20d | start no earlier than 2017-11-30 |
| 72 |  | Entregable 2 | 1d | 2017-12-29 | 2017-12-29 |  |  | 1d | start no earlier than 2017-12-29 |
| 73 | 1.1.3 | **1.3 Seguimiento y Control** | 127d | 2017-06-30 A | 2018-01-01 |  | 11% | 0d |  |
| 74 | 1.1.3.1 | **1.3.1 Informe Mensual** | 127d | 2017-06-30 A | 2018-01-01 |  | 14% | 0d |  |
| 75 |  | Informe Mensual 1 | 1d | 2017-06-30 | 2017-06-30 |  |  | 126d | start no earlier than 2017-06-30 |
| 76 |  | Informe Mensual 2 | 1d | 2017-07-31 A | 2017-07-31 A |  | 100% |  | start no earlier than 2017-07-30 |
| 77 |  | Informe Mensual 3 | 1d | 2017-08-31 | 2017-08-31 |  |  | 84d | start no earlier than 2017-08-30 |
| 78 |  | Informe Mensual 4 | 1d | 2017-10-02 | 2017-10-02 |  |  | 62d | start no earlier than 2017-09-30 |
| 79 |  | Informe Mensual 5 | 1d | 2017-10-30 | 2017-10-30 |  |  | 42d | start no earlier than 2017-10-30 |
| 80 |  | Informe Mensual 6 | 1d | 2017-11-30 | 2017-11-30 |  |  | 20d | start no earlier than 2017-11-30 |
| 81 |  | Informe Mensual 7 | 1d | 2018-01-01 | 2018-01-01 |  |  | 0d | start no earlier than 2017-12-30 |
| 82 | 1.1.3.2 | **1.3.2 Reuniones de seguimiento** | 92d | 2017-08-18 A | 2017-12-29 |  | 10% | 1d |  |
| 83 |  | Reuniones de seguimiento 1 | 1d | 2017-08-18 A | 2017-08-18 A |  | 100% |  | start no earlier than 2017-08-18 |
| 84 |  | Reuniones de seguimiento 2 | 1d | 2017-08-25 A | 2017-08-25 A |  | 100% |  | start no earlier than 2017-08-25 |
| 85 |  | Reuniones de seguimiento 3 | 1d | 2017-09-01 | 2017-09-01 |  |  | 83d | start no earlier than 2017-09-01 |
| 86 |  | Reuniones de seguimiento 4 | 1d | 2017-09-08 | 2017-09-08 |  |  | 78d | start no earlier than 2017-09-08 |
| 87 |  | Reuniones de seguimiento 5 | 1d | 2017-09-15 | 2017-09-15 |  |  | 73d | start no earlier than 2017-09-15 |
| 88 |  | Reuniones de seguimiento 6 | 1d | 2017-09-22 | 2017-09-22 |  |  | 68d | start no earlier than 2017-09-22 |
| 89 |  | Reuniones de seguimiento 7 | 1d | 2017-09-29 | 2017-09-29 |  |  | 63d | start no earlier than 2017-09-29 |
| 90 |  | Reuniones de seguimiento 8 | 1d | 2017-10-06 | 2017-10-06 |  |  | 58d | start no earlier than 2017-10-06 |
| 91 |  | Reuniones de seguimiento 9 | 1d | 2017-10-13 | 2017-10-13 |  |  | 53d | start no earlier than 2017-10-13 |
| 92 |  | Reuniones de seguimiento 10 | 1d | 2017-10-20 | 2017-10-20 |  |  | 48d | start no earlier than 2017-10-20 |
| 93 |  | Reuniones de seguimiento 11 | 1d | 2017-10-27 | 2017-10-27 |  |  | 43d | start no earlier than 2017-10-27 |
| 94 |  | Reuniones de seguimiento 12 | 1d | 2017-11-03 | 2017-11-03 |  |  | 39d | start no earlier than 2017-11-03 |
| 95 |  | Reuniones de seguimiento 13 | 1d | 2017-11-10 | 2017-11-10 |  |  | 34d | start no earlier than 2017-11-10 |
| 96 |  | Reuniones de seguimiento 14 | 1d | 2017-11-17 | 2017-11-17 |  |  | 29d | start no earlier than 2017-11-17 |
| 97 |  | Reuniones de seguimiento 15 | 1d | 2017-11-24 | 2017-11-24 |  |  | 24d | start no earlier than 2017-11-24 |
| 98 |  | Reuniones de seguimiento 16 | 1d | 2017-12-01 | 2017-12-01 |  |  | 19d | start no earlier than 2017-12-01 |
| 99 |  | Reuniones de seguimiento 17 | 1d | 2017-12-11 | 2017-12-11 |  |  | 14d | start no earlier than 2017-12-08 |
| 100 |  | Reuniones de seguimiento 18 | 1d | 2017-12-15 | 2017-12-15 |  |  | 10d | start no earlier than 2017-12-15 |
| 101 |  | Reuniones de seguimiento 19 | 1d | 2017-12-22 | 2017-12-22 |  |  | 5d | start no earlier than 2017-12-22 |
| 102 |  | Reuniones de seguimiento 20 | 1d | 2017-12-29 | 2017-12-29 |  |  | 1d | start no earlier than 2017-12-29 |
| 103 | 1.1.4 | **1.4 Cierre** | 1d | 2017-12-29 | 2017-12-29 |  |  | 1d |  |
| 104 |  | 1.4.1 Informe de Cierre | 1d | 2017-12-29 | 2017-12-29 |  |  | 1d | start no earlier than 2017-12-29 |
| 105 | 1.2 | **2. ACTIVIDADES DE INGENIERÍA** | 203d | 2017-03-09 A | 2017-12-29 |  | 57% | 1d |  |
| 106 | 1.2.1 | **2.1 Planificación** | 58d | 2017-03-09 A | 2017-06-01 A |  | 100% |  |  |
| 107 | 1.2.1.1 | **2.1.1 Relevamiento de Información** | 58d | 2017-03-09 A | 2017-06-01 A |  | 100% |  |  |
| 108 |  | Reuniones con los involucrados | 23d | 2017-03-09 A | 2017-04-10 A |  | 100% |  |  |
| 109 |  | Elaboración del AS IS | 25d | 2017-03-09 A | 2017-04-12 A |  | 100% |  |  |
| 110 |  | Revisión (Usuario - GOP - GPY - GIN) | 10d | 2017-04-17 A | 2017-04-28 A | 109 | 100% |  |  |
| 111 |  | Levantamiento de observaciones | 11d | 2017-05-02 A | 2017-05-16 A | 110 | 100% |  |  |
| 112 |  | Validación Final del AS IS | 10d | 2017-05-17 A | 2017-05-30 A | 111 | 100% |  |  |
| 113 |  | Aprobación del Relevamiento de Información | 2d | 2017-05-31 A | 2017-06-01 A | 112 | 100% |  |  |
| 114 | 1.2.2 | **2.2 Modelado de Procesos** | 118d | 2017-04-11 A | 2017-09-29 |  | 58% | 63d |  |
| 115 | 1.2.2.1 | **2.2.1 Ficha Técnica del Proceso** | 35d | 2017-04-11 A | 2017-06-01 A |  | 100% |  |  |
| 116 |  | Elaboración del TO BE | 9d | 2017-04-11 A | 2017-04-25 A |  | 100% |  | start no earlier than 2017-04-11 |
| 117 |  | Revisión (Usuario - GOP - GPY - GIN) | 7d | 2017-04-26 A | 2017-05-05 A | 116 | 100% |  |  |
| 118 |  | Levantamiento de observaciones | 4d | 2017-05-08 A | 2017-05-11 A | 117 | 100% |  |  |
| 119 |  | Validación Final del TO BE | 2d | 2017-05-12 A | 2017-05-15 A | 118 | 100% |  |  |
| 120 |  | Ficha Técnica del Proceso | 5d | 2017-05-16 A | 2017-05-22 A | 119 | 100% |  |  |
| 121 |  | Revisión de GOP | 2d | 2017-05-23 A | 2017-05-24 A | 120 | 100% |  |  |
| 122 |  | Levantamiento de observaciones | 2d | 2017-05-25 A | 2017-05-26 A | 121 | 100% |  |  |
| 123 |  | Validación Final de la Ficha Técnica de Proceso | 2d | 2017-05-29 A | 2017-05-30 A | 122 | 100% |  |  |
| 124 |  | Aprobación del documento | 2d | 2017-05-31 A | 2017-06-01 A | 123 | 100% |  |  |
| 125 | 1.2.2.2 | **2.2.2 Documento de Soporte** | 26d | 2017-08-24 A | 2017-09-29 |  | 2% | 63d |  |
| 126 | 1.2.2.2.1 | **Procedimiento de Suspensión** | 9d | 2017-08-24 A | 2017-09-06 |  | 4% | 63d |  |
| 127 |  | Elaboración del procedimiento | 8d | 2017-08-24 A | 2017-09-05 |  | 5% | 63d | finish no earlier than 2017-09-05 |
| 128 |  | Aprobación del documento | 1d | 2017-09-06 | 2017-09-06 | 127 |  | 63d |  |
| 129 | 1.2.2.2.2 | **Procedimiento de Tercería** | 8d | 2017-09-07 | 2017-09-18 |  |  | 63d |  |
| 130 |  | Elaboración del procedimiento | 7d | 2017-09-07 | 2017-09-15 | 128 |  | 63d |  |
| 131 |  | Aprobación del documento | 1d | 2017-09-18 | 2017-09-18 | 130 |  | 63d |  |
| 132 | 1.2.2.2.3 | **Procedimiento de Expediente Coactivo** | 9d | 2017-09-19 | 2017-09-29 |  |  | 63d |  |
| 133 |  | Elaboración del procedimiento | 8d | 2017-09-19 | 2017-09-28 | 131 |  | 63d |  |
| 134 |  | Aprobación del documento | 1d | 2017-09-29 | 2017-09-29 | 133 |  | 63d |  |
| 135 | 1.2.3 | **2.3 Analisis y Diseño de Sistema** | 132d | 2017-03-09 A | 2017-09-18 |  | 67% | 72d |  |
| 136 | 1.2.3.1 | **2.3.1 Definición Funcional (GA)** | 19d | 2017-06-02 A | 2017-06-28 A |  | 100% |  |  |
| 137 |  | Elaboración de la Definición Funcional | 10d | 2017-06-02 A | 2017-06-15 A |  | 100% |  |  |
| 138 |  | Revisión de GIN GOP y Usuario | 1d | 2017-06-16 A | 2017-06-16 A | 137 | 100% |  |  |
| 139 |  | Levantamiento de Observaciones de la DF | 4d | 2017-06-19 A | 2017-06-22 A | 138 | 100% |  |  |
| 140 |  | Validación Final DF (Usuario, GOP y GIN) | 3d | 2017-06-23 A | 2017-06-27 A | 139 | 100% |  | start no earlier than 2017-03-09 |

| ID | WBS | Task | Duration | Start | Finish | Predecessors | Complete | Total float | Constraint |
| --- | --- | --- | --- | --- | --- | --- | --- | --- | --- |
| 141 |  | Aprobación del Documento | 1d | 2017-06-28 A | 2017-06-28 A | 140 | 100% |  |  |
| 142 | 1.2.3.2 | **2.3.2 Definición Funcional (AMI)** | 16d | 2017-06-14 A | 2017-07-06 A |  | 100% |  |  |
| 143 |  | Elaboración de la Definición Funcional | 11d | 2017-06-14 A | 2017-06-28 A |  | 100% |  | start no earlier than 2017-06-14 |
| 144 |  | Revisión de GIN GOP y Usuario | 2d | 2017-06-29 A | 2017-06-30 A | 143 | 100% |  |  |
| 145 |  | Levantamiento de Observaciones de la DF | 2d | 2017-07-03 A | 2017-07-04 A | 144 | 100% |  |  |
| 146 |  | Validación Final DF (Usuario, GOP y GIN) | 1d | 2017-07-05 A | 2017-07-05 A | 145 | 100% |  | finish no earlier than 2017-06-28 |
| 147 |  | Aprobación del Documento | 1d | 2017-07-06 A | 2017-07-06 A | 146 | 100% |  |  |
| 148 | 1.2.3.3 | **2.3.3 Definición Funcional (Exp Virtual)** | 23d | 2017-07-07 A | 2017-08-09 A |  | 100% |  |  |
| 149 |  | Elaboración de la Definición Funcional | 9d | 2017-07-07 A | 2017-07-19 A | 147 | 100% |  |  |
| 150 |  | Revisión de GIN, GOP y Usuario | 2d | 2017-07-20 A | 2017-07-21 A | 149 | 100% |  |  |
| 151 |  | Levantamiento de Observaciones de la DF | 2d | 2017-07-24 A | 2017-07-25 A | 150 | 100% |  |  |
| 152 |  | Validación Final DF (Usuario, GOP y GIN) | 2d | 2017-08-02 A | 2017-08-03 A | 151 | 100% |  | start no earlier than 2017-08-02 |
| 153 |  | Aprobación del Documento | 4d | 2017-08-04 A | 2017-08-09 A | 152 | 100% |  | finish no earlier than 2017-08-09 |
| 154 | 1.2.3.4 | **2.3.4 Documento Técnico Exp Virtual** | 131.82d | 2017-03-09 A | 2017-09-18 |  | 55% | 72.17d |  |
| 155 |  | Elaboración de la DT | 25d | 2017-07-26 A | 2017-08-29 |  | 70% | 3.77d | start no earlier than 2017-07-26 |
| 156 |  | Revisión de GIN (Arquitectura /Modelo de Datos) | 3d | 2017-09-01 A | 2017-09-06 | 155 | 80% | 0d |  |
| 157 |  | Levantamiento de Observaciones | 3d | 2017-03-09 A | 2017-09-08 | 156 | 10% | 72.17d |  |
| 158 |  | Validación Final | 4d | 2017-09-08 | 2017-09-14 | 157 |  | 72.17d |  |
| 159 |  | Aprobación del documento | 2d | 2017-09-14 | 2017-09-18 | 158 |  | 72.17d |  |
| 160 | 1.2.3.5 | **2.3.5 Documento Técnico SGD** | 30d | 2017-08-07 A | 2017-09-18 |  | 23% | 72d |  |
| 161 |  | Elaboración de la DT | 17d | 2017-08-07 A | 2017-08-29 |  | 40% | 72d | start no earlier than 2017-08-07 |
| 162 |  | Revisión de GIN (Arquitectura /Modelo de Datos) | 3d | 2017-08-31 | 2017-09-04 | 161 |  | 72d |  |
| 163 |  | Levantamiento de Observaciones | 3d | 2017-09-05 | 2017-09-07 | 162 |  | 72d |  |
| 164 |  | Revisión del Resposable del SGD | 3d | 2017-09-08 | 2017-09-12 | 163 |  | 72d |  |
| 165 |  | Validación Final | 3d | 2017-09-13 | 2017-09-15 | 164 |  | 72d |  |
| 166 |  | Aprobación del documento | 1d | 2017-09-18 | 2017-09-18 | 165 |  | 72d |  |
| 167 | 1.2.4 | **2.4 Construcción** | 127.9d | 2017-06-19 A | 2017-12-20 |  | 39% | 7.1d |  |
| 168 | 1.2.4.1 | **2.4.1 Expediente Coactivo Virtual** | 101d | 2017-07-10 A | 2017-11-30 |  | 47% | 20d |  |
| 169 | 1.2.4.1.1 | **2.4.1.1 Iteración 1 - Generación de archivos PDF** | 69d | 2017-07-10 A | 2017-10-16 |  | 67% | 52d |  |
| 170 | 1.2.4.1.1.1 | **A. Desarrollo** | 54d | 2017-07-10 A | 2017-09-25 |  | 78% | 3.1d |  |
| 171 |  | Generación de archivos PDF | 29d | 2017-07-10 A | 2017-08-18 A |  | 100% |  | start no earlier than 2017-07-10 |
| 172 | 1.2.4.1.1.1.2 | **Cortado de archivos PDF** | 32.88d | 2017-07-10 A | 2017-08-24 A |  | 100% |  |  |
| 173 |  | DLL que realiza el corte del PDF | 16d | 2017-07-10 A | 2017-08-01 A |  | 100% |  |  |
| 174 |  | Servicio windows y web para la ejecución automática | 8d | 2017-08-02 A | 2017-08-11 A | 173 | 100% |  |  |
| 175 |  | Revisión de arquitectura | 2d | 2017-08-14 A | 2017-08-15 A | 174 | 100% |  |  |
| 176 |  | Subsanación de observaciones | 7d | 2017-08-15 A | 2017-08-24 A | 175 | 100% |  |  |
| 177 |  | Generación de archivo PDF en RS | 2d | 2017-08-21 A | 2017-08-22 A | 171 | 100% |  | start no earlier than 2017-08-21 |
| 178 |  | Generación de archivo PDF en Copia | 1d | 2017-08-23 A | 2017-08-23 A | 177 | 100% |  |  |
| 179 |  | Generación de archivo PDF en CIR y REC Tránsito | 1d | 2017-08-24 A | 2017-08-24 A | 178 | 100% |  |  |
| 180 |  | Revisión código fuente | 1d | 2017-08-25 A | 2017-08-25 A | 179 | 100% |  |  |
| 181 |  | Levantamiento de observaciones | 3d | 2017-08-28 A | 2017-08-31 | 180 | 40% | 3.1d |  |
| 182 |  | Generación de archivo PDF en RMC - módulo MC | 5d | 2017-09-01 | 2017-09-07 | 181 |  | 3.1d |  |
| 183 |  | Generación de archivo PDF en RIEF - módulo MC | 2d | 2017-09-08 | 2017-09-11 | 182 |  | 3.1d |  |
| 184 |  | Generación de archivo PDF en Nulidad - módulo MC | 2d | 2017-09-12 | 2017-09-13 | 183 |  | 3.1d |  |
| 185 |  | Generación de archivo PDF en Esquela de Entrega - módulo Depósito | 3d | 2017-09-14 | 2017-09-18 | 184 |  | 3.1d |  |
| 186 |  | Generación de archivo PDF en Acta de Secuestro Conservativo - módulo Depósito | 2d | 2017-09-19 | 2017-09-20 | 185 |  | 3.1d |  |
| 187 |  | Revisión código fuente | 1d | 2017-09-21 | 2017-09-21 | 186 |  | 3.1d |  |
| 188 |  | Levantamiento de observaciones | 2d | 2017-09-22 | 2017-09-25 | 187 |  | 3.1d |  |
| 189 | 1.2.4.1.1.2 | **B. Pruebas** | 10.3d | 2017-09-26 | 2017-10-10 |  |  | 3.1d |  |
| 190 |  | Documentación para el pase | 3d | 2017-09-26 | 2017-09-28 | 188 |  | 3.1d |  |
| 191 |  | Envío y Revisión por AF Calidad (Rev 1) | 3d | 2017-09-29 | 2017-10-03 | 190 |  | 3.1d |  |
| 192 |  | Levantamiento de Observaciones | 2d | 2017-10-04 | 2017-10-05 | 191 |  | 3.1d |  |
| 193 |  | Pruebas con el equipo AE | 0.3d | 2017-10-06 | 2017-10-06 | 192 |  | 3.1d |  |
| 194 |  | Pruebas de Aceptación (usuario) | 2d | 2017-10-06 | 2017-10-10 | 193 |  | 3.1d |  |
| 195 |  | C. Pase a producción | 0.7d | 2017-10-10 | 2017-10-10 | 194 |  | 3.1d | start no earlier than 2017-03-09 |
| 196 |  | D. Seguimiento | 4d | 2017-10-11 | 2017-10-16 | 195 |  | 52d | start no earlier than 2017-09-07 |
| 197 | 1.2.4.1.2 | **2.4.1.2 Iteración 2** | 68d | 2017-08-25 A | 2017-11-30 |  | 12% | 20d |  |
| 198 | 1.2.4.1.2.1 | **A. Desarrollo** | 58d | 2017-08-25 A | 2017-11-16 |  | 14% | 30d |  |
| 199 |  | Visualizar documentos digitales del Expediente Coactivo Virtual | 8d | 2017-08-25 A | 2017-09-06 |  | 30% | 41d | start no earlier than 2017-08-25 |
| 200 |  | Solicitudes de Impresión de Expediente Coactivo | 10d | 2017-10-23 A | 2017-11-06 |  | 30% | 1.5d | start no earlier than 2017-10-23 |
| 201 |  | Ingresar documentos digitales manuales al Expediente Coactivo Virtual | 5d | 2017-11-07 A | 2017-11-13 | 200 | 30% | 33d |  |
| 202 |  | Implementación de cuatro (4) Reportes | 23d | 2017-10-11 | 2017-11-13 | 195 |  | 3.1d |  |
| 203 |  | Revisión en desarrollo | 1d | 2017-11-14 | 2017-11-14 | 202 |  | 3.1d |  |
| 204 |  | Levantamiento de observaciones | 2d | 2017-11-15 | 2017-11-16 | 203 |  | 3.1d |  |
| 205 | 1.2.4.1.2.2 | **B. Pruebas** | 5.5d | 2017-11-17 | 2017-11-24 |  |  | 3.1d |  |
| 206 |  | Documentación para el pase | 1d | 2017-11-17 | 2017-11-17 | 204 |  | 3.1d |  |
| 207 |  | Envío y Revisión por AF Calidad (Rev 1) | 2d | 2017-11-20 | 2017-11-21 | 206 |  | 3.1d |  |
| 208 |  | Levantamiento de Observaciones | 1d | 2017-11-22 | 2017-11-22 | 207 |  | 3.1d |  |
| 209 |  | Pruebas con el equipo AE | 0.5d | 2017-11-23 | 2017-11-23 | 208 |  | 3.1d |  |
| 210 |  | Pruebas de Aceptación (usuario) | 1d | 2017-11-23 | 2017-11-24 | 209 |  | 3.1d |  |

| ID | WBS | Task | Duration | Start | Finish | Predecessors | Complete | Total float | Constraint |
| --- | --- | --- | --- | --- | --- | --- | --- | --- | --- |
| 211 |  | C. Pase a producción | 0.5d | 2017-11-24 | 2017-11-24 | 210 |  | 3.1d |  |
| 212 |  | D. Seguimiento | 4d | 2017-11-27 | 2017-11-30 | 211 |  | 20d |  |
| 213 | 1.2.4.2 | **2.4.2 SGD - Atención de Solicitudes** | 127.9d | 2017-06-19 A | 2017-12-20 |  | 22% | 7.1d |  |
| 214 | 1.2.4.2.1 | **Iteración 1** | 16.5d | 2017-06-19 A | 2017-07-12 A |  | 100% |  |  |
| 215 | 1.2.4.2.1.1 | **A. Desarrollo** | 5d | 2017-06-19 A | 2017-06-23 A |  | 100% |  |  |
| 216 |  | Implementación de código de barras en el cargo de recepción | 5d | 2017-06-19 A | 2017-06-23 A |  | 100% |  | start no earlier than 2017-06-19 |
| 217 | 1.2.4.2.1.2 | **B. Pruebas** | 8d | 2017-06-26 A | 2017-07-06 A |  | 100% |  |  |
| 218 |  | Documentación para el pase | 2d | 2017-06-26 A | 2017-06-27 A | 216 | 100% |  |  |
| 219 |  | Envío y Revisión por AF Calidad (Rev 1) | 1d | 2017-06-28 A | 2017-06-28 A | 218 | 100% |  |  |
| 220 |  | Levantamiento de Observaciones | 2d | 2017-06-30 A | 2017-07-03 A | 219 | 100% |  |  |
| 221 |  | Envío y Revisión por AF Calidad (Rev 2) | 2d | 2017-07-04 A | 2017-07-05 A | 220 | 100% |  |  |
| 222 |  | Pruebas con el equipo AE | 0.5d | 2017-07-06 A | 2017-07-06 A | 221 | 100% |  |  |
| 223 |  | Pruebas de Aceptación (usuario) | 0.5d | 2017-07-06 A | 2017-07-06 A | 222 | 100% |  |  |
| 224 |  | C. Pase a Producción | 0.5d | 2017-07-07 A | 2017-07-07 A | 223 | 100% |  |  |
| 225 |  | D. Seguimiento | 3d | 2017-07-07 A | 2017-07-12 A | 224 | 100% |  |  |
| 226 | 1.2.4.2.2 | **Iteración 2** | 39d | 2017-09-07 | 2017-10-31 |  |  | 0d |  |
| 227 | 1.2.4.2.2.1 | **A. Desarrollo** | 29d | 2017-09-07 | 2017-10-17 |  |  | 0d |  |
| 228 |  | Atención: Solicitar firmantes en proyecto respuesta | 5d | 2017-09-07 | 2017-09-13 | 199 |  | 41d |  |
| 229 |  | Atención: Firma mecanizada en documento respuesta | 2d | 2017-09-14 | 2017-09-15 | 228 |  | 41d |  |
| 230 |  | Atención: Selecccionar efectos en proyecto respuesta | 5d | 2017-09-18 | 2017-09-22 | 229 |  | 41d |  |
| 231 |  | Atención: Generar automáticamente el documento respuesta | 2d | 2017-09-25 | 2017-09-26 | 230 |  | 41d |  |
| 232 |  | Asignación: Balanceo de Carga equitativo para los resolutores | 1d | 2017-09-07 | 2017-09-07 |  |  |  |  |
| 233 |  | Reporte Unificado No Tributario | 5d | 2017-09-27 | 2017-10-03 | 231 |  | 41d |  |
| 234 |  | Traslado del documento digitalizado al directorio de ubicación final | 5d | 2017-10-04 | 2017-10-10 | 233 |  | 41d |  |
| 235 |  | Visualizar el documento digitalizado | 2d | 2017-10-11 | 2017-10-12 | 234 |  | 41d |  |
| 236 |  | Revisión en Desarrollo | 1d | 2017-10-13 | 2017-10-13 | 235 |  | 41d |  |
| 237 |  | Levantamiento de observaciones | 2d | 2017-10-16 | 2017-10-17 | 236 |  | 41d |  |
| 238 | 1.2.4.2.2.2 | **B. Pruebas** | 5.5d | 2017-10-18 | 2017-10-25 |  |  | 41d |  |
| 239 |  | Documentación para el pase | 1d | 2017-10-18 | 2017-10-18 | 237 |  | 41d |  |
| 240 |  | Envío y Revisión por AF Calidad (Rev 1) | 2d | 2017-10-19 | 2017-10-20 | 239 |  | 41d |  |
| 241 |  | Levantamiento de Observaciones | 1d | 2017-10-23 | 2017-10-23 | 240 |  | 41d |  |
| 242 |  | Pruebas con el equipo AE | 0.5d | 2017-10-24 | 2017-10-24 | 241 |  | 41d |  |
| 243 |  | Pruebas de Aceptación (usuario) | 1d | 2017-10-24 | 2017-10-25 | 242 |  | 41d |  |
| 244 |  | C. Pase a Producción | 0.5d | 2017-10-25 | 2017-10-25 | 243 |  | 41d |  |
| 245 |  | D. Seguimiento | 4d | 2017-10-26 | 2017-10-31 | 244 |  | 41d |  |
| 246 | 1.2.4.2.3 | **Iteración 3** | 16.9d | 2017-11-27 | 2017-12-20 |  |  | 3.1d |  |
| 247 | 1.2.4.2.3.1 | **A. Desarrollo** | 10d | 2017-11-27 | 2017-12-11 |  |  | 3.1d |  |
| 248 |  | Implementación de cuatro (4) Reportes | 8d | 2017-11-27 | 2017-12-06 | 211 |  | 3.1d |  |
| 249 |  | Revisión en Desarrollo | 1d | 2017-12-07 | 2017-12-07 | 248 |  | 3.1d |  |
| 250 |  | Levantamiento de observaciones | 1d | 2017-12-11 | 2017-12-11 | 249 |  | 3.1d |  |
| 251 | 1.2.4.2.3.2 | **B. Pruebas** | 2.6d | 2017-12-12 | 2017-12-14 |  |  | 3.1d |  |
| 252 |  | Documentación para el pase | 0.5d | 2017-12-12 | 2017-12-12 | 250 |  | 3.1d |  |
| 253 |  | Envío y Revisión por AF Calidad (Rev 1) | 1d | 2017-12-12 | 2017-12-13 | 252 |  | 3.1d |  |
| 254 |  | Levantamiento de Observaciones | 0.5d | 2017-12-13 | 2017-12-13 | 253 |  | 3.1d |  |
| 255 |  | Pruebas con el equipo AE | 0.3d | 2017-12-14 | 2017-12-14 | 254 |  | 3.1d |  |
| 256 |  | Pruebas de Aceptación (usuario) | 0.3d | 2017-12-14 | 2017-12-14 | 255 |  | 3.1d |  |
| 257 |  | C. Pase a Producción | 0.3d | 2017-12-14 | 2017-12-14 | 256 |  | 3.1d |  |
| 258 |  | D. Seguimiento | 4d | 2017-12-14 | 2017-12-20 | 257 |  | 3.1d |  |
| 259 | 1.2.5 | **2.5 Actividades complementarias** | 19d | 2017-12-01 | 2017-12-29 |  |  | 1d |  |
| 260 | 1.2.5.1 | **2.5.1 Capacitación a Usuarios** | 19d | 2017-12-01 | 2017-12-29 |  |  | 1d |  |
| 261 |  | Expediente Virtual | 3d | 2017-12-01 | 2017-12-05 | 211 |  | 17d | start no earlier than 2017-12-01 |
| 262 |  | SGD - Atención | 3d | 2017-12-27 | 2017-12-29 | 257 |  | 1d | start no earlier than 2017-12-27 |
| 263 | 1.2.5.2 | **2.5.2 Transferencia a Informática** | 4d | 2017-12-20 | 2017-12-27 |  |  | 3.1d |  |
| 264 |  | Elaborar documento de transferencia | 3d | 2017-12-20 | 2017-12-26 | 258 |  | 3.1d |  |
| 265 |  | Envío de documento formal | 1d | 2017-12-26 | 2017-12-27 | 264 |  | 3.1d |  |

## Version 2 (saved 2017-10-31, file Cronograma Digitalización al 31.10.mpp)

Last finish stays 2018-01-01. Complete tasks 76 → 128.

Added:

| ID | Task | Duration | Start | Finish | Predecessors | Constraint | Resources |
| --- | --- | --- | --- | --- | --- | --- | --- |
| 69 | Informe de Pago - César (programador) | 1d | 2017-12-27 | 2017-12-27 |  | start no earlier than 2017-12-27 |  |
| 156 | Revisión del DT | 9d | 2017-09-19 A | 2017-09-29 A | 155 |  | Wilson R [50%] |
| 160 | Modificaciones adicionales y revisión | 4d | 2017-10-18 A | 2017-10-23 A | 159 |  |  |
| 164 | Revisión del Lider Funcional | 4d | 2017-10-18 A | 2017-10-23 A | 163 |  | Wilson R [50%] |
| 188 | Revisión del Módulo de Remate | 3d | 2017-09-21 A | 2017-09-25 A | 187 |  | César A |
| 189 | Revisión de la Generación de PDF | 6d | 2017-09-26 A | 2017-10-03 A | 188 |  | César A |
| 194 | Levantamiento de problemas presentados | 6d | 2017-10-10 A | 2017-10-17 A | 193 |  | Fernando B; César A |
| 203 | Diseño de pantallas propuestas | 5d | 2017-08-25 A | 2017-09-01 | 174 | start no earlier than 2017-08-25 | Fernando B |
| 204 | Retomar programación | 3d | 2017-10-27 | 2017-10-31 |  | start no earlier than 2017-10-27 | César A |
| 206 | Programación de aplicativo | 3d | 2017-11-02 | 2017-11-06 | 204 |  | David Castañeda |
| 207 | Programación de Base de Datos | 3d | 2017-11-02 | 2017-11-06 | 204 |  | César A |
| 209 | Programación de aplicativo | 5d | 2017-11-07 | 2017-11-13 | 206 |  | David Castañeda |
| 210 | Programación de Base de Datos | 4d | 2017-11-07 | 2017-11-10 | 207 |  | César A |
| 212 | Programación de aplicativo | 5d | 2017-11-14 | 2017-11-20 | 209 |  | David Castañeda |
| 213 | Programación de Base de Datos | 4d | 2017-11-13 | 2017-11-16 | 210 |  | César A |
| 214 | **Importación Masiva de documentos digitales manuales** | 7d | 2017-11-17 | 2017-11-27 |  |  |  |
| 215 | Programación de aplicativo | 5d | 2017-11-21 | 2017-11-27 | 212 |  | David Castañeda |
| 216 | Programación de Base de Datos | 4d | 2017-11-17 | 2017-11-22 | 213 |  | César A |
| 217 | 3 objetos para comunicación entre ECV y SAJU | 3d | 2017-11-23 | 2017-11-27 | 216 |  | César A |
| 219 | Programación de aplicativo | 4d | 2017-11-28 | 2017-12-01 | 215 |  | David Castañeda |
| 220 | Programación de Base de Datos | 4d | 2017-11-28 | 2017-12-01 | 217 |  | César A |
| 252 | Retomar programación del SGD | 2d | 2017-10-27 A | 2017-10-30 A |  | start no earlier than 2017-10-27 | Fernando B |
| 253 | Completar funcionalidad de Atención | 5d | 2017-10-31 | 2017-11-07 | 252 |  | Fernando B |
| 254 | Visualización del Exp Coactivo correspondiente al trámite | 5d | 2017-11-08 | 2017-11-14 | 253 |  | Fernando B |
| 255 | Imprimir la Resolución de Suspensión y Tercería adjunto al lote de envio de notificaciones | 5d | 2017-11-15 | 2017-11-21 | 254 |  | Fernando B |
| 274 | Elaborar documento de transferencia - SGD | 3d | 2017-12-27 | 2017-12-29 | 266 |  |  |
| 275 | Envío de documento formal | 1d | 2018-01-01 | 2018-01-01 | 274 |  |  |
| 276 | **2.5.3 Manuales de Usuario** | 48d | 2017-10-11 A | 2017-12-19 |  |  |  |
| 277 | Manual 1 | 2d | 2017-10-11 A | 2017-10-12 A |  | start no earlier than 2017-10-11 |  |
| 278 | Manual 2 | 2d | 2017-10-11 A | 2017-10-12 A |  | start no earlier than 2017-10-11 | Luis Leiva |
| 279 | Manual MECV | 5d | 2017-12-13 | 2017-12-19 | 224 |  |  |
| 280 | Manual SGD | 5d | 2017-12-13 | 2017-12-19 | 260 |  |  |

Removed: 56 Informe de Pago - Luis Leiva (sistemas); 164 Revisión del Resposable del SGD; 184 Generación de archivo PDF en Nulidad - módulo MC; 232 Asignación: Balanceo de Carga equitativo para los resolutores; 234 Traslado del documento digitalizado al directorio de ubicación final; 246 Iteración 3; 247 A. Desarrollo; 249 Revisión en Desarrollo; 250 Levantamiento de observaciones; 251 B. Pruebas; 252 Documentación para el pase; 253 Envío y Revisión por AF Calidad (Rev 1); 254 Levantamiento de Observaciones; 255 Pruebas con el equipo AE; 256 Pruebas de Aceptación (usuario); 257 C. Pase a Producción; 258 D. Seguimiento

Changed:

| ID | Task | Start | Finish | Duration | Complete | Total float | Predecessors | Other |
| --- | --- | --- | --- | --- | --- | --- | --- | --- |
| 1 | **Ejecución de la AE Digitalización de Expedientes Coactivos** |  |  |  | 52% → 71% |  |  |  |
| 2 | **1. ACTIVIDADES DE GESTIÓN** |  |  |  | 31% → 49% |  |  |  |
| 10 | **1.2 Ejecución** |  |  |  | 28% → 47% |  |  |  |
| 11 | **1.2.1 Gestión de las adquisiciones** |  |  |  | 28% → 47% |  |  |  |
| 12 | **1.2.1.1 Servicio de Terceros** |  |  |  | 28% → 47% |  |  |  |
| 13 | **1.2.1.1.1 Contratación** |  | 2017-11-08 → 2017-10-25 (-14d) | 168d → 159d | 15% → 30% | 36d → 45d |  |  |
| 14 | **Persona Natural** |  | 2017-11-08 → 2017-10-25 A (-14d) | 168d → 159d | 54% → 100% | 36d → none |  |  |
| 18 | Luis Leiva (Sistemas) | 2017-09-08 A | 2017-09-08 A |  | 0% → 100% | 78d → none |  |  |
| 19 | Luis Leiva (Sistemas) | 2017-11-08 → 2017-10-06 A (-33d) | 2017-11-08 → 2017-10-06 A (-33d) |  | 0% → 100% | 36d → none |  | constraint start no earlier than 2017-11-08 → start no earlier than 2017-10-06 |
| 22 | Fernando Bustamante (Programador) | 2017-08-29 A | 2017-08-29 A |  | 0% → 100% | 85d → none |  |  |
| 23 | Fernando Bustamante (Programador) | 2017-10-25 A | 2017-10-25 A |  | 0% → 100% | 45d → none |  |  |
| 26 | César Atalaya (Programador) | 2017-08-29 A | 2017-08-29 A |  | 0% → 100% | 85d → none |  |  |
| 27 | César Atalaya (Programador) | 2017-10-25 A | 2017-10-25 A |  | 0% → 100% | 45d → none |  |  |
| 28 | **Persona Jurídica** | 2017-09-19 A |  |  | 0% → 3% |  |  |  |
| 29 | Elaboración de TDR | 2017-09-19 A |  |  | 0% → 10% |  |  |  |
| 45 | **1.2.1.1.3 Informes** | 2017-03-09 A → 2017-04-03 A (+25d) |  | 203d → 186d | 36% → 68% |  |  |  |
| 46 | **A. Persona Natural** | 2017-03-09 A → 2017-04-03 A (+25d) | 2017-12-26 → 2017-12-27 (+1d) | 200d → 184d | 39% → 74% | 4d → 3d |  |  |
| 52 | Informe de Pago - Luis Leiva (sistemas) | 2017-09-01 A | 2017-09-01 A |  | 0% → 100% | 83d → none |  |  |
| 53 | Informe de Pago - Luis Leiva (sistemas) | 2017-10-02 A | 2017-10-02 A |  | 0% → 100% | 62d → none |  |  |
| 58 | Informe de Pago - Fernando (programador) | 2017-08-28 A | 2017-08-28 A |  | 0% → 100% | 86d → none |  |  |
| 59 | Informe de Pago - Fernando (programador) | 2017-09-26 A | 2017-09-26 A |  | 0% → 100% | 66d → none |  |  |
| 60 | Informe de Pago - Fernando (programador) | 2017-10-25 A | 2017-10-25 A |  | 0% → 100% | 45d → none |  |  |
| 65 | Informe de Pago - César (programador) | 2017-08-28 A | 2017-08-28 A |  | 0% → 100% | 86d → none |  |  |
| 66 | Informe de Pago - César (programador) | 2017-09-26 A | 2017-09-26 A |  | 0% → 100% | 66d → none |  |  |
| 67 | Informe de Pago - César (programador) | 2017-10-25 A | 2017-10-25 A |  | 0% → 100% | 45d → none |  |  |
| 73 | **1.3 Seguimiento y Control** |  |  |  | 11% → 33% |  |  |  |
| 74 | **1.3.1 Informe Mensual** |  |  |  | 14% → 43% |  |  |  |
| 77 | Informe Mensual 3 | 2017-08-31 A | 2017-08-31 A |  | 0% → 100% | 84d → none |  |  |
| 78 | Informe Mensual 4 | 2017-10-02 → 2017-09-29 A (-3d) | 2017-10-02 → 2017-09-29 A (-3d) |  | 0% → 100% | 62d → none |  | constraint start no earlier than 2017-09-30 → start no earlier than 2017-09-29 |
| 82 | **1.3.2 Reuniones de seguimiento** |  |  |  | 10% → 30% |  |  |  |
| 85 | Reuniones de seguimiento 3 | 2017-09-01 A | 2017-09-01 A |  | 0% → 100% | 83d → none |  |  |
| 86 | Reuniones de seguimiento 4 | 2017-09-08 A | 2017-09-08 A |  | 0% → 100% | 78d → none |  |  |
| 87 | Reuniones de seguimiento 5 | 2017-09-15 A | 2017-09-15 A |  | 0% → 100% | 73d → none |  |  |
| 88 | Reuniones de seguimiento 6 | 2017-09-22 A | 2017-09-22 A |  | 0% → 100% | 68d → none |  |  |
| 105 | **2. ACTIVIDADES DE INGENIERÍA** |  | 2017-12-29 → 2018-01-01 (+3d) | 203d → 204d | 57% → 75% | 1d → 0d |  |  |
| 114 | **2.2 Modelado de Procesos** |  |  |  | 58% → 90% |  |  |  |
| 125 | **2.2.2 Documento de Soporte** |  |  |  | 2% → 77% |  |  |  |
| 126 | **Procedimiento de Suspensión** |  |  |  | 4% → 94% | 63d → 80d |  |  |
| 127 | Elaboración del procedimiento |  | 2017-09-05 A |  | 5% → 100% | 63d → none |  |  |
| 128 | Aprobación del documento | 2017-09-06 A |  |  | 0% → 50% | 63d → 80d |  |  |
| 129 | **Procedimiento de Tercería** | 2017-09-07 A |  |  | 0% → 94% | 63d → 4d |  |  |
| 130 | Elaboración del procedimiento | 2017-09-07 A | 2017-09-15 A |  | 0% → 100% | 63d → none |  |  |
| 131 | Aprobación del documento | 2017-09-18 A |  |  | 0% → 50% | 63d → 4d |  |  |
| 132 | **Procedimiento de Expediente Coactivo** | 2017-09-19 A |  |  | 0% → 44% |  |  |  |
| 133 | Elaboración del procedimiento | 2017-09-19 A |  |  | 0% → 50% |  |  |  |
| 135 | **2.3 Analisis y Diseño de Sistema** | 2017-03-09 A → 2017-06-02 A (+85d) | 2017-09-18 → 2017-11-17 (+60d) | 132d → 117d | 67% → 89% | 72d → 29d |  |  |
| 154 | **2.3.4 Documento Técnico Exp Virtual** | 2017-03-09 A → 2017-07-26 A (+139d) | 2017-09-18 → 2017-10-31 (+43d) | 131.82d → 68d | 55% → 94% | 72.17d → 41d |  |  |
| 155 | Elaboración del DT |  | 2017-08-29 → 2017-09-18 A (+20d) | 25d → 37d | 70% → 100% | 3.77d → none |  | was named Elaboración de la DT; constraint start no earlier than 2017-07-26 → finish no earlier than 2017-09-18 |
| 157 | Revisión de GIN (Arquitectura /Modelo de Datos) | 2017-09-01 A → 2017-10-02 A (+31d) | 2017-09-06 → 2017-10-06 A (+30d) | 3d → 5d | 80% → 100% | 0d → none | 155 → 156 |  |
| 158 | Levantamiento de Observaciones | 2017-03-09 A → 2017-10-09 A (+214d) | 2017-09-08 → 2017-10-11 A (+33d) |  | 10% → 100% | 72.17d → none |  | baseline start 2017-03-09 → none; baseline finish 2017-09-08 → none |
| 159 | Validación Final | 2017-09-08 → 2017-10-12 A (+34d) | 2017-09-14 → 2017-10-17 A (+33d) |  | 0% → 100% | 72.17d → none |  |  |
| 161 | Aprobación del documento | 2017-09-14 → 2017-10-24 A (+40d) | 2017-09-18 → 2017-10-31 (+43d) | 2d → 6d | 0% → 30% | 72.17d → 41d | 159 → 160 |  |
| 162 | **2.3.5 Documento Técnico SGD** |  | 2017-09-18 → 2017-11-17 (+60d) | 30d → 73d | 23% → 75% | 72d → 29d |  |  |
| 163 | Elaboración de la DT |  | 2017-08-29 → 2017-10-17 A (+49d) | 17d → 51d | 40% → 100% | 72d → none |  | constraint start no earlier than 2017-08-07 → finish no earlier than 2017-10-17 |
| 165 | Revisión de GIN (Arquitectura /Modelo de Datos/Responsable del SGD) | 2017-08-31 → 2017-10-24 (+54d) | 2017-09-04 → 2017-11-10 (+67d) | 3d → 13d |  | 72d → 29d | 163 → 164 | was named Revisión de GIN (Arquitectura /Modelo de Datos) |
| 166 | Levantamiento de Observaciones | 2017-09-05 → 2017-11-13 (+69d) | 2017-09-07 → 2017-11-14 (+68d) | 3d → 2d |  | 72d → 29d |  |  |
| 167 | Validación Final | 2017-09-13 → 2017-11-15 (+63d) | 2017-09-15 → 2017-11-16 (+62d) | 3d → 2d |  | 72d → 29d | Revisión del Resposable del SGD → 166 |  |
| 168 | Aprobación del documento | 2017-09-18 → 2017-11-17 (+60d) | 2017-09-18 → 2017-11-17 (+60d) |  |  | 72d → 29d |  |  |
| 169 | **2.4 Construcción** |  | 2017-12-20 → 2017-12-26 (+6d) | 127.9d → 131d | 39% → 60% | 7.1d → 4d |  |  |
| 170 | **2.4.1 Expediente Coactivo Virtual** |  | 2017-11-30 → 2017-12-26 (+26d) | 101d → 117d | 47% → 63% | 20d → 4d |  |  |
| 171 | **2.4.1.1 Iteración 1 - Generación de archivos PDF** |  | 2017-10-16 → 2017-11-09 (+24d) | 69d → 86d | 67% → 94% | 52d → 35d |  |  |
| 172 | **A. Desarrollo** |  | 2017-09-25 → 2017-10-06 A (+11d) | 54d → 63d | 78% → 100% | 3.1d → none |  |  |
| 179 | Implementar la generación de archivo PDF en RS |  |  |  |  |  |  | was named Generación de archivo PDF en RS |
| 180 | Implementar generación de archivo PDF en Copia |  |  |  |  |  |  | was named Generación de archivo PDF en Copia |
| 181 | Implementar la generación de archivo PDF en CIR y REC Tránsito |  |  |  |  |  |  | was named Generación de archivo PDF en CIR y REC Tránsito |
| 183 | Levantamiento de observaciones |  | 2017-08-31 A |  | 40% → 100% | 3.1d → none |  |  |
| 184 | Implementar la generación de archivo PDF en RMC | 2017-09-01 A | 2017-09-07 A |  | 0% → 100% | 3.1d → none |  | was named Generación de archivo PDF en RMC - módulo MC |
| 185 | Implementar la generación de archivo PDF en RIEF | 2017-09-08 A | 2017-09-11 → 2017-09-12 A (+1d) | 2d → 3d | 0% → 100% | 3.1d → none |  | was named Generación de archivo PDF en RIEF - módulo MC |
| 186 | Implementar la generación de archivo PDF en Esquela de Entrega - módulo Depósito | 2017-09-14 → 2017-09-13 A (-1d) | 2017-09-18 → 2017-09-15 A (-3d) |  | 0% → 100% | 3.1d → none | Generación de archivo PDF en Nulidad - módulo MC → 185 | was named Generación de archivo PDF en Esquela de Entrega - módulo Depósito |
| 187 | Implementar la generación de archivo PDF en Acta de Secuestro Conservativo - módulo Depósito | 2017-09-19 → 2017-09-18 A (-1d) | 2017-09-20 A | 2d → 3d | 0% → 100% | 3.1d → none |  | was named Generación de archivo PDF en Acta de Secuestro Conservativo - módulo Depósito |

| ID | Task | Start | Finish | Duration | Complete | Total float | Predecessors | Other |
| --- | --- | --- | --- | --- | --- | --- | --- | --- |
| 190 | Revisión código fuente | 2017-09-21 → 2017-09-26 A (+5d) | 2017-09-21 → 2017-10-04 A (+13d) | 1d → 7d | 0% → 100% | 3.1d → none | 187 → 188 |  |
| 191 | Levantamiento de observaciones | 2017-09-22 → 2017-10-05 A (+13d) | 2017-09-25 → 2017-10-06 A (+11d) |  | 0% → 100% | 3.1d → none |  |  |
| 192 | **B. Pruebas** | 2017-09-26 → 2017-10-09 A (+13d) | 2017-10-10 → 2017-11-02 (+23d) | 10.3d → 17.5d | 0% → 86% | 3.1d → 35d |  |  |
| 193 | Documentación para el pase | 2017-09-26 → 2017-10-09 A (+13d) | 2017-09-28 → 2017-10-09 A (+11d) | 3d → 1d | 0% → 100% | 3.1d → none |  | resources César A → César A; Fernando B |
| 195 | Revisión de Código Fuente | 2017-09-29 → 2017-10-18 A (+19d) | 2017-10-03 → 2017-10-23 A (+20d) | 3d → 4d | 0% → 100% | 3.1d → none | 193 → 194 | was named Envío y Revisión por AF Calidad (Rev 1) |
| 196 | Revisión de Calidad y levantamiento de Observaciones | 2017-10-04 → 2017-10-24 A (+20d) | 2017-10-05 → 2017-10-27 A (+22d) | 2d → 4d | 0% → 100% | 3.1d → none |  | was named Levantamiento de Observaciones |
| 197 | Pruebas con el equipo AE | 2017-10-06 → 2017-10-30 (+24d) | 2017-10-06 → 2017-10-31 (+25d) | 0.3d → 2d |  | 3.1d → 40d |  |  |
| 198 | Pruebas de Aceptación (usuario) | 2017-10-06 → 2017-11-02 (+27d) | 2017-10-10 → 2017-11-02 (+23d) | 2d → 0.5d |  | 3.1d → 35d |  |  |
| 199 | C. Pase a producción | 2017-10-10 → 2017-11-02 (+23d) | 2017-10-10 → 2017-11-02 (+23d) | 0.7d → 0.5d |  | 3.1d → 35d |  | constraint start no earlier than 2017-03-09 → start no earlier than 2017-10-31 |
| 200 | D. Seguimiento | 2017-10-11 → 2017-11-03 (+23d) | 2017-10-16 → 2017-11-09 (+24d) | 4d → 5d |  | 52d → 35d |  |  |
| 201 | **2.4.1.2 Iteración 2** |  | 2017-11-30 → 2017-12-26 (+26d) | 68d → 84d | 12% → 7% | 20d → 4d |  |  |
| 202 | **A. Desarrollo** |  | 2017-11-16 → 2017-12-07 (+21d) | 58d → 73d | 14% → 8% | 30d → 15d |  |  |
| 205 | **Visualizar documentos digitales del Expediente Coactivo Virtual** | 2017-08-25 A → 2017-11-02 (+69d) | 2017-09-06 → 2017-11-06 (+61d) | 8d → 3d | 30% → 0% | 41d → 0d |  | constraint start no earlier than 2017-08-25 → none; resources Fernando B → none |
| 208 | **Solicitudes de Impresión de Expediente Coactivo** | 2017-10-23 A → 2017-11-07 (+15d) | 2017-11-06 → 2017-11-13 (+7d) | 10d → 5d | 30% → 0% | 1.5d → 0d |  | constraint start no earlier than 2017-10-23 → none; resources Fernando B → none |
| 211 | **Ingresar documentos digitales manuales al Expediente Coactivo Virtual** | 2017-11-07 A → 2017-11-13 (+6d) | 2017-11-13 → 2017-11-20 (+7d) | 5d → 6d | 30% → 0% | 33d → 0d | 208 → none | resources Fernando B → none |
| 218 | **Implementación de cuatro (4) Reportes** | 2017-10-11 → 2017-11-28 (+48d) | 2017-11-13 → 2017-12-01 (+18d) | 23d → 4d |  | 3.1d → 0d | 199 → 211 | resources César A → none |
| 221 | Revisión en desarrollo | 2017-11-14 → 2017-12-04 (+20d) | 2017-11-14 → 2017-12-05 (+21d) | 1d → 2d |  | 3.1d → 0d |  |  |
| 222 | Levantamiento de observaciones | 2017-11-15 → 2017-12-06 (+21d) | 2017-11-16 → 2017-12-07 (+21d) |  |  | 3.1d → 0d |  | resources none → César A; David Castañeda |
| 223 | **B. Pruebas** | 2017-11-17 → 2017-12-11 (+24d) | 2017-11-24 → 2017-12-15 (+21d) | 5.5d → 5d |  | 3.1d → 0d |  |  |
| 224 | Documentación para el pase | 2017-11-17 → 2017-12-11 (+24d) | 2017-11-17 → 2017-12-12 (+25d) | 1d → 2d |  | 3.1d → 0d |  | resources Fernando B → César A |
| 225 | Envío y Revisión por AF Calidad | 2017-11-20 → 2017-12-13 (+23d) | 2017-11-21 → 2017-12-13 (+22d) | 2d → 1d |  | 3.1d → 0d |  | was named Envío y Revisión por AF Calidad (Rev 1) |
| 226 | Levantamiento de Observaciones | 2017-11-22 → 2017-12-14 (+22d) | 2017-11-22 → 2017-12-14 (+22d) |  |  | 3.1d → 0d |  |  |
| 227 | Pruebas con el equipo AE | 2017-11-23 → 2017-12-15 (+22d) | 2017-11-23 → 2017-12-15 (+22d) | 0.5d → 0.25d |  | 3.1d → 0d |  |  |
| 228 | Pruebas de Aceptación (usuario) | 2017-11-23 → 2017-12-15 (+22d) | 2017-11-24 → 2017-12-15 (+21d) | 1d → 0.75d |  | 3.1d → 0d |  |  |
| 229 | C. Pase a producción | 2017-11-24 → 2017-12-18 (+24d) | 2017-11-24 → 2017-12-18 (+24d) | 0.5d → 1d |  | 3.1d → 0d |  |  |
| 230 | D. Seguimiento | 2017-11-27 → 2017-12-19 (+22d) | 2017-11-30 → 2017-12-26 (+26d) | 4d → 5d |  | 20d → 0d |  |  |
| 231 | **2.4.2 SGD - Atención de Solicitudes** |  | 2017-12-20 → 2017-12-26 (+6d) | 127.9d → 131d | 22% → 52% | 7.1d → 0d |  |  |
| 244 | **Iteración 2** | 2017-09-07 A | 2017-10-31 → 2017-12-26 (+56d) | 39d → 76d | 0% → 39% |  |  |  |
| 245 | **A. Desarrollo** | 2017-09-07 A | 2017-10-17 → 2017-12-07 (+51d) | 29d → 65d | 0% → 47% |  |  |  |
| 246 | Atención: Solicitar firmantes en proyecto respuesta | 2017-09-07 A | 2017-09-13 A |  | 0% → 100% | 41d → none | 205 → none | constraint none → start no earlier than 2017-09-07 |
| 247 | Atención: Firma mecanizada en documento respuesta | 2017-09-14 A | 2017-09-15 A |  | 0% → 100% | 41d → none |  |  |
| 248 | Atención: Selecccionar efectos en proyecto respuesta | 2017-09-18 A | 2017-09-22 A |  | 0% → 100% | 41d → none |  |  |
| 249 | Atención: Generar automáticamente el documento respuesta | 2017-09-25 A | 2017-09-26 A |  | 0% → 100% | 41d → none |  |  |
| 250 | Reporte Unificado No Tributario | 2017-09-27 A | 2017-10-03 A |  | 0% → 100% | 41d → none |  |  |
| 251 | Visualizar el documento digitalizado | 2017-10-11 → 2017-10-04 A (-7d) | 2017-10-12 → 2017-10-06 A (-6d) | 2d → 3d | 0% → 100% | 41d → none | Traslado del documento digitalizado al directorio de ubicación final → 250 |  |
| 256 | Implementación de cuatro (4) Reportes | 2017-11-27 → 2017-11-22 (-5d) | 2017-12-06 → 2017-12-01 (-5d) |  |  | 3.1d → 0d | 229 → 255 | resources none → Fernando B; baseline start 2017-11-27 → none; baseline finish 2017-12-06 → none |
| 257 | Revisión en Desarrollo | 2017-10-13 → 2017-12-04 (+52d) | 2017-10-13 → 2017-12-05 (+53d) | 1d → 2d |  | 41d → 0d | 251 → 256 |  |
| 258 | Levantamiento de observaciones | 2017-10-16 → 2017-12-06 (+51d) | 2017-10-17 → 2017-12-07 (+51d) |  |  | 41d → 0d |  | resources none → Fernando B |
| 259 | **B. Pruebas** | 2017-10-18 → 2017-12-11 (+54d) | 2017-10-25 → 2017-12-18 (+54d) |  |  | 41d → 0d |  |  |
| 260 | Documentación para el pase | 2017-10-18 → 2017-12-11 (+54d) | 2017-10-18 → 2017-12-12 (+55d) | 1d → 2d |  | 41d → 0d |  | resources none → Fernando B |
| 261 | Envío y Revisión por AF Calidad | 2017-10-19 → 2017-12-13 (+55d) | 2017-10-20 → 2017-12-13 (+54d) | 2d → 1d |  | 41d → 0d |  | was named Envío y Revisión por AF Calidad (Rev 1); resources none → AF Calidad |
| 262 | Levantamiento de Observaciones | 2017-10-23 → 2017-12-14 (+52d) | 2017-10-23 → 2017-12-14 (+52d) |  |  | 41d → 0d |  | resources none → Fernando B |
| 263 | Pruebas con el equipo AE | 2017-10-24 → 2017-12-15 (+52d) | 2017-10-24 → 2017-12-15 (+52d) |  |  | 41d → 0d |  | resources none → Fernando B; Luis Leiva; Wilson R [50%] |
| 264 | Pruebas de Aceptación (usuario) | 2017-10-24 → 2017-12-15 (+52d) | 2017-10-25 → 2017-12-18 (+54d) |  |  | 41d → 0d |  | resources none → Fernando B; Luis Leiva; Usuario |
| 265 | C. Pase a Producción | 2017-10-25 → 2017-12-18 (+54d) | 2017-10-25 → 2017-12-18 (+54d) |  |  | 41d → 0d |  |  |
| 266 | D. Seguimiento | 2017-10-26 → 2017-12-19 (+54d) | 2017-10-31 → 2017-12-26 (+56d) | 4d → 5d |  | 41d → 0d |  |  |
| 267 | **2.5 Actividades complementarias** | 2017-12-01 → 2017-10-11 A (-51d) | 2017-12-29 → 2018-01-01 (+3d) | 19d → 56d | 0% → 14% | 1d → 0d |  |  |
| 268 | **2.5.1 Capacitación a Usuarios** | 2017-12-01 → 2017-12-19 (+18d) | 2017-12-29 → 2017-12-21 (-8d) | 19d → 3d |  | 1d → 6d |  |  |
| 269 | Expediente Virtual | 2017-12-01 → 2017-12-19 (+18d) | 2017-12-05 → 2017-12-21 (+16d) |  |  | 17d → 6d |  |  |
| 270 | SGD - Atención | 2017-12-27 → 2017-12-19 (-8d) | 2017-12-29 → 2017-12-21 (-8d) |  |  | 1d → 6d | C. Pase a Producción → 265 | constraint start no earlier than 2017-12-27 → none |
| 271 | **2.5.2 Transferencia a Informática** | 2017-12-20 → 2017-12-27 (+7d) | 2017-12-27 → 2018-01-01 (+5d) |  |  | 3.1d → 0d |  |  |
| 272 | Elaborar documento de transferencia - Exp | 2017-12-20 → 2017-12-27 (+7d) | 2017-12-26 → 2017-12-29 (+3d) |  |  | 3.1d → 0d | D. Seguimiento → 230 | was named Elaborar documento de transferencia |
| 273 | Envío de documento formal | 2017-12-26 → 2018-01-01 (+6d) | 2017-12-27 → 2018-01-01 (+5d) |  |  | 3.1d → 0d |  |  |
