# [AE Trazabilidad] Cronograma de Actividades 1.0

How a schedule from MS Project changed from version to version. A marks actual dates.

## Version 1 (data date 2017-08-28, saved 2017-08-25)

| ID | WBS | Task | Duration | Start | Finish | Predecessors | Complete | Total float | Constraint |
| --- | --- | --- | --- | --- | --- | --- | --- | --- | --- |
| 1 | 1 | **AE 2017:** | 189d | 2017-03-06 A | 2017-12-05 |  | 58% | 0d |  |
| 2 | 1.1 | **Actividades de Gestión** | 189d | 2017-03-06 A | 2017-12-05 |  | 61% | 0d |  |
| 3 | 1.1.1 | **Planificación** | 7.75d | 2017-04-25 A | 2017-05-05 A |  | 100% |  |  |
| 4 | 1.1.1.1 | **Gestión del Alcance** | 7.75d | 2017-04-25 A | 2017-05-05 A |  | 100% |  |  |
| 5 |  | Elaborar Documento de Alcance | 7d | 2017-04-25 A | 2017-05-04 A | 114 | 100% |  |  |
| 6 |  | Reunión de revisión de Alcance | 2h | 2017-05-05 A | 2017-05-05 A | 5 | 100% |  |  |
| 7 |  | Firma de Documento de Alcance | 4h | 2017-05-05 A | 2017-05-05 A | 6 | 100% |  |  |
| 8 |  | Declaración de Alcance | 0d | 2017-05-05 A | 2017-05-05 A | 7 | 100% |  |  |
| 9 | 1.1.2 | **Ejecución** | 189d | 2017-03-06 A | 2017-12-05 |  | 62% | 0d |  |
| 10 | 1.1.2.1 | **Gestión de las Adquisiciones** | 189d | 2017-03-06 A | 2017-12-05 |  | 62% | 0d |  |
| 11 | 1.1.2.1.1 | **Servicio de Terceros - Especialista de Procesos** | 132d | 2017-03-06 A | 2017-09-14 |  | 91% | 57d |  |
| 12 |  | Contratación EP: MRAM | 2d | 2017-03-06 A | 2017-03-07 A |  | 100% |  |  |
| 13 |  | Inducción | 5d | 2017-03-08 A | 2017-03-14 A | 12 | 100% |  |  |
| 14 |  | Informe Mensual N°1 - Marzo | 3d | 2017-04-05 A | 2017-04-07 A | 13SS+20d | 100% |  |  |
| 15 |  | Informe Mensual N°2 - Abril | 3d | 2017-05-08 A | 2017-05-10 A | 13SS+40d | 100% |  |  |
| 16 |  | Informe Mensual N°3 - Mayo | 3d | 2017-06-05 A | 2017-06-07 A | 13SS+60d | 100% |  |  |
| 17 |  | Informe Mensual N°4 - Junio | 3d | 2017-07-05 A | 2017-07-07 A | 13SS+80d | 100% |  |  |
| 18 |  | Contratación EP: JJVÑ | 4d | 2017-07-10 A | 2017-07-13 A | 17 | 100% |  |  |
| 19 |  | Inducción | 3d | 2017-07-14 A | 2017-07-18 A | 18 | 100% |  |  |
| 20 |  | Informe Mensual N°1 - Julio/Agosto | 3d | 2017-08-14 A | 2017-08-16 A | 19SS+20d | 100% |  |  |
| 21 |  | Informe Mensual N°2 - Agosto/Setiembre | 3d | 2017-09-12 | 2017-09-14 | 19SS+40d |  | 57d |  |
| 22 | 1.1.2.1.2 | **Servicio de Terceros - Analista de Sistemas** | 174d | 2017-03-27 A | 2017-12-05 |  | 66% | 0d |  |
| 23 |  | Contratación AS: GAAC | 5d | 2017-03-27 A | 2017-03-31 A |  | 100% |  | start no earlier than 2017-03-27 |
| 24 |  | Inducción | 5d | 2017-04-03 A | 2017-04-07 A | 23 | 100% |  |  |
| 25 |  | Informe Mensual N°1 - Abril | 3d | 2017-05-02 A | 2017-05-04 A | 24SS+18d | 100% |  |  |
| 26 |  | Informe Mensual N°2 - Mayo | 4d | 2017-05-30 A | 2017-06-02 A | 24SS+38d | 100% |  |  |
| 27 |  | Informe Mensual N°3 - Junio | 3d | 2017-06-27 A | 2017-07-03 A | 24SS+58d | 100% |  |  |
| 28 |  | Informe Mensual N°4 - Julio | 3d | 2017-08-01 A | 2017-08-03 A | 24SS+80d | 100% |  |  |
| 29 |  | Informe Mensual N°5 - Agosto | 3d | 2017-09-01 | 2017-09-05 | 24SS+102d |  | 64d |  |
| 30 |  | Informe Mensual N°6 - Setiembre | 3d | 2017-09-29 | 2017-10-03 | 24SS+122d |  | 44d |  |
| 31 |  | Informe Mensual N°5 - Octubre | 3d | 2017-10-31 | 2017-11-03 | 24SS+144d |  | 22d |  |
| 32 |  | Informe Mensual N°5 - Noviembre | 3d | 2017-12-01 | 2017-12-05 | 24SS+166d |  | 0d |  |
| 33 | 1.1.2.1.3 | **Servicio de terceros - Analista Programador 1** | 133d | 2017-05-25 A | 2017-12-04 |  | 53% | 1d |  |
| 34 |  | Contratación AP1: JVDD I | 5d | 2017-05-25 A | 2017-05-31 A |  | 100% |  | start no earlier than 2017-05-25 |
| 35 |  | Inducción | 5d | 2017-06-01 A | 2017-06-07 A | 34 | 100% |  |  |
| 36 |  | Informe Mensual N°1 - Junio | 3d | 2017-06-27 A | 2017-07-03 A | 35SS+18d | 100% |  |  |
| 37 |  | Contratación AP1: JVDD II | 3d | 2017-06-27 A | 2017-07-03 A | 36SS | 100% |  |  |
| 38 |  | Informe Mensual N°1 - Julio | 3d | 2017-08-01 A | 2017-08-03 A | 35SS+40d | 100% |  |  |
| 39 |  | Informe Mensual N°2 - Agosto | 3d | 2017-08-31 | 2017-09-04 | 35SS+61d |  | 65d |  |
| 40 |  | Contratación AP1: MAFG | 3d | 2017-08-29 | 2017-09-01 |  |  | 1d | start no earlier than 2017-08-29 |
| 41 |  | Inducción | 2d | 2017-09-04 | 2017-09-05 | 40 |  | 1d |  |
| 42 |  | Informe Mensual N°1 - Setiembre | 3d | 2017-10-02 | 2017-10-04 | 41SS+20d |  | 43d |  |
| 43 |  | Informe Mensual N°2 - Octubre | 3d | 2017-10-30 | 2017-11-02 | 41SS+40d |  | 23d |  |
| 44 |  | Informe Mensual N°3 - Noviembre | 3d | 2017-11-30 | 2017-12-04 | 41SS+62d |  | 1d |  |
| 45 | 1.1.2.1.4 | **Servicio de terceros - Analista Programador 2** | 133d | 2017-05-25 A | 2017-12-04 |  | 53% | 1d |  |
| 46 |  | Contratación AP1: JCML I | 5d | 2017-05-25 A | 2017-05-31 A | 34SS | 100% |  |  |
| 47 |  | Inducción | 5d | 2017-06-01 A | 2017-06-07 A | 46 | 100% |  |  |
| 48 |  | Informe Mensual N°1 - Junio | 3d | 2017-06-27 A | 2017-07-03 A | 47SS+18d | 100% |  |  |
| 49 |  | Contratación AP2: JCML II | 3d | 2017-06-27 A | 2017-07-03 A | 48SS | 100% |  |  |
| 50 |  | Informe Mensual N°1 - Julio | 3d | 2017-08-01 A | 2017-08-03 A | 47SS+40d | 100% |  |  |
| 51 |  | Informe Mensual N°2 - Agosto | 3d | 2017-08-31 | 2017-09-04 | 47SS+61d |  | 65d |  |
| 52 |  | Contratación AP2: WJTL | 3d | 2017-08-29 | 2017-09-01 | 40SS |  | 1d |  |
| 53 |  | Inducción | 2d | 2017-09-04 | 2017-09-05 | 52 |  | 1d |  |
| 54 |  | Informe Mensual N°1 - Setiembre | 3d | 2017-10-02 | 2017-10-04 | 53SS+20d |  | 43d |  |
| 55 |  | Informe Mensual N°2 - Octubre | 3d | 2017-10-30 | 2017-11-02 | 53SS+40d |  | 23d |  |
| 56 |  | Informe Mensual N°3 - Noviembre | 3d | 2017-11-30 | 2017-12-04 | 53SS+62d |  | 1d |  |
| 57 | 1.1.2.1.5 | **Servicio de terceros - Analista Programador 3** | 110d | 2017-06-26 A | 2017-12-01 |  | 48% | 2d |  |
| 58 |  | Contratación AP1: EAPC I | 3d | 2017-06-26 A | 2017-06-28 A |  | 100% |  | start no earlier than 2017-06-26 |
| 59 |  | Inducción | 5d | 2017-07-03 A | 2017-07-07 A | 58 | 100% |  |  |
| 60 |  | Informe Mensual N°1 - Julio | 3d | 2017-08-01 A | 2017-08-03 A | 59SS+20d | 100% |  |  |
| 61 |  | Contratación AP2: EAPC II | 3d | 2017-08-01 A | 2017-08-03 A | 59SS+20d | 100% |  |  |
| 62 |  | Informe Mensual N°1 - Agosto | 3d | 2017-08-31 | 2017-09-04 | 61FS+18d |  | 65d |  |
| 63 |  | Contratación AP2: EAPC III | 3d | 2017-08-31 | 2017-09-04 | 61FS+18d |  | 2d |  |
| 64 |  | Informe Mensual N°1 - Setiembre | 3d | 2017-09-29 | 2017-10-03 | 63FS+18d |  | 44d |  |
| 65 |  | Informe Mensual N°2 - Octubre | 3d | 2017-10-31 | 2017-11-03 | 63FS+40d |  | 22d |  |
| 66 |  | Informe Mensual N°3 - Noviembre | 3d | 2017-11-29 | 2017-12-01 | 63FS+60d |  | 2d |  |
| 67 | 1.1.3 | **Seguimiento y Control** | 145.19d | 2017-05-05 A | 2017-12-01 |  | 42% | 2.81d |  |
| 68 | 1.1.3.1 | **Informe mensual** | 109d | 2017-06-26 A | 2017-11-30 |  | 40% | 3d |  |
| 69 |  | Informe mensual - junio | 5d | 2017-06-26 A | 2017-07-04 A |  | 100% |  | start no earlier than 2017-06-26 |
| 70 |  | Informe mensual - julio | 5d | 2017-07-26 A | 2017-08-02 A |  | 100% |  | start no earlier than 2017-07-26 |

| ID | WBS | Task | Duration | Start | Finish | Predecessors | Complete | Total float | Constraint |
| --- | --- | --- | --- | --- | --- | --- | --- | --- | --- |
| 71 |  | Informe mensual - agosto | 5d | 2017-08-25 A | 2017-09-01 |  | 40% | 66d | start no earlier than 2017-08-25 |
| 72 |  | Informe mensual - setiembre | 5d | 2017-09-26 | 2017-10-02 |  |  | 45d | start no earlier than 2017-09-26 |
| 73 |  | Informe mensual - octubre | 5d | 2017-10-26 | 2017-11-02 |  |  | 23d | start no earlier than 2017-10-26 |
| 74 |  | Informe mensual - noviembre | 5d | 2017-11-24 | 2017-11-30 |  |  | 3d | start no earlier than 2017-11-24 |
| 75 | 1.1.3.2 | **Reunión de Estado Semanal** | 145.19d | 2017-05-05 A | 2017-12-01 |  | 55% | 2.81d |  |
| 76 |  | Reunión de Estado - Semana 1 | 1.5h | 2017-05-05 A | 2017-05-05 A |  | 100% |  | start no earlier than 2017-05-05 |
| 77 |  | Reunión de Estado - Semana 2 | 1.5h | 2017-05-12 A | 2017-05-12 A |  | 100% |  | start no earlier than 2017-05-12 |
| 78 |  | Reunión de Estado - Semana 3 | 1.5h | 2017-05-19 A | 2017-05-19 A |  | 100% |  | start no earlier than 2017-05-19 |
| 79 |  | Reunión de Estado - Semana 4 | 1.5h | 2017-05-26 A | 2017-05-26 A |  | 100% |  | start no earlier than 2017-05-26 |
| 80 |  | Reunión de Estado - Semana 5 | 1.5h | 2017-06-02 A | 2017-06-02 A |  | 100% |  | start no earlier than 2017-06-02 |
| 81 |  | Reunión de Estado - Semana 6 | 1.5h | 2017-06-09 A | 2017-06-09 A |  | 100% |  | start no earlier than 2017-06-09 |
| 82 |  | Reunión de Estado - Semana 7 | 1.5h | 2017-06-16 A | 2017-06-16 A |  | 100% |  | start no earlier than 2017-06-16 |
| 83 |  | Reunión de Estado - Semana 8 | 1.5h | 2017-06-23 A | 2017-06-23 A |  | 100% |  | start no earlier than 2017-06-23 |
| 84 |  | Reunión de Estado - Semana 9 | 1.5h | 2017-06-28 A | 2017-06-28 A |  | 100% |  | start no earlier than 2017-06-28 |
| 85 |  | Reunión de Estado - Semana 10 | 1.5h | 2017-07-07 A | 2017-07-07 A |  | 100% |  | start no earlier than 2017-07-07 |
| 86 |  | Reunión de Estado - Semana 11 | 1.5h | 2017-07-13 A | 2017-07-13 A |  | 100% |  | start no earlier than 2017-07-13 |
| 87 |  | Reunión de Estado - Semana 12 | 1.5h | 2017-07-21 A | 2017-07-21 A |  | 100% |  | start no earlier than 2017-07-21 |
| 88 |  | Reunión de Estado - Semana 13 | 1.5h | 2017-07-31 A | 2017-07-31 A |  | 100% |  | start no earlier than 2017-07-31 |
| 89 |  | Reunión de Estado - Semana 14 | 1.5h | 2017-08-04 A | 2017-08-04 A |  | 100% |  | start no earlier than 2017-08-04 |
| 90 |  | Reunión de Estado - Semana 15 | 1.5h | 2017-08-11 A | 2017-08-11 A |  | 100% |  | start no earlier than 2017-08-11 |
| 91 |  | Reunión de Estado - Semana 16 | 1.5h | 2017-08-18 A | 2017-08-18 A |  | 100% |  | start no earlier than 2017-08-18 |
| 92 |  | Reunión de Estado - Semana 17 | 1.5h | 2017-08-25 A | 2017-08-25 A |  | 100% |  | start no earlier than 2017-08-25 |
| 93 |  | Reunión de Estado - Semana 18 | 1.5h | 2017-09-01 | 2017-09-01 |  |  | 66.81d | start no earlier than 2017-09-01 |
| 94 |  | Reunión de Estado - Semana 19 | 1.5h | 2017-09-08 | 2017-09-08 |  |  | 61.81d | start no earlier than 2017-09-08 |
| 95 |  | Reunión de Estado - Semana 20 | 1.5h | 2017-09-15 | 2017-09-15 |  |  | 56.81d | start no earlier than 2017-09-15 |
| 96 |  | Reunión de Estado - Semana 21 | 1.5h | 2017-09-22 | 2017-09-22 |  |  | 51.81d | start no earlier than 2017-09-22 |
| 97 |  | Reunión de Estado - Semana 22 | 1.5h | 2017-09-29 | 2017-09-29 |  |  | 46.81d | start no earlier than 2017-09-29 |
| 98 |  | Reunión de Estado - Semana 23 | 1.5h | 2017-10-06 | 2017-10-06 |  |  | 41.81d | start no earlier than 2017-10-06 |
| 99 |  | Reunión de Estado - Semana 24 | 1.5h | 2017-10-13 | 2017-10-13 |  |  | 36.81d | start no earlier than 2017-10-13 |
| 100 |  | Reunión de Estado - Semana 25 | 1.5h | 2017-10-20 | 2017-10-20 |  |  | 31.81d | start no earlier than 2017-10-20 |
| 101 |  | Reunión de Estado - Semana 26 | 1.5h | 2017-10-27 | 2017-10-27 |  |  | 26.81d | start no earlier than 2017-10-27 |
| 102 |  | Reunión de Estado - Semana 27 | 1.5h | 2017-11-03 | 2017-11-03 |  |  | 22.81d | start no earlier than 2017-11-03 |
| 103 |  | Reunión de Estado - Semana 28 | 1.5h | 2017-11-10 | 2017-11-10 |  |  | 17.81d | start no earlier than 2017-11-10 |
| 104 |  | Reunión de Estado - Semana 29 | 1.5h | 2017-11-17 | 2017-11-17 |  |  | 12.81d | start no earlier than 2017-11-17 |
| 105 |  | Reunión de Estado - Semana 30 | 1.5h | 2017-11-24 | 2017-11-24 |  |  | 7.81d | start no earlier than 2017-11-24 |
| 106 |  | Reunión de Estado - Semana 31 | 1.5h | 2017-12-01 | 2017-12-01 |  |  | 2.81d | start no earlier than 2017-12-01 |
| 107 | 1.1.4 | **Cierre** | 5d | 2017-03-06 A | 2017-03-13 A |  | 100% |  |  |
| 108 |  | Elaboración de informe de Cierre | 5d | 2017-03-06 A | 2017-03-10 A |  | 100% |  |  |
| 109 |  | Informe de Cierre | 0d | 2017-03-13 A | 2017-03-13 A | 108 | 100% |  |  |
| 110 | 1.2 | **Actividades de Ingeniería** | 175d | 2017-03-15 A | 2017-11-24 |  | 56% | 7d |  |
| 111 | 1.2.1 | **Planificación** | 27.5d | 2017-03-15 A | 2017-04-25 A |  | 100% |  |  |
| 112 |  | Elaboración de Ficha de Relevamiento v1.0 | 15d | 2017-03-15 A | 2017-04-04 A | 13 | 100% |  |  |
| 113 |  | Revisión Ficha de Relevamiento v 1.0 | 1d | 2017-04-05 A | 2017-04-05 A | 112 | 100% |  |  |
| 114 |  | Actualización Ficha de Relevamiento v1.0 | 11d | 2017-04-06 A | 2017-04-24 A | 113 | 100% |  |  |
| 115 |  | Revisión final y firma | 4h | 2017-04-25 A | 2017-04-25 A | 114 | 100% |  |  |
| 116 |  | Ficha de Relevamiento | 0d | 2017-04-25 A | 2017-04-25 A | 115 | 100% |  |  |
| 117 | 1.2.2 | **Modelado de Procesos** | 13.88d | 2017-04-06 A | 2017-04-27 A |  | 100% |  |  |
| 118 | 1.2.2.1 | **Ficha Técnica del Proceso** | 13.88d | 2017-04-06 A | 2017-04-27 A |  | 100% |  |  |
| 119 |  | Elaborar FTP Registro y Derivación de Trámite (ATD) | 2d | 2017-04-06 A | 2017-04-07 A |  | 100% |  | start no earlier than 2017-04-06 |
| 120 |  | Elaborar FTP Asignación, Respuesta y Notificación de Trámite (GSA) | 1.5d | 2017-04-10 A | 2017-04-11 A | 119 | 100% |  |  |
| 121 |  | Elaborar FTP Asignación, Respuesta y Notificación de Trámite (ARM) | 1.5d | 2017-04-11 A | 2017-04-12 A | 120 | 100% |  |  |
| 122 |  | Elaborar FTP Asignación, Respuesta y Notificación de Trámite (ATS) | 1.5d | 2017-04-17 A | 2017-04-18 A | 121 | 100% |  |  |
| 123 |  | Revisión y Firma FTP GSA | 2h | 2017-04-27 A | 2017-04-27 A | 129 | 100% |  |  |
| 124 |  | Elaborar FTP Registro y Derivación de Trámite (AJD) | 1.5d | 2017-04-18 A | 2017-04-19 A | 122 | 100% |  |  |
| 125 |  | Elaborar FTP Asignación, Respuesta y Notificación de Trámite (GCN) | 1.5d | 2017-04-20 A | 2017-04-21 A | 124 | 100% |  |  |
| 126 |  | Revisión y Firma FTP GCN | 2h | 2017-04-27 A | 2017-04-27 A | 123 | 100% |  |  |
| 127 |  | Elaborar FTP Asignación, Respuesta y Notificación de Trámite (AEC) | 1.5d | 2017-04-21 A | 2017-04-24 A | 125 | 100% |  |  |
| 128 |  | Revisión y Firma FTP AEC | 1.5h | 2017-04-27 A | 2017-04-27 A | 126 | 100% |  |  |
| 129 |  | Elaborar FTP Registro y Derivación de Trámite (GIM) | 2d | 2017-04-25 A | 2017-04-26 A | 127 | 100% |  |  |
| 130 |  | Revisión y Firma FTP GIM | 1.5h | 2017-04-27 A | 2017-04-27 A | 128 | 100% |  |  |
| 131 |  | Ficha Técnica del Proceso | 0d | 2017-04-27 A | 2017-04-27 A | 130 | 100% |  |  |
| 132 | 1.2.3 | **Análisis y Diseño de Sistemas** | 104.12d | 2017-04-27 A | 2017-09-27 |  | 81% | 48d |  |
| 133 | 1.2.3.1 | **Análisis Funcional** | 42.5d | 2017-04-27 A | 2017-06-28 A |  | 100% |  |  |
| 134 |  | Elaborar Documento Funcional de Atención | 6d | 2017-04-27 A | 2017-05-08 A | 130 | 100% |  |  |
| 135 |  | Revisión y firma DF Atención | 1d | 2017-06-01 A | 2017-06-02 A | 140 | 100% |  |  |
| 136 |  | Elaborar Documento Funcional de Registro | 6d | 2017-05-08 A | 2017-05-16 A | 134 | 100% |  |  |
| 137 |  | Revisión y firma DF Registro | 1d | 2017-06-02 A | 2017-06-05 A | 135 | 100% |  |  |
| 138 |  | Elaborar Documento Funcional de Derivación | 6d | 2017-05-16 A | 2017-05-24 A | 136 | 100% |  |  |
| 139 |  | Revisión y firma DF Derivación | 0.5d | 2017-06-05 A | 2017-06-06 A | 137 | 100% |  |  |
| 140 |  | Elaborar Documento Funcional de Notificación | 6d | 2017-05-24 A | 2017-06-01 A | 138 | 100% |  |  |

| ID | WBS | Task | Duration | Start | Finish | Predecessors | Complete | Total float | Constraint |
| --- | --- | --- | --- | --- | --- | --- | --- | --- | --- |
| 141 |  | Revisión y firma DF Notificación | 1d | 2017-06-06 A | 2017-06-07 A | 139 | 100% |  |  |
| 142 |  | Elaborar Documento Funcional de Configuración | 8d | 2017-06-07 A | 2017-06-19 A | 141 | 100% |  |  |
| 143 |  | Revisión y firma DF Configuración | 7d | 2017-06-19 A | 2017-06-28 A | 142 | 100% |  |  |
| 144 |  | Documento de Definición Funcional | 0d | 2017-06-28 A | 2017-06-28 A | 143 | 100% |  |  |
| 145 | 1.2.3.2 | **Análisis Técnico** | 73d | 2017-06-13 A | 2017-09-27 |  | 67% | 48d |  |
| 146 |  | Elaboración de Documento Técnico de Notificación | 7d | 2017-06-13 A | 2017-06-21 A |  | 100% |  | start no earlier than 2017-06-13 |
| 147 |  | Revisión de DT Notificación | 2d | 2017-06-22 A | 2017-06-23 A | 146 | 100% |  |  |
| 148 |  | Levantamiento de observaciones DT Notificación | 3d | 2017-07-04 A | 2017-07-06 A | 149 | 100% |  |  |
| 149 |  | Elaboración de Documento Técnico de Configuración | 4d | 2017-06-26 A | 2017-07-03 A | 147 | 100% |  |  |
| 150 |  | Revisión de DT Configuración | 3d | 2017-07-07 A | 2017-07-11 A | 148 | 100% |  |  |
| 151 |  | Levantamiento de observaciones DT Configuración | 3d | 2017-07-12 A | 2017-07-14 A | 150 | 100% |  |  |
| 152 |  | Segunda revisión DT Configuración | 3d | 2017-08-09 A | 2017-08-11 A | 151FS+16d | 100% |  |  |
| 153 |  | Elaboración Documento Técnico Derivación | 5d | 2017-08-09 A | 2017-08-15 A | 152SS | 100% |  |  |
| 154 |  | Revisión interna DT Derivación | 1d | 2017-08-16 A | 2017-08-16 A | 153 | 100% |  |  |
| 155 |  | Levantamiento de observaciones DT Derivación | 1d | 2017-08-17 A | 2017-08-17 A | 154 | 100% |  |  |
| 156 |  | Revisión de DT Derivación | 3d | 2017-08-18 A | 2017-08-22 A | 155 | 100% |  |  |
| 157 |  | Levantamiento de observaciones DT Derivación | 2d | 2017-08-23 A | 2017-08-24 A | 156 | 100% |  |  |
| 158 |  | Revisión interna DT Derivación | 1d | 2017-08-25 A | 2017-08-25 A | 157 | 100% |  |  |
| 159 |  | Segunda revisión de DT Derivación | 2d | 2017-08-28 A | 2017-08-29 | 158 | 50% | 48d |  |
| 160 |  | Elaboración de acta de conformidad y firmas | 1d | 2017-08-31 | 2017-08-31 | 159 |  | 48d |  |
| 161 |  | Elaboración Documento Técnico Registro - Atención | 6d | 2017-09-05 | 2017-09-12 | 191 |  | 48d |  |
| 162 |  | Revisión interna DT Registro - Atención | 1d | 2017-09-13 | 2017-09-13 | 161 |  | 48d |  |
| 163 |  | Levantamiento de observaciones DT Registro - Atención | 2d | 2017-09-14 | 2017-09-15 | 162 |  | 48d |  |
| 164 |  | Revisión de DT Registro - Atención | 2d | 2017-09-18 | 2017-09-19 | 163 |  | 48d |  |
| 165 |  | Levantamiento de observaciones DT Registro - Atención | 3d | 2017-09-20 | 2017-09-22 | 164 |  | 48d |  |
| 166 |  | Segunda revisión de DT Registro - Atención | 2d | 2017-09-25 | 2017-09-26 | 165 |  | 48d |  |
| 167 |  | Elaboración de acta de conformidad y firmas | 1d | 2017-09-27 | 2017-09-27 | 166 |  | 48d |  |
| 168 |  | Documento Técnico de Sistemas | 0d | 2017-09-27 | 2017-09-27 | 167 |  | 48d |  |
| 169 | 1.2.4 | **Construcción** | 102.62d | 2017-06-28 A | 2017-11-24 |  | 30% | 7d |  |
| 170 | 1.2.4.1 | **Requerimiento 1 (####)** | 55.62d | 2017-06-28 A | 2017-09-19 |  | 75% | 54d |  |
| 171 | 1.2.4.1.1 | **Desarrollo** | 42.62d | 2017-06-28 A | 2017-08-31 |  | 91% | 67d |  |
| 172 |  | Elaboración de casos de prueba | 3d | 2017-08-01 A | 2017-08-03 A |  | 100% |  | start no earlier than 2017-08-01 |
| 173 |  | Preparación del ambiente | 1d | 2017-06-28 A | 2017-07-03 A | 143 | 100% |  |  |
| 174 |  | Inducción al desarrollador DT Notificación | 1d | 2017-07-03 A | 2017-07-04 A | 173 | 100% |  |  |
| 175 |  | Inducción al desarrollador DT Configuración | 1d | 2017-07-14 A | 2017-07-14 A | 151FF | 100% |  |  |
| 176 |  | Codificación de formularios Notificación | 17d | 2017-07-04 A | 2017-07-27 | 174 | 99% | 0d |  |
| 177 |  | Codificación de formularios Configuración | 7d | 2017-07-17 A | 2017-07-25 A | 175 | 100% |  |  |
| 178 |  | Ejecución de pruebas unitarias de los formularios Notificación | 4d | 2017-08-04 A | 2017-08-09 A | 172 | 100% |  |  |
| 179 |  | Ejecución de pruebas unitarias de los formularios Configuración | 4d | 2017-07-26 A | 2017-08-01 A | 177 | 100% |  |  |
| 180 |  | Codificación de PQT DTS | 17d | 2017-08-02 A | 2017-08-24 A | 179 | 100% |  |  |
| 181 |  | Ejecución de pruebas unitarias de PQT DTS | 3d | 2017-08-23 A | 2017-08-25 A | 180 | 100% |  |  |
| 182 |  | Elaboración de documentación de pase | 3d | 2017-08-28 | 2017-08-31 | 181 |  | 67d |  |
| 183 |  | Validación del Arquitecto y Líder Funcional | 3d | 2017-08-28 | 2017-08-31 | 181 |  | 54d |  |
| 184 | 1.2.4.1.2 | **Pruebas** | 6d | 2017-09-01 | 2017-09-08 |  |  | 54d |  |
| 185 |  | Revisión del pase por parte del A.F.C.C.T.I. | 3d | 2017-09-01 | 2017-09-05 | 183 |  | 54d |  |
| 186 |  | Ejecución de pruebas de aceptación | 3d | 2017-09-06 | 2017-09-08 | 185 |  | 54d |  |
| 187 |  | Solicitud de Pase a Producción | 2d | 2017-09-11 | 2017-09-12 | 186 |  | 54d |  |
| 188 |  | Seguimiento | 5d | 2017-09-13 | 2017-09-19 | 187 |  | 54d |  |
| 189 | 1.2.4.2 | **Requerimiento 2 (####)** | 51d | 2017-08-21 | 2017-10-31 |  |  | 7d |  |
| 190 | 1.2.4.2.1 | **Desarrollo** | 33d | 2017-08-21 | 2017-10-05 |  |  | 7d |  |
| 191 |  | Elaboración de casos de prueba | 2d | 2017-09-01 | 2017-09-04 | 160 |  | 48d |  |
| 192 |  | Inducción al desarrollador DT Derivación | 1d | 2017-08-21 | 2017-08-21 |  |  | 7d | start no earlier than 2017-08-21 |
| 193 |  | Derivación | 8d | 2017-08-22 | 2017-09-01 | 192 |  | 7d |  |
| 194 |  | Recepción | 8d | 2017-08-22 | 2017-09-01 | 193SS |  | 66d |  |
| 195 |  | Retirar la opción de inventario (automatizar) | 5d | 2017-08-22 | 2017-08-28 | 193SS |  | 7d |  |
| 196 |  | Asignación | 12d | 2017-08-29 | 2017-09-14 | 195 |  | 7d |  |
| 197 |  | Codificación de derivación y devolución | 5d | 2017-09-15 | 2017-09-21 | 196 |  | 7d |  |
| 198 |  | Ejecución de pruebas integrales del proceso | 5d | 2017-09-22 | 2017-09-28 | 197 |  | 7d |  |
| 199 |  | Elaboración de documentación de pase | 2d | 2017-09-29 | 2017-10-02 | 198 |  | 17d |  |
| 200 |  | Validación del Arquitecto y el Líder Funcional | 3d | 2017-10-03 | 2017-10-05 | 199 |  | 17d |  |
| 201 | 1.2.4.2.2 | **Pruebas** | 11d | 2017-10-06 | 2017-10-20 |  |  | 17d |  |
| 202 |  | Revisión del pase por parte del A.F.C.C.T.I. | 3d | 2017-10-06 | 2017-10-10 | 200 |  | 17d |  |
| 203 |  | Ejecución de pruebas de aceptación | 8d | 2017-10-11 | 2017-10-20 | 202 |  | 17d |  |
| 204 |  | Pase a producción | 2d | 2017-10-23 | 2017-10-24 | 203 |  | 17d |  |
| 205 |  | Seguimiento | 5d | 2017-10-25 | 2017-10-31 | 204 |  | 17d |  |
| 206 | 1.2.4.3 | **Requerimiento 3 (####)** | 44d | 2017-09-25 | 2017-11-24 |  |  | 7d |  |
| 207 | 1.2.4.3.1 | **Desarrollo** | 26d | 2017-09-25 | 2017-10-30 |  |  | 11d |  |
| 208 |  | Elaboración de casos de prueba | 3d | 2017-09-25 | 2017-09-27 | 165 |  | 48d |  |
| 209 |  | Inducción al desarrollador DT Registro - Atención | 1d | 2017-09-29 | 2017-09-29 | 198 |  | 7d |  |
| 210 |  | Codificación de procedimientos almacenados | 2d | 2017-10-02 | 2017-10-03 | 209 |  | 7d |  |

| ID | WBS | Task | Duration | Start | Finish | Predecessors | Complete | Total float | Constraint |
| --- | --- | --- | --- | --- | --- | --- | --- | --- | --- |
| 211 |  | Codificación de PQT DTS | 3d | 2017-10-04 | 2017-10-06 | 210 |  | 7d |  |
| 212 |  | Codificación de Formularios | 8d | 2017-10-09 | 2017-10-18 | 211 |  | 7d |  |
| 213 |  | Ejecución de pruebas integrales | 4d | 2017-10-19 | 2017-10-24 | 212 |  | 29d |  |
| 214 |  | Elaboración de documentación de pase | 5d | 2017-10-19 | 2017-10-25 | 212 |  | 7d |  |
| 215 |  | Validación del Arquitecto y el Líder Funcional | 3d | 2017-10-26 | 2017-10-30 | 214 |  | 7d |  |
| 216 | 1.2.4.3.2 | **Pruebas** | 10d | 2017-10-31 | 2017-11-14 |  |  | 7d |  |
| 217 |  | Revisión del pase por parte del A.F.C.C.T.I. | 3d | 2017-10-31 | 2017-11-03 | 215 |  | 7d |  |
| 218 |  | Ejecución de pruebas de aceptación | 7d | 2017-11-06 | 2017-11-14 | 217 |  | 7d |  |
| 219 |  | Pase a Producción | 2d | 2017-11-15 | 2017-11-16 | 218 |  | 7d |  |
| 220 |  | Seguimiento | 6d | 2017-11-17 | 2017-11-24 | 219 |  | 7d |  |
| 221 | 1.2.5 | **Actividades Complementarias** | 114d | 2017-05-30 A | 2017-11-10 |  | 62% | 17d |  |
| 222 |  | Formularios de criterios de configuración | 10d | 2017-08-28 A | 2017-09-11 |  | 10% | 60d | start no earlier than 2017-08-28 |
| 223 | 1.2.5.2 | **Propuesta de Categorización** | 16.5d | 2017-05-30 A | 2017-06-21 A |  | 100% |  |  |
| 224 |  | Elaboración | 14d | 2017-05-30 A | 2017-06-16 A |  | 100% |  | start no earlier than 2017-05-30 |
| 225 |  | Revisión y aprobación | 2.5d | 2017-06-19 A | 2017-06-21 A | 224 | 100% |  |  |
| 226 | 1.2.5.3 | **Sección "Trámites" - Página Web** | 110d | 2017-06-05 A | 2017-11-10 |  | 51% | 17d |  |
| 227 |  | Elaboración | 15d | 2017-06-05 A | 2017-06-23 A |  | 100% |  | start no earlier than 2017-06-05 |
| 228 |  | Revisión y aprobación | 3d | 2017-06-26 A | 2017-06-28 A | 227 | 100% |  |  |
| 229 |  | Elaboración de guías de llenado de formatos | 50d | 2017-08-02 A | 2017-10-11 |  | 38% | 38d | start no earlier than 2017-08-02 |
| 230 |  | Diseño página web | 8d | 2017-08-22 A | 2017-09-01 | 228FS+35d | 63% | 66d |  |
| 231 |  | Implementación | 7d | 2017-11-02 | 2017-11-10 | 205 |  | 17d |  |
| 232 | 1.2.5.4 | **Dimensionamiento** | 52d | 2017-06-26 A | 2017-09-11 |  | 80% | 60d |  |
| 233 |  | Elaboración de informe de Dimensionamiento I | 8d | 2017-06-26 A | 2017-07-07 A | 228SS | 100% |  |  |
| 234 |  | Elaboración de Informe de Dimensionamiento II | 30d | 2017-07-19 A | 2017-08-31 | 19 | 93% | 60d |  |
| 235 |  | Revisión y Aprobación | 7d | 2017-09-01 | 2017-09-11 | 234 |  | 60d |  |

## Version 2 (data date 2017-08-28, saved 2017-08-29)

Last finish stays 2017-12-05. Complete tasks 110 → 111.

Added:

| ID | Task | Duration | Start | Finish | Predecessors |
| --- | --- | --- | --- | --- | --- |
| 189 | Pase a Producción 1 | 0d | 2017-03-06 | 2017-03-06 |  |
| 207 | Pase a Producción 2 | 0d | 2017-03-06 A | 2017-03-06 A |  |
| 223 | Pase a producción 3 | 0d | 2017-11-16 | 2017-11-16 | 221 |

Changed:

| ID | Task | Complete | Other |
| --- | --- | --- | --- |
| 1 | **AE 2017:** | 58% → 57% | baseline start none → 2017-03-06; baseline finish none → 2017-12-05 |
| 2 | **Actividades de Gestión** | 61% → 59% | baseline start none → 2017-03-06; baseline finish none → 2017-12-05 |
| 3 | **Planificación** |  | baseline start none → 2017-04-25; baseline finish none → 2017-05-05 |
| 4 | **Gestión del Alcance** |  | baseline start none → 2017-04-25; baseline finish none → 2017-05-05 |
| 5 | Elaborar Documento de Alcance |  | baseline start none → 2017-04-25; baseline finish none → 2017-05-04 |
| 6 | Reunión de revisión de Alcance |  | baseline start none → 2017-05-05; baseline finish none → 2017-05-05 |
| 7 | Firma de Documento de Alcance |  | baseline start none → 2017-05-05; baseline finish none → 2017-05-05 |
| 8 | Declaración de Alcance |  | baseline start none → 2017-05-05; baseline finish none → 2017-05-05 |
| 9 | **Ejecución** |  | baseline start none → 2017-03-06; baseline finish none → 2017-12-05 |
| 10 | **Gestión de las Adquisiciones** |  | baseline start none → 2017-03-06; baseline finish none → 2017-12-05 |
| 11 | **Servicio de Terceros - Especialista de Procesos** |  | baseline start none → 2017-03-06; baseline finish none → 2017-09-14 |
| 12 | Contratación EP: MRAM |  | baseline start none → 2017-03-06; baseline finish none → 2017-03-07 |
| 13 | Inducción |  | baseline start none → 2017-03-08; baseline finish none → 2017-03-14 |
| 14 | Informe Mensual N°1 - Marzo |  | baseline start none → 2017-04-05; baseline finish none → 2017-04-07 |
| 15 | Informe Mensual N°2 - Abril |  | baseline start none → 2017-05-08; baseline finish none → 2017-05-10 |
| 16 | Informe Mensual N°3 - Mayo |  | baseline start none → 2017-06-05; baseline finish none → 2017-06-07 |
| 17 | Informe Mensual N°4 - Junio |  | baseline start none → 2017-07-05; baseline finish none → 2017-07-07 |
| 18 | Contratación EP: JJVÑ |  | baseline start none → 2017-07-10; baseline finish none → 2017-07-13 |
| 19 | Inducción |  | baseline start none → 2017-07-14; baseline finish none → 2017-07-18 |
| 20 | Informe Mensual N°1 - Julio/Agosto |  | baseline start none → 2017-08-14; baseline finish none → 2017-08-16 |
| 21 | Informe Mensual N°2 - Agosto/Setiembre |  | baseline start none → 2017-09-12; baseline finish none → 2017-09-14 |
| 22 | **Servicio de Terceros - Analista de Sistemas** |  | baseline start none → 2017-03-27; baseline finish none → 2017-12-05 |
| 23 | Contratación AS: GAAC |  | baseline start none → 2017-03-27; baseline finish none → 2017-03-31 |
| 24 | Inducción |  | baseline start none → 2017-04-03; baseline finish none → 2017-04-07 |
| 25 | Informe Mensual N°1 - Abril |  | baseline start none → 2017-05-02; baseline finish none → 2017-05-04 |
| 26 | Informe Mensual N°2 - Mayo |  | baseline start none → 2017-05-30; baseline finish none → 2017-06-02 |
| 27 | Informe Mensual N°3 - Junio |  | baseline start none → 2017-06-27; baseline finish none → 2017-07-03 |
| 28 | Informe Mensual N°4 - Julio |  | baseline start none → 2017-08-01; baseline finish none → 2017-08-03 |
| 29 | Informe Mensual N°5 - Agosto |  | baseline start none → 2017-09-01; baseline finish none → 2017-09-05 |
| 30 | Informe Mensual N°6 - Setiembre |  | baseline start none → 2017-09-29; baseline finish none → 2017-10-03 |
| 31 | Informe Mensual N°5 - Octubre |  | baseline start none → 2017-10-31; baseline finish none → 2017-11-03 |
| 32 | Informe Mensual N°5 - Noviembre |  | baseline start none → 2017-12-01; baseline finish none → 2017-12-05 |
| 33 | **Servicio de terceros - Analista Programador 1** |  | baseline start none → 2017-05-25; baseline finish none → 2017-12-04 |
| 34 | Contratación AP1: JVDD I |  | baseline start none → 2017-05-25; baseline finish none → 2017-05-31 |
| 35 | Inducción |  | baseline start none → 2017-06-01; baseline finish none → 2017-06-07 |
| 36 | Informe Mensual N°1 - Junio |  | baseline start none → 2017-06-27; baseline finish none → 2017-07-03 |
| 37 | Contratación AP1: JVDD II |  | baseline start none → 2017-06-27; baseline finish none → 2017-07-03 |
| 38 | Informe Mensual N°1 - Julio |  | baseline start none → 2017-08-01; baseline finish none → 2017-08-03 |
| 39 | Informe Mensual N°2 - Agosto |  | baseline start none → 2017-08-31; baseline finish none → 2017-09-04 |
| 40 | Contratación AP1: MAFG |  | baseline start none → 2017-08-29; baseline finish none → 2017-09-01 |
| 41 | Inducción |  | baseline start none → 2017-09-04; baseline finish none → 2017-09-05 |
| 42 | Informe Mensual N°1 - Setiembre |  | baseline start none → 2017-10-02; baseline finish none → 2017-10-04 |
| 43 | Informe Mensual N°2 - Octubre |  | baseline start none → 2017-10-30; baseline finish none → 2017-11-02 |
| 44 | Informe Mensual N°3 - Noviembre |  | baseline start none → 2017-11-30; baseline finish none → 2017-12-04 |
| 45 | **Servicio de terceros - Analista Programador 2** |  | baseline start none → 2017-05-25; baseline finish none → 2017-12-04 |
| 46 | Contratación AP1: JCML I |  | baseline start none → 2017-05-25; baseline finish none → 2017-05-31 |
| 47 | Inducción |  | baseline start none → 2017-06-01; baseline finish none → 2017-06-07 |
| 48 | Informe Mensual N°1 - Junio |  | baseline start none → 2017-06-27; baseline finish none → 2017-07-03 |
| 49 | Contratación AP2: JCML II |  | baseline start none → 2017-06-27; baseline finish none → 2017-07-03 |
| 50 | Informe Mensual N°1 - Julio |  | baseline start none → 2017-08-01; baseline finish none → 2017-08-03 |
| 51 | Informe Mensual N°2 - Agosto |  | baseline start none → 2017-08-31; baseline finish none → 2017-09-04 |
| 52 | Contratación AP2: WJTL |  | baseline start none → 2017-08-29; baseline finish none → 2017-09-01 |
| 53 | Inducción |  | baseline start none → 2017-09-04; baseline finish none → 2017-09-05 |
| 54 | Informe Mensual N°1 - Setiembre |  | baseline start none → 2017-10-02; baseline finish none → 2017-10-04 |
| 55 | Informe Mensual N°2 - Octubre |  | baseline start none → 2017-10-30; baseline finish none → 2017-11-02 |
| 56 | Informe Mensual N°3 - Noviembre |  | baseline start none → 2017-11-30; baseline finish none → 2017-12-04 |
| 57 | **Servicio de terceros - Analista Programador 3** |  | baseline start none → 2017-06-26; baseline finish none → 2017-12-01 |
| 58 | Contratación AP1: EAPC I |  | baseline start none → 2017-06-26; baseline finish none → 2017-06-28 |
| 59 | Inducción |  | baseline start none → 2017-07-03; baseline finish none → 2017-07-07 |
| 60 | Informe Mensual N°1 - Julio |  | baseline start none → 2017-08-01; baseline finish none → 2017-08-03 |
| 61 | Contratación AP2: EAPC II |  | baseline start none → 2017-08-01; baseline finish none → 2017-08-03 |
| 62 | Informe Mensual N°1 - Agosto |  | baseline start none → 2017-08-31; baseline finish none → 2017-09-04 |
| 63 | Contratación AP2: EAPC III |  | baseline start none → 2017-08-31; baseline finish none → 2017-09-04 |
| 64 | Informe Mensual N°1 - Setiembre |  | baseline start none → 2017-09-29; baseline finish none → 2017-10-03 |
| 65 | Informe Mensual N°2 - Octubre |  | baseline start none → 2017-10-31; baseline finish none → 2017-11-03 |
| 66 | Informe Mensual N°3 - Noviembre |  | baseline start none → 2017-11-29; baseline finish none → 2017-12-01 |
| 67 | **Seguimiento y Control** |  | baseline start none → 2017-05-05; baseline finish none → 2017-12-01 |
| 68 | **Informe mensual** |  | baseline start none → 2017-06-26; baseline finish none → 2017-11-30 |
| 69 | Informe mensual - junio |  | baseline start none → 2017-06-26; baseline finish none → 2017-07-04 |
| 70 | Informe mensual - julio |  | baseline start none → 2017-07-26; baseline finish none → 2017-08-02 |

| ID | Task | Start | Finish | Duration | Complete | Total float | Predecessors | Other |
| --- | --- | --- | --- | --- | --- | --- | --- | --- |
| 71 | Informe mensual - agosto |  |  |  |  |  |  | baseline start none → 2017-08-25; baseline finish none → 2017-09-01 |
| 72 | Informe mensual - setiembre |  |  |  |  |  |  | baseline start none → 2017-09-26; baseline finish none → 2017-10-02 |
| 73 | Informe mensual - octubre |  |  |  |  |  |  | baseline start none → 2017-10-26; baseline finish none → 2017-11-02 |
| 74 | Informe mensual - noviembre |  |  |  |  |  |  | baseline start none → 2017-11-24; baseline finish none → 2017-11-30 |
| 75 | **Reunión de Estado Semanal** |  |  |  |  |  |  | baseline start none → 2017-05-05; baseline finish none → 2017-12-01 |
| 76 | Reunión de Estado - Semana 1 |  |  |  |  |  |  | baseline start none → 2017-05-05; baseline finish none → 2017-05-05 |
| 77 | Reunión de Estado - Semana 2 |  |  |  |  |  |  | baseline start none → 2017-05-12; baseline finish none → 2017-05-12 |
| 78 | Reunión de Estado - Semana 3 |  |  |  |  |  |  | baseline start none → 2017-05-19; baseline finish none → 2017-05-19 |
| 79 | Reunión de Estado - Semana 4 |  |  |  |  |  |  | baseline start none → 2017-05-26; baseline finish none → 2017-05-26 |
| 80 | Reunión de Estado - Semana 5 |  |  |  |  |  |  | baseline start none → 2017-06-02; baseline finish none → 2017-06-02 |
| 81 | Reunión de Estado - Semana 6 |  |  |  |  |  |  | baseline start none → 2017-06-09; baseline finish none → 2017-06-09 |
| 82 | Reunión de Estado - Semana 7 |  |  |  |  |  |  | baseline start none → 2017-06-16; baseline finish none → 2017-06-16 |
| 83 | Reunión de Estado - Semana 8 |  |  |  |  |  |  | baseline start none → 2017-06-23; baseline finish none → 2017-06-23 |
| 84 | Reunión de Estado - Semana 9 |  |  |  |  |  |  | baseline start none → 2017-06-28; baseline finish none → 2017-06-28 |
| 85 | Reunión de Estado - Semana 10 |  |  |  |  |  |  | baseline start none → 2017-07-07; baseline finish none → 2017-07-07 |
| 86 | Reunión de Estado - Semana 11 |  |  |  |  |  |  | baseline start none → 2017-07-13; baseline finish none → 2017-07-13 |
| 87 | Reunión de Estado - Semana 12 |  |  |  |  |  |  | baseline start none → 2017-07-21; baseline finish none → 2017-07-21 |
| 88 | Reunión de Estado - Semana 13 |  |  |  |  |  |  | baseline start none → 2017-07-31; baseline finish none → 2017-07-31 |
| 89 | Reunión de Estado - Semana 14 |  |  |  |  |  |  | baseline start none → 2017-08-04; baseline finish none → 2017-08-04 |
| 90 | Reunión de Estado - Semana 15 |  |  |  |  |  |  | baseline start none → 2017-08-11; baseline finish none → 2017-08-11 |
| 91 | Reunión de Estado - Semana 16 |  |  |  |  |  |  | baseline start none → 2017-08-18; baseline finish none → 2017-08-18 |
| 92 | Reunión de Estado - Semana 17 |  |  |  |  |  |  | baseline start none → 2017-08-25; baseline finish none → 2017-08-25 |
| 93 | Reunión de Estado - Semana 18 |  |  |  |  |  |  | baseline start none → 2017-09-01; baseline finish none → 2017-09-01 |
| 94 | Reunión de Estado - Semana 19 |  |  |  |  |  |  | baseline start none → 2017-09-08; baseline finish none → 2017-09-08 |
| 95 | Reunión de Estado - Semana 20 |  |  |  |  |  |  | baseline start none → 2017-09-15; baseline finish none → 2017-09-15 |
| 96 | Reunión de Estado - Semana 21 |  |  |  |  |  |  | baseline start none → 2017-09-22; baseline finish none → 2017-09-22 |
| 97 | Reunión de Estado - Semana 22 |  |  |  |  |  |  | baseline start none → 2017-09-29; baseline finish none → 2017-09-29 |
| 98 | Reunión de Estado - Semana 23 |  |  |  |  |  |  | baseline start none → 2017-10-06; baseline finish none → 2017-10-06 |
| 99 | Reunión de Estado - Semana 24 |  |  |  |  |  |  | baseline start none → 2017-10-13; baseline finish none → 2017-10-13 |
| 100 | Reunión de Estado - Semana 25 |  |  |  |  |  |  | baseline start none → 2017-10-20; baseline finish none → 2017-10-20 |
| 101 | Reunión de Estado - Semana 26 |  |  |  |  |  |  | baseline start none → 2017-10-27; baseline finish none → 2017-10-27 |
| 102 | Reunión de Estado - Semana 27 |  |  |  |  |  |  | baseline start none → 2017-11-03; baseline finish none → 2017-11-03 |
| 103 | Reunión de Estado - Semana 28 |  |  |  |  |  |  | baseline start none → 2017-11-10; baseline finish none → 2017-11-10 |
| 104 | Reunión de Estado - Semana 29 |  |  |  |  |  |  | baseline start none → 2017-11-17; baseline finish none → 2017-11-17 |
| 105 | Reunión de Estado - Semana 30 |  |  |  |  |  |  | baseline start none → 2017-11-24; baseline finish none → 2017-11-24 |
| 106 | Reunión de Estado - Semana 31 |  |  |  |  |  |  | baseline start none → 2017-12-01; baseline finish none → 2017-12-01 |
| 107 | **Cierre** | 2017-03-06 A → 2017-11-27 (+266d) | 2017-03-13 A → 2017-12-01 (+263d) |  | 100% → 0% | none → 2d |  | baseline start none → 2017-11-27; baseline finish none → 2017-12-01 |
| 108 | Elaboración de informe de Cierre | 2017-03-06 A → 2017-11-27 (+266d) | 2017-03-10 A → 2017-12-01 (+266d) |  | 100% → 0% | none → 2d | none → 222 | baseline start none → 2017-11-27; baseline finish none → 2017-12-01 |
| 109 | Informe de Cierre | 2017-03-13 A → 2017-12-01 (+263d) | 2017-03-13 A → 2017-12-01 (+263d) |  | 100% → 0% | none → 2d |  | baseline start none → 2017-12-01; baseline finish none → 2017-12-01 |
| 110 | **Actividades de Ingeniería** | 2017-03-15 A → 2017-03-06 A (-9d) |  | 175d → 182d |  |  |  | baseline start none → 2017-03-06; baseline finish none → 2017-11-24 |
| 111 | **Planificación** |  |  |  |  |  |  | baseline start none → 2017-03-15; baseline finish none → 2017-04-25 |
| 112 | Elaboración de Ficha de Relevamiento v1.0 |  |  |  |  |  |  | baseline start none → 2017-03-15; baseline finish none → 2017-04-04 |
| 113 | Revisión Ficha de Relevamiento v 1.0 |  |  |  |  |  |  | baseline start none → 2017-04-05; baseline finish none → 2017-04-05 |
| 114 | Actualización Ficha de Relevamiento v1.0 |  |  |  |  |  |  | baseline start none → 2017-04-06; baseline finish none → 2017-04-24 |
| 115 | Revisión final y firma |  |  |  |  |  |  | baseline start none → 2017-04-25; baseline finish none → 2017-04-25 |
| 116 | Ficha de Relevamiento |  |  |  |  |  |  | baseline start none → 2017-04-25; baseline finish none → 2017-04-25 |
| 117 | **Modelado de Procesos** |  |  |  |  |  |  | baseline start none → 2017-04-06; baseline finish none → 2017-04-27 |
| 118 | **Ficha Técnica del Proceso** |  |  |  |  |  |  | baseline start none → 2017-04-06; baseline finish none → 2017-04-27 |
| 119 | Elaborar FTP Registro y Derivación de Trámite (ATD) |  |  |  |  |  |  | baseline start none → 2017-04-06; baseline finish none → 2017-04-07 |
| 120 | Elaborar FTP Asignación, Respuesta y Notificación de Trámite (GSA) |  |  |  |  |  |  | baseline start none → 2017-04-10; baseline finish none → 2017-04-11 |
| 121 | Elaborar FTP Asignación, Respuesta y Notificación de Trámite (ARM) |  |  |  |  |  |  | baseline start none → 2017-04-11; baseline finish none → 2017-04-12 |
| 122 | Elaborar FTP Asignación, Respuesta y Notificación de Trámite (ATS) |  |  |  |  |  |  | baseline start none → 2017-04-17; baseline finish none → 2017-04-18 |
| 123 | Revisión y Firma FTP GSA |  |  |  |  |  |  | baseline start none → 2017-04-27; baseline finish none → 2017-04-27 |
| 124 | Elaborar FTP Registro y Derivación de Trámite (AJD) |  |  |  |  |  |  | baseline start none → 2017-04-18; baseline finish none → 2017-04-19 |
| 125 | Elaborar FTP Asignación, Respuesta y Notificación de Trámite (GCN) |  |  |  |  |  |  | baseline start none → 2017-04-20; baseline finish none → 2017-04-21 |
| 126 | Revisión y Firma FTP GCN |  |  |  |  |  |  | baseline start none → 2017-04-27; baseline finish none → 2017-04-27 |
| 127 | Elaborar FTP Asignación, Respuesta y Notificación de Trámite (AEC) |  |  |  |  |  |  | baseline start none → 2017-04-21; baseline finish none → 2017-04-24 |
| 128 | Revisión y Firma FTP AEC |  |  |  |  |  |  | baseline start none → 2017-04-27; baseline finish none → 2017-04-27 |
| 129 | Elaborar FTP Registro y Derivación de Trámite (GIM) |  |  |  |  |  |  | baseline start none → 2017-04-25; baseline finish none → 2017-04-26 |
| 130 | Revisión y Firma FTP GIM |  |  |  |  |  |  | baseline start none → 2017-04-27; baseline finish none → 2017-04-27 |
| 131 | Ficha Técnica del Proceso |  |  |  |  |  |  | baseline start none → 2017-04-27; baseline finish none → 2017-04-27 |
| 132 | **Análisis y Diseño de Sistemas** |  |  |  |  |  |  | baseline start none → 2017-04-27; baseline finish none → 2017-09-27 |
| 133 | **Análisis Funcional** |  |  |  |  |  |  | baseline start none → 2017-04-27; baseline finish none → 2017-06-28 |
| 134 | Elaborar Documento Funcional de Atención |  |  |  |  |  |  | baseline start none → 2017-04-27; baseline finish none → 2017-05-08 |
| 135 | Revisión y firma DF Atención |  |  |  |  |  |  | baseline start none → 2017-06-01; baseline finish none → 2017-06-02 |
| 136 | Elaborar Documento Funcional de Registro |  |  |  |  |  |  | baseline start none → 2017-05-08; baseline finish none → 2017-05-16 |
| 137 | Revisión y firma DF Registro |  |  |  |  |  |  | baseline start none → 2017-06-02; baseline finish none → 2017-06-05 |
| 138 | Elaborar Documento Funcional de Derivación |  |  |  |  |  |  | baseline start none → 2017-05-16; baseline finish none → 2017-05-24 |
| 139 | Revisión y firma DF Derivación |  |  |  |  |  |  | baseline start none → 2017-06-05; baseline finish none → 2017-06-06 |
| 140 | Elaborar Documento Funcional de Notificación |  |  |  |  |  |  | baseline start none → 2017-05-24; baseline finish none → 2017-06-01 |

| ID | Task | Start | Finish | Duration | Complete | Total float | Predecessors | Other |
| --- | --- | --- | --- | --- | --- | --- | --- | --- |
| 141 | Revisión y firma DF Notificación |  |  |  |  |  |  | baseline start none → 2017-06-06; baseline finish none → 2017-06-07 |
| 142 | Elaborar Documento Funcional de Configuración |  |  |  |  |  |  | baseline start none → 2017-06-07; baseline finish none → 2017-06-19 |
| 143 | Revisión y firma DF Configuración |  |  |  |  |  |  | baseline start none → 2017-06-19; baseline finish none → 2017-06-28 |
| 144 | Documento de Definición Funcional |  |  |  |  |  |  | baseline start none → 2017-06-28; baseline finish none → 2017-06-28 |
| 145 | **Análisis Técnico** |  |  |  |  |  |  | baseline start none → 2017-06-13; baseline finish none → 2017-09-27 |
| 146 | Elaboración de Documento Técnico de Notificación |  |  |  |  |  |  | baseline start none → 2017-06-13; baseline finish none → 2017-06-21 |
| 147 | Revisión de DT Notificación |  |  |  |  |  |  | baseline start none → 2017-06-22; baseline finish none → 2017-06-23 |
| 148 | Levantamiento de observaciones DT Notificación |  |  |  |  |  |  | baseline start none → 2017-07-04; baseline finish none → 2017-07-06 |
| 149 | Elaboración de Documento Técnico de Configuración |  |  |  |  |  |  | baseline start none → 2017-06-26; baseline finish none → 2017-07-03 |
| 150 | Revisión de DT Configuración |  |  |  |  |  |  | baseline start none → 2017-07-07; baseline finish none → 2017-07-11 |
| 151 | Levantamiento de observaciones DT Configuración |  |  |  |  |  |  | baseline start none → 2017-07-12; baseline finish none → 2017-07-14 |
| 152 | Segunda revisión DT Configuración |  |  |  |  |  |  | baseline start none → 2017-08-09; baseline finish none → 2017-08-11 |
| 153 | Elaboración Documento Técnico Derivación |  |  |  |  |  |  | baseline start none → 2017-08-09; baseline finish none → 2017-08-15 |
| 154 | Revisión interna DT Derivación |  |  |  |  |  |  | baseline start none → 2017-08-16; baseline finish none → 2017-08-16 |
| 155 | Levantamiento de observaciones DT Derivación |  |  |  |  |  |  | baseline start none → 2017-08-17; baseline finish none → 2017-08-17 |
| 156 | Revisión de DT Derivación |  |  |  |  |  |  | baseline start none → 2017-08-18; baseline finish none → 2017-08-22 |
| 157 | Levantamiento de observaciones DT Derivación |  |  |  |  |  |  | baseline start none → 2017-08-23; baseline finish none → 2017-08-24 |
| 158 | Revisión interna DT Derivación |  |  |  |  |  |  | baseline start none → 2017-08-25; baseline finish none → 2017-08-25 |
| 159 | Segunda revisión de DT Derivación |  |  |  |  |  |  | baseline start none → 2017-08-28; baseline finish none → 2017-08-29 |
| 160 | Elaboración de acta de conformidad y firmas |  |  |  |  |  |  | baseline start none → 2017-08-31; baseline finish none → 2017-08-31 |
| 161 | Elaboración Documento Técnico Registro - Atención |  |  |  |  |  |  | baseline start none → 2017-09-05; baseline finish none → 2017-09-12 |
| 162 | Revisión interna DT Registro - Atención |  |  |  |  |  |  | baseline start none → 2017-09-13; baseline finish none → 2017-09-13 |
| 163 | Levantamiento de observaciones DT Registro - Atención |  |  |  |  |  |  | baseline start none → 2017-09-14; baseline finish none → 2017-09-15 |
| 164 | Revisión de DT Registro - Atención |  |  |  |  |  |  | baseline start none → 2017-09-18; baseline finish none → 2017-09-19 |
| 165 | Levantamiento de observaciones DT Registro - Atención |  |  |  |  |  |  | baseline start none → 2017-09-20; baseline finish none → 2017-09-22 |
| 166 | Segunda revisión de DT Registro - Atención |  |  |  |  |  |  | baseline start none → 2017-09-25; baseline finish none → 2017-09-26 |
| 167 | Elaboración de acta de conformidad y firmas |  |  |  |  |  |  | baseline start none → 2017-09-27; baseline finish none → 2017-09-27 |
| 168 | Documento Técnico de Sistemas |  |  |  |  |  |  | baseline start none → 2017-09-27; baseline finish none → 2017-09-27 |
| 169 | **Construcción** | 2017-06-28 A → 2017-03-06 A (-114d) |  | 102.62d → 182d | 30% → 28% |  |  | baseline start none → 2017-03-06; baseline finish none → 2017-11-24 |
| 170 | **Requerimiento 1 (####)** | 2017-06-28 A → 2017-03-06 A (-114d) | 2017-09-19 → 2017-09-07 (-12d) | 55.62d → 127d |  | 54d → 62d |  | baseline start none → 2017-03-06; baseline finish none → 2017-09-07 |
| 171 | **Desarrollo** |  | 2017-08-31 → 2017-08-18 (-13d) | 42.62d → 34.62d | 91% → 93% | 67d → 75d |  | baseline start none → 2017-06-28; baseline finish none → 2017-08-18 |
| 172 | Elaboración de casos de prueba |  |  |  |  |  |  | baseline start none → 2017-08-01; baseline finish none → 2017-08-03 |
| 173 | Preparación del ambiente |  |  |  |  |  |  | baseline start none → 2017-06-28; baseline finish none → 2017-07-03 |
| 174 | Inducción al desarrollador DT Notificación |  |  |  |  |  |  | baseline start none → 2017-07-03; baseline finish none → 2017-07-04 |
| 175 | Inducción al desarrollador DT Configuración |  |  |  |  |  |  | baseline start none → 2017-07-14; baseline finish none → 2017-07-14 |
| 176 | Codificación de formularios Notificación |  | 2017-07-27 A |  | 99% → 100% | 0d → none |  | baseline start none → 2017-07-04; baseline finish none → 2017-07-27 |
| 177 | Codificación de formularios Configuración |  |  |  |  |  |  | baseline start none → 2017-07-17; baseline finish none → 2017-07-25 |
| 178 | Ejecución de pruebas unitarias de los formularios Notificación |  |  |  |  |  |  | baseline start none → 2017-08-04; baseline finish none → 2017-08-09 |
| 179 | Ejecución de pruebas unitarias de los formularios Configuración |  |  |  |  |  |  | baseline start none → 2017-07-26; baseline finish none → 2017-08-01 |
| 180 | Codificación de PQT DTS |  | 2017-08-24 A → 2017-08-10 A (-14d) | 17d → 7d |  |  |  | baseline start none → 2017-08-02; baseline finish none → 2017-08-10 |
| 181 | Ejecución de pruebas unitarias de PQT DTS | 2017-08-23 A → 2017-08-11 A (-12d) | 2017-08-25 A → 2017-08-15 A (-10d) |  |  |  |  | baseline start none → 2017-08-11; baseline finish none → 2017-08-15 |
| 182 | Elaboración de documentación de pase | 2017-08-28 → 2017-08-11 A (-17d) | 2017-08-31 → 2017-08-15 (-16d) |  | 0% → 80% | 67d → 78d | 181 → 181FF | baseline start none → 2017-08-11; baseline finish none → 2017-08-15 |
| 183 | Validación del Arquitecto y Líder Funcional | 2017-08-28 → 2017-08-16 (-12d) | 2017-08-31 → 2017-08-18 (-13d) |  |  | 54d → 62d |  | baseline start none → 2017-08-16; baseline finish none → 2017-08-18 |
| 184 | **Pruebas** | 2017-09-01 → 2017-08-21 (-11d) | 2017-09-08 → 2017-08-28 (-11d) |  |  | 54d → 62d |  | baseline start none → 2017-08-21; baseline finish none → 2017-08-28 |
| 185 | Revisión del pase por parte del A.F.C.C.T.I. | 2017-09-01 → 2017-08-21 (-11d) | 2017-09-05 → 2017-08-23 (-13d) |  |  | 54d → 62d |  | baseline start none → 2017-08-21; baseline finish none → 2017-08-23 |
| 186 | Ejecución de pruebas de aceptación | 2017-09-06 → 2017-08-24 (-13d) | 2017-09-08 → 2017-08-28 (-11d) |  |  | 54d → 62d |  | baseline start none → 2017-08-24; baseline finish none → 2017-08-28 |
| 187 | Solicitud de Pase a Producción | 2017-09-11 → 2017-08-29 (-13d) | 2017-09-12 → 2017-08-31 (-12d) |  |  | 54d → 62d |  | baseline start none → 2017-08-29; baseline finish none → 2017-08-31 |
| 188 | Seguimiento | 2017-09-13 → 2017-09-01 (-12d) | 2017-09-19 → 2017-09-07 (-12d) |  |  | 54d → 62d |  | baseline start none → 2017-09-01; baseline finish none → 2017-09-07 |
| 190 | **Requerimiento 2 (####)** | 2017-08-21 → 2017-03-06 A (-168d) |  | 51d → 165d | 0% → 1% | 7d → 24d |  | baseline start none → 2017-03-06; baseline finish none → 2017-10-31 |
| 191 | **Desarrollo** | 2017-08-21 A |  |  | 0% → 2% | 7d → 42d |  | baseline start none → 2017-08-21; baseline finish none → 2017-10-05 |
| 192 | Elaboración de casos de prueba |  |  |  |  |  |  | baseline start none → 2017-09-01; baseline finish none → 2017-09-04 |
| 193 | Inducción al desarrollador DT Derivación | 2017-08-21 A | 2017-08-21 A |  | 0% → 100% | 7d → none |  | baseline start none → 2017-08-21; baseline finish none → 2017-08-21 |
| 194 | Derivación |  |  |  |  | 7d → 2d |  | baseline start none → 2017-08-22; baseline finish none → 2017-09-01 |
| 195 | Recepción |  |  |  |  |  |  | baseline start none → 2017-08-22; baseline finish none → 2017-09-01 |
| 196 | Retirar la opción de inventario (automatizar) |  |  |  |  | 7d → 2d |  | baseline start none → 2017-08-22; baseline finish none → 2017-08-28 |
| 197 | Asignación |  |  |  |  | 7d → 2d |  | baseline start none → 2017-08-29; baseline finish none → 2017-09-14 |
| 198 | Codificación de derivación y devolución |  |  |  |  | 7d → 2d |  | baseline start none → 2017-09-15; baseline finish none → 2017-09-21 |
| 199 | Ejecución de pruebas integrales del proceso |  |  |  |  | 7d → 2d |  | baseline start none → 2017-09-22; baseline finish none → 2017-09-28 |
| 200 | Elaboración de documentación de pase |  |  |  |  |  |  | baseline start none → 2017-09-29; baseline finish none → 2017-10-02 |
| 201 | Validación del Arquitecto y el Líder Funcional |  |  |  |  |  |  | baseline start none → 2017-10-03; baseline finish none → 2017-10-05 |
| 202 | **Pruebas** |  |  |  |  |  |  | baseline start none → 2017-10-06; baseline finish none → 2017-10-20 |
| 203 | Revisión del pase por parte del A.F.C.C.T.I. |  |  |  |  |  |  | baseline start none → 2017-10-06; baseline finish none → 2017-10-10 |
| 204 | Ejecución de pruebas de aceptación |  |  |  |  |  |  | baseline start none → 2017-10-11; baseline finish none → 2017-10-20 |
| 205 | Pase a producción |  |  |  |  |  |  | baseline start none → 2017-10-23; baseline finish none → 2017-10-24 |
| 206 | Seguimiento |  |  |  |  |  |  | baseline start none → 2017-10-25; baseline finish none → 2017-10-31 |
| 208 | **Requerimiento 3 (####)** |  |  |  |  | 7d → 6d |  | baseline start none → 2017-09-25; baseline finish none → 2017-11-24 |
| 209 | **Desarrollo** |  |  |  |  | 11d → 6d |  | baseline start none → 2017-09-25; baseline finish none → 2017-10-30 |
| 210 | Elaboración de casos de prueba |  |  |  |  |  |  | baseline start none → 2017-09-25; baseline finish none → 2017-09-27 |
| 211 | Inducción al desarrollador DT Registro - Atención |  |  |  |  | 7d → 2d |  | baseline start none → 2017-09-29; baseline finish none → 2017-09-29 |
| 212 | Codificación de procedimientos almacenados |  |  |  |  | 7d → 2d |  | baseline start none → 2017-10-02; baseline finish none → 2017-10-03 |

| ID | Task | Total float | Other |
| --- | --- | --- | --- |
| 213 | Codificación de PQT DTS | 7d → 2d | baseline start none → 2017-10-04; baseline finish none → 2017-10-06 |
| 214 | Codificación de Formularios | 7d → 2d | baseline start none → 2017-10-09; baseline finish none → 2017-10-18 |
| 215 | Ejecución de pruebas integrales |  | baseline start none → 2017-10-19; baseline finish none → 2017-10-24 |
| 216 | Elaboración de documentación de pase | 7d → 2d | baseline start none → 2017-10-19; baseline finish none → 2017-10-25 |
| 217 | Validación del Arquitecto y el Líder Funcional | 7d → 2d | baseline start none → 2017-10-26; baseline finish none → 2017-10-30 |
| 218 | **Pruebas** | 7d → 2d | baseline start none → 2017-10-31; baseline finish none → 2017-11-14 |
| 219 | Revisión del pase por parte del A.F.C.C.T.I. | 7d → 2d | baseline start none → 2017-10-31; baseline finish none → 2017-11-03 |
| 220 | Ejecución de pruebas de aceptación | 7d → 2d | baseline start none → 2017-11-06; baseline finish none → 2017-11-14 |
| 221 | Pase a Producción | 7d → 2d | baseline start none → 2017-11-15; baseline finish none → 2017-11-16 |
| 222 | Seguimiento | 7d → 2d | baseline start none → 2017-11-17; baseline finish none → 2017-11-24 |
| 224 | **Actividades Complementarias** |  | baseline start none → 2017-05-30; baseline finish none → 2017-11-10 |
| 225 | Formularios de criterios de configuración |  | baseline start none → 2017-08-28; baseline finish none → 2017-09-11 |
| 226 | **Propuesta de Categorización** |  | baseline start none → 2017-05-30; baseline finish none → 2017-06-21 |
| 227 | Elaboración |  | baseline start none → 2017-05-30; baseline finish none → 2017-06-16 |
| 228 | Revisión y aprobación |  | baseline start none → 2017-06-19; baseline finish none → 2017-06-21 |
| 229 | **Sección "Trámites" - Página Web** |  | baseline start none → 2017-06-05; baseline finish none → 2017-11-10 |
| 230 | Elaboración |  | baseline start none → 2017-06-05; baseline finish none → 2017-06-23 |
| 231 | Revisión y aprobación |  | baseline start none → 2017-06-26; baseline finish none → 2017-06-28 |
| 232 | Elaboración de guías de llenado de formatos |  | baseline start none → 2017-08-02; baseline finish none → 2017-10-11 |
| 233 | Diseño página web |  | baseline start none → 2017-08-22; baseline finish none → 2017-09-01 |
| 234 | Implementación |  | baseline start none → 2017-11-02; baseline finish none → 2017-11-10 |
| 235 | **Dimensionamiento** |  | baseline start none → 2017-06-26; baseline finish none → 2017-09-11 |
| 236 | Elaboración de informe de Dimensionamiento I |  | baseline start none → 2017-06-26; baseline finish none → 2017-07-07 |
| 237 | Elaboración de Informe de Dimensionamiento II |  | baseline start none → 2017-07-19; baseline finish none → 2017-08-31 |
| 238 | Revisión y Aprobación |  | baseline start none → 2017-09-01; baseline finish none → 2017-09-11 |
